# JUICE UVS IMS DD 20190524 CD NC

How a schedule from Primavera P6 changed from version to version. A marks actual dates.

## Version 1 (data date 2019-05-25, saved 2019-06-13, file JUICE UVS IMS DD 20190524 NC.xer)

| ID | WBS | Task | Duration | Start | Finish | Predecessors | Complete | Total float | Constraint |
| --- | --- | --- | --- | --- | --- | --- | --- | --- | --- |
|  | JUICE | **JUICE Project Rollup** |  | 2016-10-03 | 2022-09-21 |  |  |  |  |
|  | 00 | **JUICE-UVS Milestones** |  | 2016-10-03 | 2022-09-21 |  |  |  |  |
| JUICE-UVS 0011 |  | Phase C Start LOE | 0d | 2016-10-03 A | 2016-10-03 A |  | 100% |  |  |
| JUICE-UVS 0023 |  | Phase C Start Discrete | 0d | 2016-10-03 A | 2016-10-03 A |  | 100% |  |  |
| JUICE-UVS 0013 |  | NASA KDP-C | 0d | 2016-10-04 A | 2016-10-04 A |  | 100% |  |  |
| JUICE-UVS 0007 |  | Mission PDR Complete | 0d | 2017-03-01 A | 2017-03-01 A |  | 100% |  |  |
| JUICE-UVS594771 |  | Test Readiness Review (TRR) | 0d | 2018-06-21 A | 2018-06-21 A |  | 100% |  |  |
| JUICE-UVS 0019 |  | Mission CDR Complete | 0d | 2019-03-01 A | 2019-03-01 A |  | 100% |  | mandatory finish 2019-03-01 |
| JUICE-UVS 0010 |  | PER - Target Milestone Date | 0d | 2019-03-20 A | 2019-03-20 A | JUICE-UVS 593307 FF | 100% |  | mandatory finish 2019-03-20 |
| JUICE-UVS 0038 |  | ESA QR - Target Milestone Date | 0d | 2019-07-18 | 2019-07-18 |  |  | 0d | mandatory finish 2019-07-18 |
| JUICE-UVS 592531 |  | NASA PSR/ESA AR - Target Milestone Date | 0d | 2019-07-18 | 2019-07-18 |  |  | 0d | mandatory finish 2019-07-18 |
| JUICE-UVS 0029 |  | SC/Payload I&T Complete LOE | 0d | 2020-09-30 | 2020-09-30 |  |  | 0d | mandatory finish 2020-09-30 |
| JUICE-UVS 0041 |  | End of Phase C LOE | 0d | 2020-11-13 | 2020-11-13 | JUICE-UVS 0011, JUICE-UVS 3422 |  | 0d | mandatory finish 2020-11-13 |
| JUICE-UVS 0014 |  | Phase D Start Discrete | 0d | 2020-11-16 | 2020-11-16 |  |  | 0d | mandatory start 2020-11-16 |
| JUICE-UVS 0026 |  | Phase D Start LOE | 0d | 2020-11-16 | 2020-11-16 |  |  | 0d | mandatory finish 2020-11-16 |
| JUICE-UVS 0032 |  | Mission Flight Acceptance Review (FAR) | 0d | 2021-09-15 | 2021-09-15 |  |  | 0d | finish on 2021-09-15 |
| JUICE-UVS 0035 |  | JUICE-UVS-Observatory I&T Begins | 0d | 2021-09-21 | 2021-09-21 |  |  | 3198d | start on or after 2021-09-21 |
| JUICE-UVS 0057 |  | Mission Flight Readiness Review (FRR) | 0d | 2022-03-22 | 2022-03-22 | JUICE-UVS 5063 |  | 0d | finish on 2022-03-22 |
| JUICE-UVS 0051 |  | JUICE Launch | 0d | 2022-06-06 | 2022-06-06 | JUICE-UVS 5060, JUICE-UVS 593661, JUICE-UVS 10600, JUICE-UVS 5709 |  | 0d | mandatory finish 2022-06-04 |
| JUICE-UVS 0101 |  | JUICE Cruise/Interplanetary Transfer | 0d | 2022-06-30 | 2022-06-30 |  |  | 3003d | start on or after 2022-06-30 |
| JUICE-UVS 0054 |  | Mission Commissioning Results Review (MCRR) | 0d | 2022-08-19 | 2022-08-19 |  |  | 0d | finish on 2022-08-19 |
| JUICE-UVS 0017 |  | End of Phase D Discrete | 0d | 2022-09-21 | 2022-09-21 | JUICE-UVS 5694, JUICE-UVS594408, JUICE-UVS594588, JUICE-UVS594768, JUICE-UVS 592902, JUICE-UVS 592905, JUICE-UVS 592908, JUICE-UVS 592911, JUICE-UVS 592914, JUICE-UVS 592926, JUICE-UVS 592929, JUICE-UVS 592932, JUICE-UVS 592938, JUICE-UVS 592959, JUICE-UVS 592953, JUICE-UVS 592956, JUICE-UVS 8095, JUICE-UVS 8104, JUICE-UVS 8056, JUICE-UVS 5646, JUICE-UVS 592336, JUICE-UVS 592339, JUICE-UVS 592560 |  | 0d | mandatory finish 2022-09-21 |
| JUICE-UVS 0020 |  | End of Phase D LOE | 0d | 2022-09-21 | 2022-09-21 | JUICE-UVS 594231, JUICE-UVS 594240, JUICE-UVS 592566, JUICE-UVS 1531, JUICE-UVS 11509, JUICE-UVS 593694, JUICE-UVS 11236, JUICE-UVS 8188, JUICE-UVS 10909, JUICE-UVS 592599, JUICE-UVS 591675, JUICE-UVS 592236, JUICE-UVS 592284, JUICE-UVS 1074, JUICE-UVS 7983, JUICE-UVS 5691, JUICE-UVS 9015 |  | 0d | mandatory finish 2022-09-21 |
|  | 01 | **H/W Deliverables** |  | 2018-09-26 | 2019-12-02 |  |  |  |  |
| JUICE-UVS 098 |  | JUICE-UVS EM 1 Delivery to ESA Target | 0d | 2018-09-26 A | 2018-09-26 A | JUICE-UVS594138, JUICE-UVS 2188 | 100% |  | mandatory finish 2018-09-26 |
| JUICE-UVS3081 |  | EM 2 Delivery SwRI | 0d | 2019-07-31 | 2019-07-31 |  |  | 0d | mandatory finish 2019-07-31 |
| JUICE-UVS 089 |  | JUICE UVS FM Delivery Target LOE | 0d | 2019-10-01 | 2019-10-01 | JUICE-UVS 3417, JUICE-UVS 3464, JUICE-UVS 3422, JUICE-UVS 3427, JUICE-UVS 592839, JUICE-UVS 592344, JUICE-UVS 2225, JUICE-UVS 592296, JUICE-UVS 591606, JUICE-UVS 591636, JUICE-UVS 592332, JUICE-UVS 591576, JUICE-UVS 591546, JUICE-UVS 591516, JUICE-UVS 591486, JUICE-UVS 592245, JUICE-UVS 0978, JUICE-UVS 2390, JUICE-UVS 593673 |  | 0d | mandatory finish 2019-10-01 |
| JUICE-UVS 594213 |  | JUICE UVS FM Delivery Target Discrete | 0d | 2019-10-01 | 2019-10-01 | JUICE-UVS 594216, JUICE-UVS 592770, JUICE-UVS 2185, JUICE-UVS 5598, JUICE-UVS 0023, JUICE-UVS 592333, JUICE-UVS 592477, JUICE-UVS 592881, JUICE-UVS 592884, JUICE-UVS 592887, JUICE-UVS 592890, JUICE-UVS 592893, JUICE-UVS 592896, JUICE-UVS 592899, JUICE-UVS 592935, JUICE-UVS 592941, JUICE-UVS 592944, JUICE-UVS 592947, JUICE-UVS 592950, JUICE-UVS 592971, JUICE-UVS 592974, JUICE-UVS 592977, JUICE-UVS 592980, JUICE-UVS 592983, JUICE-UVS 592986, JUICE-UVS 593001, JUICE-UVS 593004, JUICE-UVS 593325, JUICE-UVS 593328, JUICE-UVS 593334, JUICE-UVS 593337, JUICE-UVS 593343, JUICE-UVS 593346, JUICE-UVS 593349, JUICE-UVS 593352, JUICE-UVS 593355, JUICE-UVS 593358, JUICE-UVS 593361, JUICE-UVS 8043 |  | 0d | mandatory finish 2019-10-01 |
| JUICE-UVS 092 |  | JUICE-UVS STM Delivery to ESA | 0d | 2019-12-02 | 2019-12-02 | JUICE-UVS 3094, JUICE-UVS 51067 |  | 0d | mandatory finish 2019-12-02 |
|  | 02 | **Instrument Level Reviews** |  | 2016-11-02 | 2019-09-18 |  |  |  |  |
| JUICE-UVS 088 |  | NASA IBR | 0d | 2016-11-02 A | 2016-11-02 A |  | 100% |  |  |
| JUICE-UVS 592776 |  | NASA CDR LOE | 0d | 2017-09-13 A | 2017-09-13 A | JUICE-UVS 592845, JUICE-UVS 593598, JUICE-UVS593595 | 100% |  |  |
| JUICE-UVS 060 |  | ESA ICDR | 0d | 2017-10-02 A | 2017-10-02 A |  | 100% |  |  |
| JUICE-UVS592773 |  | NASA PER | 0d | 2019-03-20 A | 2019-03-20 A | JUICE-UVS 593307 FF | 100% |  | mandatory finish 2019-03-20 |
| JUICE-UVS 592770 |  | NASA PSR | 0d | 2019-09-18 | 2019-09-18 | JUICE-UVS 2380 |  | 0d | mandatory finish 2019-09-18 |
| JUICE-UVS 594216 |  | ESA QR | 0d | 2019-09-18 | 2019-09-18 | JUICE-UVS 593319 |  | 0d | mandatory finish 2019-09-18 |
|  | 03 | **Mission Level Reviews** |  | 2017-03-17 | 2020-09-24 |  |  |  |  |
| JUICE-UVS 074 |  | JUICE S/C PDR | 0d | 2017-03-17 A | 2017-03-17 A |  | 100% |  |  |
| JUICE-UVS 077 |  | JUICE S/C CDR | 0d | 2019-02-04 A | 2019-02-04 A |  | 100% |  | mandatory finish 2019-02-04 |
| JUICE-UVS 086 |  | JUICE FAR | 0d | 2020-09-24 | 2020-09-24 |  |  | 0d | mandatory finish 2020-09-24 |
|  | 04 | **SDRLs** |  | 2017-08-16 | 2017-10-24 |  |  |  |  |
| JUICE-UVS 593589 |  | CAD Model MA - 06 | 0d | 2017-08-16 A | 2017-08-16 A | JUICE-UVS 5232 | 100% |  |  |
| JUICE-UVS 593424 |  | Instrument Mechanical Interface Control Document SE - 02 | 0d | 2017-08-30 A | 2017-08-30 A | JUICE-UVS 0023 | 100% |  |  |
| JUICE-UVS 593574 |  | SMM MA - 01 | 0d | 2017-08-30 A | 2017-08-30 A | JUICE-UVS 0023 | 100% |  |  |
| JUICE-UVS 593583 |  | RGMM MA - 04 | 0d | 2017-08-30 A | 2017-08-30 A | JUICE-UVS 0023 | 100% |  |  |
| JUICE-UVS 593580 |  | RTMM MA - 03 | 0d | 2017-09-05 A | 2017-09-05 A | JUICE-UVS 592461 | 100% |  |  |
| JUICE-UVS 593577 |  | Radiation Model MA - 02 | 0d | 2017-10-24 A | 2017-10-24 A | JUICE-UVS 593262 | 100% |  |  |
|  | 01 | **Project Management** |  | 2016-10-03 | 2022-09-21 |  |  |  |  |
|  | 01 | **Management** |  | 2016-10-03 | 2022-09-21 |  |  |  |  |
|  | 01 | **Sustained PM** |  | 2016-10-03 | 2022-09-21 |  |  |  |  |
|  | 01 | **Sustained PM Phase C/D** |  | 2016-10-03 | 2022-09-21 |  |  |  |  |
| JUICE-UVS 1513 |  | Program Management Oversight FY 17 Start of Phase C | 250d | 2016-10-03 A | 2017-09-29 A | JUICE-UVS 0011 | 100% |  |  |
| JUICE-UVS 592486 |  | Additional ESA Support FY 17 Start of Phase C | 250d | 2016-10-03 A | 2017-09-29 A | JUICE-UVS 0011 | 100% |  |  |
| JUICE-UVS 1516 |  | Program Management Oversight FY 18 | 250d | 2017-10-02 A | 2018-09-28 A | JUICE-UVS 1513 | 100% |  |  |
| JUICE-UVS 592489 |  | Additional ESA Support FY 18 | 250d | 2017-10-02 A | 2018-09-28 A | JUICE-UVS 592486 | 100% |  |  |
| JUICE-UVS 1519 |  | Program Management Oversight FY 19 | 251d | 2018-10-01 A | 2019-09-30 | JUICE-UVS 1516 | 65% | 0d |  |
| JUICE-UVS 592492 |  | Additional ESA Support FY 19 | 251d | 2018-10-01 A | 2019-09-30 | JUICE-UVS 592489 | 65% | 0d |  |
| JUICE-UVS 1522 |  | Program Management Oversight FY 20 | 252d | 2019-10-01 | 2020-09-30 | JUICE-UVS 1519 |  | 0d |  |
| JUICE-UVS 592495 |  | Additional ESA Support FY 20 | 252d | 2019-10-01 | 2020-09-30 | JUICE-UVS 592492 |  | 0d |  |
| JUICE-UVS 1525 |  | Program Management Oversight FY 21 End of Phase C | 32d | 2020-10-01 | 2020-11-13 | JUICE-UVS 592495, JUICE-UVS 1522 |  | 0d |  |
| JUICE-UVS 1528 |  | Program Management Oversight FY 21 Start of Phase D | 218d | 2020-11-16 | 2021-09-30 | JUICE-UVS 1525 |  | 0d |  |
| JUICE-UVS 1531 |  | Program Management Oversight FY 22 End of Phase D | 243d | 2021-10-01 | 2022-09-21 | JUICE-UVS 1528 |  | 0d |  |
|  | 02 | **Discrete PM** |  | 2017-06-26 | 2017-08-11 |  |  |  |  |
| JUICE-UVS 593592 |  | Project Management Plan PMP - 001 | 10d | 2017-06-26 A | 2017-07-10 A | JUICE-UVS 0023 | 100% |  |  |
| JUICE-UVS 593601 |  | Risk Management Plan JUICE-UVS Investigation PM - 7 | 10d | 2017-06-26 A | 2017-07-10 A | JUICE-UVS 0023 | 100% |  |  |
| JUICE-UVS 593604 |  | Risk Register Assessment PM - 14 | 10d | 2017-07-31 A | 2017-08-11 A | JUICE-UVS 0023 | 100% |  |  |
| JUICE-UVS 593607 |  | Document Delivery List PM - 16 | 10d | 2017-07-31 A | 2017-08-11 A | JUICE-UVS 0023 | 100% |  |  |
| JUICE-UVS 593610 |  | Projoct Organization Structure for the JUICE-UVS Instrument PM - 50 | 10d | 2017-07-31 A | 2017-08-11 A | JUICE-UVS 0023 | 100% |  |  |
|  | 02 | **Project Control** |  | 2016-10-03 | 2019-10-01 |  |  |  |  |
| JUICE-UVS 0972 |  | Planning / EVM FY 2017 Start Phase C | 250d | 2016-10-03 A | 2017-09-29 A | JUICE-UVS 0011 | 100% |  |  |

| ID | WBS | Task | Duration | Start | Finish | Predecessors | Complete | Total float | Constraint |
| --- | --- | --- | --- | --- | --- | --- | --- | --- | --- |
| JUICE-UVS 0975 |  | Planning / EVM FY 2018 | 250d | 2017-10-02 A | 2018-09-28 A | JUICE-UVS 0972 | 100% |  |  |
| JUICE-UVS 0978 |  | Planning / EVM FY 2019 | 189d | 2018-09-28 A | 2019-10-01 | JUICE-UVS 0975 | 53% | 0d |  |
|  | 03 | **Financial** |  | 2016-10-03 | 2022-09-21 |  |  |  |  |
| JUICE-UVS 1062 |  | Financial FY 2017 Start Phase C | 1d | 2016-10-03 A | 2017-09-29 A | JUICE-UVS 0011 | 100% |  |  |
| JUICE-UVS 1065 |  | Financial FY 2018 | 250d | 2017-10-02 A | 2018-09-28 A | JUICE-UVS 1062 | 100% |  |  |
| JUICE-UVS 1068 |  | Financial FY 2019 | 251d | 2018-10-01 A | 2019-09-30 | JUICE-UVS 1065, JUICE-UVS 1062 | 65% | 0d |  |
| JUICE-UVS 1071 |  | Financial FY 2020 | 252d | 2019-10-01 | 2020-09-30 | JUICE-UVS 1068 |  | 0d |  |
| JUICE-UVS 1083 |  | Financial FY 2021 End of Phase C | 36d | 2020-10-01 | 2020-11-19 | JUICE-UVS 1071 |  | 0d |  |
| JUICE-UVS 1086 |  | Financial FY 2021 Start of Phase D | 214d | 2020-11-20 | 2021-09-30 | JUICE-UVS 1083 |  | 0d |  |
| JUICE-UVS 1074 |  | Financial FY 2022 End of Phase D | 243d | 2021-10-01 | 2022-09-21 | JUICE-UVS 1086 |  | 0d |  |
|  | 04 | **CAM Support** |  | 2016-10-03 | 2019-07-01 |  |  |  |  |
|  | 01 | **CAM Support Labor** |  | 2016-10-03 | 2019-07-01 |  |  |  |  |
| JUICE-UVS 592239 |  | CAM FY 17 Start of Phase C | 250d | 2016-10-03 A | 2017-09-29 A | JUICE-UVS 0011 | 100% |  |  |
| JUICE-UVS 592242 |  | CAM FY 18 | 250d | 2017-10-02 A | 2018-09-28 A | JUICE-UVS 592239 | 100% |  |  |
| JUICE-UVS 592245 |  | CAM FY 19 | 105d | 2018-10-01 A | 2019-07-01 | JUICE-UVS 592242 | 76% | 63d |  |
|  | 02 | **CAM Support Non-Labor** |  | 2016-10-03 | 2019-07-01 |  |  |  |  |
| JUICE-UVS 593667 |  | CAM FY 17 Start of Phase C | 250d | 2016-10-03 A | 2017-09-29 A | JUICE-UVS 0011 | 100% |  |  |
| JUICE-UVS 593670 |  | CAM FY 18 | 250d | 2017-10-02 A | 2018-09-28 A | JUICE-UVS 593667 | 100% |  |  |
| JUICE-UVS 593673 |  | CAM FY 19 | 105d | 2018-10-01 A | 2019-07-01 | JUICE-UVS 593670 | 76% | 63d |  |
|  | 05 | **Travel** |  | 2016-10-03 | 2022-09-21 |  |  |  |  |
|  | 01 | **Travel Phase C** |  | 2016-10-03 | 2020-12-01 |  |  |  |  |
| JUICE-UVS 592944 |  | Science Team Meeting (Cancelled) | 3d | 2016-10-03 A | 2016-10-05 A | JUICE-UVS 0023 | 100% |  |  |
| JUICE-UVS 593001 |  | EM Detector Delivery | 3d | 2017-01-09 A | 2017-01-11 A | JUICE-UVS 0023 | 100% |  |  |
| JUICE-UVS 592884 |  | PI Day | 5d | 2017-02-06 A | 2017-02-10 A | JUICE-UVS 0023 | 100% |  |  |
| JUICE-UVS 593349 |  | SWWG | 5d | 2017-02-06 A | 2017-02-10 A | JUICE-UVS 0023 | 100% |  |  |
| JUICE-UVS 592974 |  | CCWG | 5d | 2017-02-27 A | 2017-03-03 A | JUICE-UVS 0023 | 100% |  |  |
| JUICE-UVS 592881 |  | PI Day | 5d | 2017-06-19 A | 2017-06-23 A | JUICE-UVS 0023 | 100% |  |  |
| JUICE-UVS 592971 |  | EMCWG | 5d | 2017-06-19 A | 2017-06-23 A | JUICE-UVS 0023 | 100% |  |  |
| JUICE-UVS 593343 |  | EM Magnetic Susceptibility Testing | 5d | 2017-06-19 A | 2017-06-23 A | JUICE-UVS 0023 | 100% |  |  |
| JUICE-UVS 593325 |  | CCWG | 5d | 2017-06-26 A | 2017-06-30 A | JUICE-UVS 0023 | 100% |  |  |
| JUICE-UVS 593352 |  | SWWG | 5d | 2017-06-26 A | 2017-06-30 A | JUICE-UVS 0023 | 100% |  |  |
| JUICE-UVS 592887 |  | PI Day | 5d | 2017-09-11 A | 2017-09-15 A | JUICE-UVS 0023 | 100% |  |  |
| JUICE-UVS 592327 |  | ESA ICDR Travel | 5d | 2017-10-09 A | 2017-10-13 A | JUICE-UVS 0023 | 100% |  |  |
| JUICE-UVS 592947 |  | Science Team Meeting | 3d | 2017-10-09 A | 2017-10-11 A | JUICE-UVS 0023 | 100% |  |  |
| JUICE-UVS 592935 |  | Science Conference Meeting - AGU | 5d | 2017-12-11 A | 2017-12-18 A | JUICE-UVS 0023 | 100% |  |  |
| JUICE-UVS 593355 |  | SWWG | 5d | 2018-01-08 A | 2018-01-12 A | JUICE-UVS 0023 | 100% |  |  |
| JUICE-UVS 592941 |  | HVPS Parylene | 40d | 2018-01-26 A | 2018-03-22 A | JUICE-UVS 3252, JUICE-UVS 0023 | 100% |  |  |
| JUICE-UVS 592890 |  | PI Day | 5d | 2018-02-26 A | 2018-03-05 A | JUICE-UVS 0023 | 100% |  |  |
| JUICE-UVS 592980 |  | CCWG | 5d | 2018-02-26 A | 2018-03-05 A | JUICE-UVS 0023 | 100% |  |  |
| JUICE-UVS 592977 |  | EMCWG | 5d | 2018-02-27 A | 2018-03-05 A | JUICE-UVS 0023 | 100% |  |  |
| JUICE-UVS 593004 |  | FM/FS Detector Delivery | 3d | 2018-05-11 A | 2018-05-15 A | JUICE-UVS 9099, JUICE-UVS 0023 | 100% |  |  |
| JUICE-UVS 593337 |  | CCWG | 5d | 2018-06-18 A | 2018-06-25 A | JUICE-UVS 0023 | 100% |  |  |
| JUICE-UVS 593328 |  | EMCWG | 5d | 2018-06-19 A | 2018-06-25 A | JUICE-UVS 0023, JUICE-UVS 0023 SS | 100% |  |  |
| JUICE-UVS 592893 |  | PI Day | 5d | 2018-06-25 A | 2018-06-25 A | JUICE-UVS 0023 | 100% |  |  |
| JUICE-UVS 593358 |  | SWWG | 5d | 2018-06-25 A | 2018-06-29 A | JUICE-UVS 0023 | 100% |  |  |
| JUICE-UVS 593346 |  | FM Magnetic Susceptibility Testing | 5d | 2018-08-13 A | 2018-08-17 A | JUICE-UVS 0023 | 100% |  |  |
| JUICE-UVS 592896 |  | PI Day | 5d | 2018-09-10 A | 2018-09-14 A | JUICE-UVS 0023 | 100% |  |  |
| JUICE-UVS 8043 |  | EM1 Delivery Travel | 1d | 2018-09-19 A | 2018-09-19 A | JUICE-UVS 0023 | 100% |  |  |
| JUICE-UVS 592950 |  | Science Team Meeting | 3d | 2018-10-08 A | 2018-10-10 A | JUICE-UVS 0023 | 100% |  |  |
| JUICE-UVS 593334 |  | EMCWG | 5d | 2018-10-16 A | 2018-10-22 A | JUICE-UVS 0023 | 100% |  |  |
| JUICE-UVS 592899 |  | PI Day | 5d | 2019-01-07 A | 2019-01-11 A | JUICE-UVS 0023 | 100% |  |  |
| JUICE-UVS 592983 |  | EMCWG | 5d | 2019-01-14 A | 2019-01-18 A | JUICE-UVS 0023 | 100% |  |  |
| JUICE-UVS 592986 |  | CCWG | 5d | 2019-01-14 A | 2019-01-18 A | JUICE-UVS 0023 | 100% |  |  |
| JUICE-UVS 593361 |  | SWWG | 5d | 2019-01-14 A | 2019-01-18 A | JUICE-UVS 0023 | 100% |  |  |
| JUICE-UVS 592902 |  | PI Day | 5d | 2019-05-13 A | 2019-05-17 A | JUICE-UVS 0023 | 100% |  | start on or after 2019-05-13 |
| JUICE-UVS 592339 |  | S/C End to End Testing (x2) | 5d | 2019-06-17 | 2019-06-21 | JUICE-UVS 0023 |  | 813d | start on or after 2019-06-17 |
| JUICE-UVS 592333 |  | FM Delivery Travel | 1d | 2019-07-01 | 2019-07-01 | JUICE-UVS 0023 |  | 63d | start on or after 2019-07-01 |
| JUICE-UVS 592905 |  | PI Day | 5d | 2019-09-09 | 2019-09-13 | JUICE-UVS 0023 |  | 756d | start on or after 2019-09-09 |
| JUICE-UVS 592554 |  | Additional FY 21 ESA Travel (AI&T Support, x2 End to End) | 249d | 2019-10-01 | 2020-09-25 | JUICE-UVS 0023 |  | 278d | start on or after 2019-10-01 |
| JUICE-UVS 592953 |  | Science Team Meeting | 3d | 2019-10-07 | 2019-10-09 | JUICE-UVS 0023 |  | 738d | start on or after 2019-10-07 |
| JUICE-UVS 592328 |  | STM Delivery Travel | 3d | 2019-11-25 | 2019-11-27 | JUICE-UVS 0023 |  | 451d | start on or after 2019-11-25 |
| JUICE-UVS 592336 |  | S/C End to End Testing (x2) | 252d | 2019-12-02 | 2020-12-01 | JUICE-UVS 592328, JUICE-UVS 0023 |  | 451d | start on or after 2019-10-01 |
| JUICE-UVS 592908 |  | PI Day | 5d | 2020-01-13 | 2020-01-17 | JUICE-UVS 0023 |  | 299d | start on or after 2020-01-13 |
| JUICE-UVS 592911 |  | PI Day | 5d | 2020-05-11 | 2020-05-15 | JUICE-UVS 0023 |  | 586d | start on or after 2020-05-11 |
| JUICE-UVS 592914 |  | PI Day | 5d | 2020-09-14 | 2020-09-18 | JUICE-UVS 0023 |  | 501d | start on or after 2020-09-14 |
| JUICE-UVS 8095 |  | Travel FY 21 End of Phase C | 32d | 2020-10-01 | 2020-11-13 | JUICE-UVS 0023 |  | 0d | start on or after 2020-10-01 |
| JUICE-UVS 592956 |  | Science Team Meeting | 3d | 2020-10-05 | 2020-10-07 | JUICE-UVS 0023 |  | 488d | start on or after 2020-10-05 |
|  | 02 | **Travel Phase D** |  | 2020-11-16 | 2022-09-21 |  |  |  |  |
| JUICE-UVS 592560 |  | Additional FY 22 ESA Travel (AI&T Support, 2x End to End) | 218d | 2020-11-16 | 2021-09-30 | JUICE-UVS 0014, JUICE-UVS 592554 |  | 243d |  |
| JUICE-UVS 8104 |  | Travel FY 22 Start of Phase D | 218d | 2020-11-16 | 2021-09-30 | JUICE-UVS 0014, JUICE-UVS 8095 |  | 0d |  |

| ID | WBS | Task | Duration | Start | Finish | Predecessors | Complete | Total float | Constraint |
| --- | --- | --- | --- | --- | --- | --- | --- | --- | --- |
| JUICE-UVS 592917 |  | PI Day | 5d | 2021-01-11 | 2021-01-15 | JUICE-UVS 0014 |  | 178d | start on or after 2021-01-11 |
| JUICE-UVS 592920 |  | PI Day | 5d | 2021-05-10 | 2021-05-14 | JUICE-UVS 0014 |  | 93d | start on or after 2021-05-10 |
| JUICE-UVS 592923 |  | PI Day | 5d | 2021-09-13 | 2021-09-17 | JUICE-UVS 0014 |  | 9d | start on or after 2021-09-13 |
| JUICE-UVS 8056 |  | Travel FY 22 | 243d | 2021-10-01 | 2022-09-21 | JUICE-UVS 8104, JUICE-UVS 592917, JUICE-UVS 592920, JUICE-UVS 592923 |  | 0d |  |
| JUICE-UVS 592959 |  | Science Team Meeting | 3d | 2021-10-11 | 2021-10-13 | JUICE-UVS 0014 |  | 234d | start on or after 2021-10-11 |
| JUICE-UVS 592926 |  | PI Day | 5d | 2022-01-10 | 2022-01-14 | JUICE-UVS 0014 |  | 172d | start on or after 2022-01-10 |
| JUICE-UVS 592929 |  | PI Day | 5d | 2022-05-09 | 2022-05-13 | JUICE-UVS 0014 |  | 87d | start on or after 2022-05-09 |
| JUICE-UVS 592938 |  | Science Team Launch | 5d | 2022-06-20 | 2022-06-24 | JUICE-UVS 0014 |  | 59d | start on or after 2022-06-20 |
| JUICE-UVS 592932 |  | PI Day | 5d | 2022-09-12 | 2022-09-16 | JUICE-UVS 0014 |  | 3d | start on or after 2022-09-12 |
|  | 06 | **Project Support** |  | 2016-10-03 | 2022-09-21 |  |  |  |  |
| JUICE-UVS 592215 |  | Project Support FY 17 Start of Phase C | 250d | 2016-10-03 A | 2017-09-29 A | JUICE-UVS 0011 | 100% |  |  |
| JUICE-UVS 592221 |  | Project Support FY 18 | 250d | 2017-10-02 A | 2018-09-28 A | JUICE-UVS 592215 | 100% |  |  |
| JUICE-UVS 592224 |  | Project Support FY 19 | 251d | 2018-10-01 A | 2019-09-30 | JUICE-UVS 592221 | 65% | 0d |  |
| JUICE-UVS 592227 |  | Project Support FY 20 | 252d | 2019-10-01 | 2020-09-30 | JUICE-UVS 592224 |  | 0d |  |
| JUICE-UVS 592230 |  | Project Support FY 21 End of Phase C | 32d | 2020-10-01 | 2020-11-13 | JUICE-UVS 592227 |  | 0d |  |
| JUICE-UVS 592233 |  | Project Support FY 21 Start of Phase D | 218d | 2020-11-16 | 2021-09-30 | JUICE-UVS 592230 |  | 0d |  |
| JUICE-UVS 592236 |  | Project Support FY 22 End of Phase D | 243d | 2021-10-01 | 2022-09-21 | JUICE-UVS 592233 |  | 0d |  |
|  | 07 | **Review Support** |  | 2017-04-14 | 2019-09-30 |  |  |  |  |
|  | 01 | **ESA QR** |  | 2017-04-14 | 2019-09-30 |  |  |  |  |
| JUICE-UVS 593313 |  | ESA QR Preparation | 10d | 2017-04-14 A | 2017-04-27 A |  | 100% |  |  |
| JUICE-UVS594174 |  | ESA QR Preparation Part 2 | 10d | 2019-09-04 | 2019-09-17 | JUICE-UVS 593307 |  | 0d | as late as possible |
| JUICE-UVS 593316 |  | ESA QR Submit | 0d | 2019-09-17 | 2019-09-17 | JUICE-UVS594174 |  | 0d | as late as possible |
| JUICE-UVS 593319 |  | ESA QR Conduct | 1d | 2019-09-18 | 2019-09-18 | JUICE-UVS 593316 |  | 0d | start on or after 2019-09-18 |
| JUICE-UVS 593322 |  | ESA QR RFA Closeout | 8d | 2019-09-19 | 2019-09-30 | JUICE-UVS 593319 |  | 1d |  |
|  | 02 | **NASA Critical Design Review (CDR)** |  | 2017-08-18 | 2018-02-01 |  |  |  |  |
| JUICE-UVS 592474 |  | NASA CDR Preparation | 9d | 2017-08-18 A | 2017-08-30 A | JUICE-UVS 592452, JUICE-UVS 592488, JUICE-UVS 592482, JUICE-UVS 592461, JUICE-UVS 593370, JUICE-UVS 592458, JUICE-UVS 2033, JUICE-UVS 2027, JUICE-UVS 2021, JUICE-UVS 593265, JUICE-UVS 2020, JUICE-UVS 3212 FF, JUICE-UVS 2028, JUICE-UVS 2054, JUICE-UVS 2136, JUICE-UVS 2138, JUICE-UVS 2160 FF, JUICE-UVS 2103, JUICE-UVS 2096, JUICE-UVS 2100, JUICE-UVS 2079 FF, JUICE-UVS 592347 FF, JUICE-UVS 592351, JUICE-UVS 592354, JUICE-UVS 592356, JUICE-UVS 592362, JUICE-UVS 592366, JUICE-UVS 592353 FF, JUICE-UVS 3272, JUICE-UVS 593394, JUICE-UVS 593400, JUICE-UVS 593406, JUICE-UVS 593409, JUICE-UVS 593412, JUICE-UVS 593415, JUICE-UVS 593418, JUICE-UVS 593421, JUICE-UVS 593427, JUICE-UVS 593430, JUICE-UVS 593433, JUICE-UVS 593436 FF, JUICE-UVS 593439 FF, JUICE-UVS 593442 FF, JUICE-UVS 593445, JUICE-UVS 593454 FF, JUICE-UVS 593457, JUICE-UVS 593460, JUICE-UVS 593463, JUICE-UVS 593469 FF, JUICE-UVS 593475 FF, JUICE-UVS 593478, JUICE-UVS 593481, JUICE-UVS 593484, JUICE-UVS 593490, JUICE-UVS 593493, JUICE-UVS 593523 FF, JUICE-UVS 593526, JUICE-UVS 593532 FF, JUICE-UVS 593538, JUICE-UVS 593562, JUICE-UVS 593565 FF, JUICE-UVS 593589, JUICE-UVS 593583, JUICE-UVS 593580, JUICE-UVS 593574, JUICE-UVS 593424, JUICE-UVS 593496 FF, JUICE-UVS 593502 FF, JUICE-UVS 593505 FF, JUICE-UVS 593508 FF, JUICE-UVS 593541 FF, JUICE-UVS 593976 FF, JUICE-UVS 593979 FF, JUICE-UVS 593982 FF, JUICE-UVS 593556, JUICE-UVS 593559, JUICE-UVS 593568 FF, JUICE-UVS 593571 FF, JUICE-UVS 593964, JUICE-UVS 593397, JUICE-UVS 593451 | 100% |  |  |
| JUICE-UVS 592478 |  | Submit NASA CDR Package | 0d | 2017-08-31 A | 2017-08-31 A | JUICE-UVS 592474 | 100% |  |  |
| JUICE-UVS 592475 |  | Conduct NASA CDR | 2d | 2017-09-13 A | 2017-09-14 A | JUICE-UVS 592478 | 100% |  |  |
| JUICE-UVS 592477 |  | NASA CDR RFA Closeout | 86d | 2017-09-28 A | 2018-02-01 A | JUICE-UVS 592475, JUICE-UVS 593262, JUICE-UVS 592479 | 100% |  |  |
|  | 03 | **ESA (I-CDR)** |  | 2017-08-18 | 2018-04-03 |  |  |  |  |
| JUICE-UVS 2340 |  | I-CDR Preparation | 10d | 2017-08-18 A | 2017-08-31 A | JUICE-UVS 2030, JUICE-UVS 0023 | 100% |  |  |
| JUICE-UVS 2570 |  | Submit I-CDR Package | 0d | 2017-08-31 A | 2017-08-31 A | JUICE-UVS 2340 | 100% |  |  |
| JUICE-UVS 2350 |  | Conduct I-CDR | 22d | 2017-09-29 A | 2017-10-13 A | JUICE-UVS 2570, JUICE-UVS594003 | 100% |  |  |
| JUICE-UVS 2360 |  | I-CDR RFA Closeout | 125d | 2017-10-04 A | 2018-04-03 A | JUICE-UVS 592519, JUICE-UVS 2350 | 100% |  |  |
|  | 04 | **NASA Pre-Environmental Review (I-PER)** |  | 2018-11-26 | 2019-07-02 |  |  |  |  |
| JUICE-UVS 593301 |  | NASA PER Preparation | 17d | 2018-11-26 A | 2019-03-06 A | JUICE-UVS 592475 | 100% |  |  |
| JUICE-UVS 593304 |  | Submit NASA PER Package | 0d | 2019-03-06 A | 2019-03-06 A | JUICE-UVS 593301 | 100% |  | mandatory finish 2019-03-06 |
| JUICE-UVS 593307 |  | Conduct NASA PER | 1d | 2019-03-20 A | 2019-03-20 A | JUICE-UVS 593304 FS+10d, JUICE-UVS 2177, JUICE-UVS 2360, JUICE-UVS 4304, JUICE-UVS 4332, JUICE-UVS 4352 | 100% |  | mandatory start 2019-03-20 |
| JUICE-UVS 593310 |  | NASA PER RFA Closeout | 10d | 2019-03-21 A | 2019-07-02 | JUICE-UVS 593307 |  | 22d |  |
|  | 05 | **NASA Pre-Ship Review (I-PSR)** |  | 2019-07-22 | 2019-09-30 |  |  |  |  |
| JUICE-UVS 2370 |  | NASA I-PSR Preparation | 35d | 2019-07-22 | 2019-09-10 | JUICE-UVS 593307, JUICE-UVS 592526, JUICE-UVS 592522 |  | 5d | start on or after 2019-07-15 |
| JUICE-UVS 2590 |  | Submit NASA I-PSR Package | 0d | 2019-09-17 | 2019-09-17 | JUICE-UVS 2370 |  | 0d | as late as possible |
| JUICE-UVS 2380 |  | Conduct NASA I-PSR | 1d | 2019-09-18 | 2019-09-18 | JUICE-UVS 594813, JUICE-UVS594141, JUICE-UVS 2590, JUICE-UVS 593310 |  | 0d | start on or after 2019-09-18 |
| JUICE-UVS 2390 |  | NASA I-PSR RFA Closeout | 8d | 2019-09-19 | 2019-09-30 | JUICE-UVS 2380 |  | 1d |  |
|  | 08 | **Configuration Management/Document Control** |  | 2016-10-03 | 2019-07-01 |  |  |  |  |
|  | 01 | **Configuration Management** |  | 2016-10-03 | 2019-07-01 |  |  |  |  |
| JUICE-UVS 591480 |  | CM FY 17 Start of Phase C | 250d | 2016-10-03 A | 2017-09-29 A | JUICE-UVS 0011 | 100% |  |  |
| JUICE-UVS 593598 |  | Configuration Control & Document Management Plan PM - 05 | 10d | 2017-07-31 A | 2017-08-11 A | JUICE-UVS 0011 | 100% |  |  |
| JUICE-UVS 591483 |  | CM FY 18 | 250d | 2017-10-02 A | 2018-09-28 A | JUICE-UVS 591480 | 100% |  |  |
| JUICE-UVS 591486 |  | CM FY 19 | 105d | 2018-10-01 A | 2019-07-01 | JUICE-UVS 591483 | 76% | 63d |  |
|  | 02 | **Document Control** |  | 2016-10-03 | 2019-07-01 |  |  |  |  |
| JUICE-UVS 591510 |  | Document Control FY 17 Start of Phase C | 250d | 2016-10-03 A | 2017-09-29 A | JUICE-UVS 0011 | 100% |  |  |
| JUICE-UVS593595 |  | Product Document Tree PM - 03 | 10d | 2017-07-31 A | 2017-08-11 A | JUICE-UVS 0011 | 100% |  |  |
| JUICE-UVS 591513 |  | Document Control FY 18 | 250d | 2017-10-02 A | 2018-09-28 A | JUICE-UVS 591510 | 100% |  |  |
| JUICE-UVS 591516 |  | Document Control FY 19 | 105d | 2018-10-01 A | 2019-07-01 | JUICE-UVS 591513 | 76% | 63d |  |
|  | 09 | **Control Stores** |  | 2016-10-03 | 2019-07-01 |  |  |  |  |
| JUICE-UVS 591540 |  | Controlled Stores FY 17 Start of Phase C | 250d | 2016-10-03 A | 2017-09-29 A | JUICE-UVS 0011 | 100% |  |  |
| JUICE-UVS 591543 |  | Controlled Stores FY 18 | 250d | 2017-10-02 A | 2018-09-28 A | JUICE-UVS 591540 | 100% |  |  |
| JUICE-UVS 591546 |  | Controlled Stores FY 19 | 105d | 2018-10-01 A | 2019-07-01 | JUICE-UVS 591543 | 76% | 63d |  |
|  | 10 | **Customs Broker Support** |  | 2016-10-03 | 2022-09-21 |  |  |  |  |
| JUICE-UVS 592263 |  | Customs Broker FY 17 Start of Phase C | 250d | 2016-10-03 A | 2017-09-29 A | JUICE-UVS 0011 | 100% |  |  |
| JUICE-UVS 592266 |  | Customs Broker FY 18 | 250d | 2017-10-02 A | 2018-09-28 A | JUICE-UVS 592263 | 100% |  |  |
| JUICE-UVS 592269 |  | Customs Broker FY 19 | 251d | 2018-10-01 A | 2019-09-30 | JUICE-UVS 592266 | 65% | 0d |  |
| JUICE-UVS 592275 |  | Customs Broker FY 20 | 252d | 2019-10-01 | 2020-09-30 | JUICE-UVS 592269 |  | 0d |  |
| JUICE-UVS 592278 |  | Customs Broker FY 21 End of Phase C | 32d | 2020-10-01 | 2020-11-13 | JUICE-UVS 592275 |  | 0d |  |
| JUICE-UVS 592281 |  | Customs Broker FY 21 Start of Phase D | 218d | 2020-11-16 | 2021-09-30 | JUICE-UVS 592278 |  | 0d |  |
| JUICE-UVS 592284 |  | Customs Broker FY 22 End of Phase D | 243d | 2021-10-01 | 2022-09-21 | JUICE-UVS 592281 |  | 0d |  |
|  | 12 | **Management SDRLs** |  | 2017-07-10 | 2017-08-11 |  |  |  |  |
| JUICE-UVS 593394 |  | Project Management Plan PMP - 001 | 0d | 2017-07-10 A | 2017-07-10 A | JUICE-UVS 593592 | 100% |  |  |
| JUICE-UVS 593400 |  | Product Document Tree PM - 03 | 0d | 2017-08-07 A | 2017-08-07 A | JUICE-UVS 593595 | 100% |  |  |

| ID | WBS | Task | Duration | Start | Finish | Predecessors | Complete | Total float |
| --- | --- | --- | --- | --- | --- | --- | --- | --- |
| JUICE-UVS 593409 |  | Risk Management Plan JUICE-UVS Investigation PM - 7 | 0d | 2017-08-07 A | 2017-08-07 A | JUICE-UVS 593601 | 100% |  |
| JUICE-UVS 593406 |  | Configuration Control & Document Management Plan PM - 05 | 0d | 2017-08-11 A | 2017-08-11 A | JUICE-UVS 0023 | 100% |  |
| JUICE-UVS 593412 |  | Risk Register Assessment PM - 14 | 0d | 2017-08-11 A | 2017-08-11 A | JUICE-UVS 593604 | 100% |  |
| JUICE-UVS 593415 |  | Document Delivery List PM - 16 | 0d | 2017-08-11 A | 2017-08-11 A | JUICE-UVS 593607 | 100% |  |
| JUICE-UVS 593418 |  | Projoct Organization Structure for the JUICE-UVS Instrument PM - 50 | 0d | 2017-08-11 A | 2017-08-11 A | JUICE-UVS 593610 | 100% |  |
|  | 02 | **Systems Engineering** |  | 2016-10-03 | 2022-09-21 |  |  |  |
|  | 01 | **SE Support & Oversight** |  | 2016-10-03 | 2022-09-21 |  |  |  |
|  | 01 | **Sustained SE** |  | 2016-10-03 | 2022-09-21 |  |  |  |
| JUICE-UVS 591660 |  | SE FY 17 Start of Phase C | 250d | 2016-10-03 A | 2017-09-29 A | JUICE-UVS 0011 | 100% |  |
| JUICE-UVS 592501 |  | Additional ESA Support FY 17 Start of Phase C | 250d | 2016-10-03 A | 2017-09-29 A | JUICE-UVS 0011 | 100% |  |
| JUICE-UVS 591663 |  | SE FY 18 | 250d | 2017-10-02 A | 2018-09-28 A | JUICE-UVS 591660 | 100% |  |
| JUICE-UVS 592504 |  | Additional ESA Support FY 18 | 250d | 2017-10-02 A | 2018-09-28 A | JUICE-UVS 592501 | 100% |  |
| JUICE-UVS 591666 |  | SE FY 19 | 251d | 2018-10-01 A | 2019-09-30 | JUICE-UVS 591663, JUICE-UVS594168 | 65% | 0d |
| JUICE-UVS 592507 |  | Additional ESA Support FY 19 | 251d | 2018-10-01 A | 2019-09-30 | JUICE-UVS 592504 | 65% | 0d |
| JUICE-UVS 591669 |  | SE FY 20 | 252d | 2019-10-01 | 2020-09-30 | JUICE-UVS 591666 |  | 0d |
| JUICE-UVS592509 |  | Additional ESA Support FY 20 | 252d | 2019-10-01 | 2020-09-30 | JUICE-UVS 592507 |  | 0d |
| JUICE-UVS 591717 |  | SE FY 21 End of Phase C | 32d | 2020-10-01 | 2020-11-13 | JUICE-UVS592509, JUICE-UVS 591669 |  | 0d |
| JUICE-UVS 591720 |  | SE FY 21 Start of Phase D | 218d | 2020-11-16 | 2021-09-30 | JUICE-UVS 591717 |  | 0d |
| JUICE-UVS 591675 |  | SE FY 22 End of Phase D | 243d | 2021-10-01 | 2022-09-21 | JUICE-UVS 591720 |  | 0d |
|  | 02 | **Discrete SE** |  | 2017-08-07 | 2017-08-18 |  |  |  |
| JUICE-UVS 593613 |  | Instrument Design Report SE - 08 | 10d | 2017-08-07 A | 2017-08-18 A | JUICE-UVS 0023 | 100% |  |
| JUICE-UVS 593616 |  | Technical Budget Report SE - 09 | 10d | 2017-08-07 A | 2017-08-18 A | JUICE-UVS 0023 | 100% |  |
| JUICE-UVS 593619 |  | Not Required Trade-Off Report SE - 17 (N/A) | 10d | 2017-08-07 A | 2017-08-18 A | JUICE-UVS 0023 | 100% |  |
|  | 02 | **Specs/ICDs (DOORS)** |  | 2016-10-03 | 2017-08-18 |  |  |  |
| JUICE-UVS 2023 |  | UVS Instrument Specification - Updates and Review | 20d | 2016-10-03 A | 2016-10-28 A | JUICE-UVS 0023 | 100% |  |
| JUICE-UVS 2054 |  | UVS EID-B (Spacecraft ICD) - Final Review & Updates for Release | 41d | 2016-11-28 A | 2017-01-26 A |  | 100% |  |
| JUICE-UVS 2020 |  | UVS Instrument Specification - Final Review for Release | 41d | 2017-05-30 A | 2017-07-26 A | JUICE-UVS 2023 | 100% |  |
| JUICE-UVS 2021 |  | LVPS Bd Performance Func Spec - Final | 13d | 2017-07-12 A | 2017-07-28 A | JUICE-UVS 2054 | 100% |  |
| JUICE-UVS 2027 |  | C&DH Bd Performance Func Spec - Final | 13d | 2017-07-12 A | 2017-07-28 A | JUICE-UVS 2054 | 100% |  |
| JUICE-UVS 2028 |  | HVPS Bd Performance Func Spec - Final | 13d | 2017-07-12 A | 2017-07-28 A | JUICE-UVS 2054 | 100% |  |
| JUICE-UVS 2033 |  | Det & Det Elec. Spec - Final | 13d | 2017-07-12 A | 2017-07-28 A | JUICE-UVS 2054 | 100% |  |
| JUICE-UVS 2030 |  | Test Equipment Spec - Final | 7d | 2017-08-07 A | 2017-08-15 A | JUICE-UVS 2054 | 100% |  |
| JUICE-UVS 2064 |  | JUICE-UVS EICD Development - Final | 5d | 2017-08-07 A | 2017-08-11 A | JUICE-UVS 0023 | 100% |  |
| JUICE-UVS 593625 |  | Instrument Configuration Item Data List (CIDL) SE - 23 | 10d | 2017-08-07 A | 2017-08-18 A | JUICE-UVS 0023 | 100% |  |
|  | 03 | **Analyses** |  | 2016-10-03 | 2019-07-19 |  |  |  |
|  | 01 | **Parts Stress Derating** |  | 2017-04-10 | 2017-08-10 |  |  |  |
| JUICE-UVS 592362 |  | Parts Stress Derating Detector - Final | 86d | 2017-04-10 A | 2017-08-10 A | JUICE-UVS 9054 | 100% |  |
| JUICE-UVS 592351 |  | Parts Stress Derating LVPS - Final | 38d | 2017-05-12 A | 2017-07-07 A | JUICE-UVS 3272 | 100% |  |
| JUICE-UVS 592366 |  | Parts Stress Derating Backplane - Final | 5d | 2017-05-12 A | 2017-05-18 A | JUICE-UVS 592351 SS | 100% |  |
| JUICE-UVS 592356 |  | Parts Stress Derating C&DH - Final | 56d | 2017-05-22 A | 2017-08-10 A | JUICE-UVS 5208 SS | 100% |  |
| JUICE-UVS 592354 |  | Parts Stress Derating HVPS - Final | 19d | 2017-05-30 A | 2017-06-23 A | JUICE-UVS 3217 | 100% |  |
|  | 02 | **Radiation Analyses** |  | 2016-10-03 | 2017-10-24 |  |  |  |
| JUICE-UVS 2088 |  | EEE Radiation Analysis - Incorporate Changes Post PDR | 38d | 2016-10-03 A | 2016-11-23 A | JUICE-UVS 0023 | 100% |  |
| JUICE-UVS 593364 |  | Parts Radiation Testing Incorporate Changes Post PDR | 35d | 2016-10-03 A | 2016-11-18 A | JUICE-UVS 0023 | 100% |  |
| JUICE-UVS 592568 |  | Parts Radiation Testing Final Review for Release | 17d | 2016-11-01 A | 2016-11-23 A | JUICE-UVS 593364 | 100% |  |
| JUICE-UVS 592443 |  | Radiation Transport & Charging Analysis - Incoporate Changes Post PDR | 40d | 2016-11-28 A | 2017-01-25 A | JUICE-UVS 592568 | 100% |  |
| JUICE-UVS 592449 |  | EEE Radiation Analysis - Draft | 35d | 2017-01-03 A | 2017-02-20 A | JUICE-UVS 2088 | 100% |  |
| JUICE-UVS 592446 |  | Radiation Transport & Charging Analysis - Draft | 40d | 2017-01-26 A | 2017-03-22 A | JUICE-UVS 592443 | 100% |  |
| JUICE-UVS 592452 |  | EEE Radiation Analysis - Final Review for Release | 35d | 2017-02-21 A | 2017-04-10 A | JUICE-UVS 592449 | 100% |  |
| JUICE-UVS 2079 |  | Radiation Transport & Charging Analysis - Final Review for Release | 62d | 2017-05-08 A | 2017-08-04 A | JUICE-UVS 592446 | 100% |  |
| JUICE-UVS 593262 |  | Radiation Modeling & Analysis Report - Final | 55d | 2017-08-07 A | 2017-10-24 A | JUICE-UVS 592452, JUICE-UVS 2079, JUICE-UVS 592568 | 100% |  |
|  | 03 | **FMEA** |  | 2016-10-31 | 2017-08-16 |  |  |  |
| JUICE-UVS 2084 |  | UVS FMEA - Incorporate Changes Post PDR | 16d | 2016-10-31 A | 2016-11-21 A | JUICE-UVS 0023 | 100% |  |
| JUICE-UVS 592602 |  | UVS FTA - Incorporate Changes Post PDR | 16d | 2016-10-31 A | 2016-11-21 A | JUICE-UVS 0023 | 100% |  |
| JUICE-UVS 593367 |  | Not Required -UVS FTA - CDR Draft | 29d | 2017-06-26 A | 2017-08-04 A | JUICE-UVS 592602 | 100% |  |
| JUICE-UVS 593370 |  | Not Required -UVS FTA - Final Review for Release | 29d | 2017-06-26 A | 2017-08-04 A | JUICE-UVS 593367 SS | 100% |  |
| JUICE-UVS 592455 |  | UVS FMEA - CDR Draft | 1d | 2017-08-07 A | 2017-08-07 A | JUICE-UVS 2084 | 100% |  |
| JUICE-UVS 592458 |  | UVS FMEA - Final Review for Release | 10d | 2017-08-07 A | 2017-08-16 A | JUICE-UVS 592455 FF | 100% |  |
|  | 04 | **WCA** |  | 2017-03-06 | 2017-08-17 |  |  |  |
| JUICE-UVS594033 |  | LISN LVPS Analysis Sim (R001881) | 5d | 2017-03-06 A | 2017-03-10 A | JUICE-UVS 2054 | 100% |  |
| JUICE-UVS594036 |  | LCL Power Stability to LVPS Sim (R001882) | 5d | 2017-03-06 A | 2017-03-10 A | JUICE-UVS 2054 | 100% |  |
| JUICE-UVS594042 |  | Power Up/Down Derating (R001883) | 5d | 2017-03-06 A | 2017-03-10 A | JUICE-UVS 2054 | 100% |  |
| JUICE-UVS 2103 |  | HVPS PWA WCA - FM | 76d | 2017-04-24 A | 2017-08-10 A | JUICE-UVS 3229 | 100% |  |
| JUICE-UVS 2100 |  | LVPS PWA WCA - FM | 76d | 2017-05-01 A | 2017-08-17 A | JUICE-UVS 3272 SS | 100% |  |
| JUICE-UVS 2096 |  | C&DH PWA WCA - FM | 70d | 2017-05-03 A | 2017-08-11 A | JUICE-UVS 591810 | 100% |  |
| JUICE-UVS 592353 |  | C&DH FPGA WCTA - FM | 20d | 2017-05-23 A | 2017-06-21 A | JUICE-UVS 592743 | 100% |  |
|  | 05 | **Thermal Analyses** |  | 2016-10-31 | 2019-07-19 |  |  |  |
| JUICE-UVS 592513 |  | Additional Thermal Interface Analysis FY 17 | 116d | 2016-10-31 A | 2017-04-17 A | JUICE-UVS 0023 | 100% |  |
| JUICE-UVS 2104 |  | UVS Thermal Analysis - Incorporate Changes Post PDR | 82d | 2017-01-06 A | 2017-05-01 A | JUICE-UVS 592513 | 100% |  |
| JUICE-UVS 592461 |  | UVS Thermal Analysis - Final Review for Release | 75d | 2017-05-22 A | 2017-09-08 A | JUICE-UVS 2104, JUICE-UVS 2581 | 100% |  |

| ID | WBS | Task | Duration | Start | Finish | Predecessors | Complete | Total float | Constraint |
| --- | --- | --- | --- | --- | --- | --- | --- | --- | --- |
| JUICE-UVS 592519 |  | Additional Thermal Interface Analysis FY 17 | 44d | 2017-07-26 A | 2017-09-27 A | JUICE-UVS 592461 | 100% |  |  |
| JUICE-UVS 592522 |  | Additional Thermal Interface Analysis FY 18 | 314d | 2017-09-22 A | 2019-07-19 | JUICE-UVS 5235 | 92% | 5d |  |
|  | 06 | **Structural Analyses** |  | 2016-12-19 | 2019-07-19 |  |  |  |  |
| JUICE-UVS 592516 |  | Additional Structural Interface Analysis FY 17 | 22d | 2016-12-19 A | 2017-01-20 A | JUICE-UVS 0023 | 100% |  |  |
| JUICE-UVS 592523 |  | Additional Structural Interface Analysis FY 17 | 128d | 2017-03-15 A | 2017-09-15 A | JUICE-UVS 592516 | 100% |  |  |
| JUICE-UVS 2108 |  | UVS Structural Analysis Bd Level- Incorporate Changes Post PDR | 29d | 2017-06-13 A | 2017-07-24 A | JUICE-UVS 3212 FF+10d, JUICE-UVS 3272 FF, JUICE-UVS 592740 FF, JUICE-UVS 9063, JUICE-UVS 592516 | 100% |  |  |
| JUICE-UVS 592479 |  | UVS Structural Analysis - Final Review for Release | 64d | 2017-07-25 A | 2017-10-24 A | JUICE-UVS 2581, JUICE-UVS 2108 | 100% |  |  |
| JUICE-UVS 592526 |  | Additional Structural Interface Analysis FY 18 | 334d | 2017-10-02 A | 2019-07-19 | JUICE-UVS 592523 | 88% | 5d |  |
|  | 07 | **PRA Support** |  | 2017-07-03 | 2017-08-11 |  |  |  |  |
| JUICE-UVS 592347 |  | UVS Reliability PRA - FM Final | 29d | 2017-07-03 A | 2017-08-11 A | JUICE-UVS 9060, JUICE-UVS 3212, JUICE-UVS 3272, JUICE-UVS 5208, JUICE-UVS 0023 | 100% |  |  |
|  | 08 | **Revised Thermal Analysis** |  | 2019-04-08 | 2019-06-06 |  |  |  |  |
| JUICE-UVS 594813 |  | Revised Thermal Analysis | 10d | 2019-04-08 A | 2019-06-06 | JUICE-UVS 5235 |  | 70d | start on or after 2019-04-08 |
|  | 04 | **Verification** |  | 2016-12-06 | 2019-11-25 |  |  |  |  |
|  | 01 | **Verification Plan/Matrix** |  | 2016-12-06 | 2017-07-18 |  |  |  |  |
| JUICE-UVS 592878 |  | Verification Plan - Prelim | 50d | 2016-12-06 A | 2017-02-16 A | JUICE-UVS 0023 | 100% |  |  |
| JUICE-UVS 2122 |  | Verification Plan - Draft | 48d | 2017-03-01 A | 2017-05-05 A | JUICE-UVS 592878 | 100% |  |  |
| JUICE-UVS 592482 |  | Verification Plan - Final Review for Release | 35d | 2017-05-30 A | 2017-07-18 A | JUICE-UVS 2122 | 100% |  |  |
|  | 02 | **Acceptance Data Package** |  | 2018-09-04 | 2019-11-25 |  |  |  |  |
| JUICE-UVS 2188 |  | UVS EM End Item Data Package | 10d | 2018-09-04 A | 2018-09-17 A |  | 100% |  |  |
| JUICE-UVS 2185 |  | UVS FM End Item Data Package | 40d | 2019-07-03 | 2019-08-28 | JUICE-UVS 593310 |  | 22d |  |
| JUICE-UVS 3094 |  | UVS STM End Item Data Package | 20d | 2019-10-28 | 2019-11-25 | JUICE-UVS 51076 |  | 3.5d |  |
|  | 03 | **Plans/Procedures** |  | 2017-01-27 | 2019-05-28 |  |  |  |  |
|  | 01 | **Test Plans** |  | 2017-01-27 | 2017-08-18 |  |  |  |  |
| JUICE-UVS 593265 |  | UVS EMI/EMC Test Plan Final | 98d | 2017-01-27 A | 2017-06-15 A | JUICE-UVS 2054 | 100% |  |  |
| JUICE-UVS 592875 |  | UVS I&T Test Plan - Prelim Phase C | 47d | 2017-02-15 A | 2017-04-20 A | JUICE-UVS 0023 | 100% |  |  |
| JUICE-UVS 2138 |  | UVS Calibration Plan - Final | 20d | 2017-04-03 A | 2017-04-28 A | JUICE-UVS 0023 | 100% |  |  |
| JUICE-UVS 2136 |  | UVS AI&T Test Plan - Final | 9d | 2017-08-07 A | 2017-08-17 A | JUICE-UVS 593265, JUICE-UVS 592875 | 100% |  |  |
| JUICE-UVS 593628 |  | Fracture Control Plan & Summary Report SE - 31 | 10d | 2017-08-07 A | 2017-08-18 A | JUICE-UVS 2138 | 100% |  |  |
|  | 02 | **Instrument Level Test Proc** |  | 2017-08-07 | 2017-08-30 |  |  |  |  |
| JUICE-UVS 2160 |  | UVS Full Func Test Procedure (ATP) - FM Phase C | 18d | 2017-08-07 A | 2017-08-30 A | JUICE-UVS 2030 FF | 100% |  |  |
|  | 03 | **Acceptance Test Proc** |  | 2017-02-06 | 2019-05-28 |  |  |  |  |
| JUICE-UVS 2170 |  | UVS EMI/EMC Procedure - Prelim | 75d | 2017-02-06 A | 2017-05-19 A | JUICE-UVS 0023 | 100% |  |  |
| JUICE-UVS 2180 |  | UVS Magnetics Test Proc - Prelim | 44d | 2017-12-27 A | 2018-01-31 A | JUICE-UVS 2350 | 100% |  |  |
| JUICE-UVS 2177 |  | UVS Magnetics Test Proc - Final | 102d | 2018-01-31 A | 2018-06-25 A | JUICE-UVS 2180 | 100% |  |  |
| JUICE-UVS 4304 |  | UVS EMI/EMC Procedure - Final | 102d | 2018-01-31 A | 2018-06-25 A | JUICE-UVS 2170, JUICE-UVS 2350 | 100% |  |  |
| JUICE-UVS 4335 |  | UVS Vibration Procedure - Prelim | 20d | 2018-06-25 A | 2018-07-23 A | JUICE-UVS 2350 | 100% |  |  |
| JUICE-UVS 4347 |  | UVS TVAC Test Procedure - Prelim | 20d | 2018-06-25 A | 2018-07-23 A | JUICE-UVS 2350 | 100% |  |  |
| JUICE-UVS 4332 |  | UVS Vibration Procedure - Final | 15d | 2019-01-07 A | 2019-01-25 A | JUICE-UVS 4335 | 100% |  |  |
| JUICE-UVS 4352 |  | UVS TVAC Test Procedure - Final | 15d | 2019-01-07 A | 2019-05-28 | JUICE-UVS 4347 | 50% | 22d |  |
|  | 04 | **Calibration Proc** |  | 2017-06-26 | 2017-08-04 |  |  |  |  |
| JUICE-UVS 2178 |  | UVS Calibration Procedure | 29d | 2017-06-26 A | 2017-08-04 A | JUICE-UVS 2138 | 100% |  |  |
|  | 05 | **Contamination Control** |  | 2016-10-03 | 2017-09-29 |  |  |  |  |
| JUICE-UVS 591570 |  | Contamination Control FY 17 | 250d | 2016-10-03 A | 2017-09-29 A | JUICE-UVS 0011 | 100% |  |  |
|  | 06 | **Contamination Control FY 18-19** |  | 2017-10-02 | 2019-07-01 |  |  |  |  |
| JUICE-UVS 591573 |  | Contamination Control FY 18 | 250d | 2017-10-02 A | 2018-09-28 A | JUICE-UVS 591570 | 100% |  |  |
| JUICE-UVS 591576 |  | Contamination Control FY 19 | 105d | 2018-10-01 A | 2019-07-01 | JUICE-UVS 591573 | 76% | 63d |  |
|  | 07 | **SE SDRLs** |  | 2016-12-27 | 2019-06-20 |  |  |  |  |
| JUICE-UVS 593397 |  | Engineering, Development & Verification Plan EDVP PM - 01 | 0d | 2016-12-27 A | 2016-12-27 A | JUICE-UVS 0023 | 100% |  |  |
| JUICE-UVS 593451 |  | Compliance, Traceability & Verification Control Document SE - 15 | 0d | 2016-12-27 A | 2016-12-27 A | JUICE-UVS 0023 | 100% |  |  |
| JUICE-UVS 593421 |  | Experiment Interface Document - Part B (EID-B) SE - 01 | 0d | 2017-08-07 A | 2017-08-07 A | JUICE-UVS 593427, JUICE-UVS 2054 | 100% |  |  |
| JUICE-UVS 593427 |  | Instrument Calibration Plan SE - 04 | 0d | 2017-08-07 A | 2017-08-07 A | JUICE-UVS 593433, JUICE-UVS 2178 | 100% |  |  |
| JUICE-UVS 593433 |  | Instrument EMC COntrol Plan SE - 06 | 0d | 2017-08-07 A | 2017-08-07 A | JUICE-UVS 593436, JUICE-UVS 0023 | 100% |  |  |
| JUICE-UVS 593436 |  | Instrument Requirements Specification SE - 07 | 0d | 2017-08-07 A | 2017-08-07 A | JUICE-UVS 593463, JUICE-UVS 2020 | 100% |  |  |
| JUICE-UVS 593463 |  | Instrument Software Configuration File SE - 22 | 0d | 2017-08-07 A | 2017-08-07 A | JUICE-UVS 593478, JUICE-UVS 0023 | 100% |  |  |
| JUICE-UVS 593538 |  | Fault Tree Analysis (FTA) PA - 03.09 (Not Required) | 0d | 2017-08-07 A | 2017-08-07 A | JUICE-UVS 593562, JUICE-UVS 593370 | 100% |  |  |
| JUICE-UVS 593562 |  | Cleanliness & Contamination Requirement Specification & Control Plan PA - 08.01 | 0d | 2017-08-07 A | 2017-08-07 A | JUICE-UVS 593565, JUICE-UVS 0023 | 100% |  |  |
| JUICE-UVS 593565 |  | Contamination Analysis PA - 08.02 | 0d | 2017-08-07 A | 2017-08-07 A | JUICE-UVS 593397, JUICE-UVS 0023 | 100% |  |  |
| JUICE-UVS 593445 |  | JUICE-UVS Electrical Interface Control Document SE - 11 | 0d | 2017-08-11 A | 2017-08-11 A | JUICE-UVS 593460, JUICE-UVS 2064 | 100% |  |  |
| JUICE-UVS 593523 |  | Dependability Analysis Report PA - 03.02 | 0d | 2017-08-11 A | 2017-08-11 A | JUICE-UVS 593421, JUICE-UVS 592347 | 100% |  |  |
| JUICE-UVS 593457 |  | Instrument Operations Concept Document (IOCD) SE - 19 | 0d | 2017-08-14 A | 2017-08-14 A | JUICE-UVS 593490, JUICE-UVS 593622 | 100% |  |  |
| JUICE-UVS 593490 |  | Instrument Science Performance Report SE - 120 | 0d | 2017-08-14 A | 2017-08-14 A | JUICE-UVS 593493, JUICE-UVS 593631 | 100% |  |  |
| JUICE-UVS 593493 |  | Instrument Science Implementation Plan SE - 121 | 0d | 2017-08-14 A | 2017-08-14 A | JUICE-UVS 593445, JUICE-UVS 593634 | 100% |  |  |
| JUICE-UVS 593484 |  | GSE Description & User Manual (TEQ) SE - 34 | 0d | 2017-08-15 A | 2017-08-15 A | JUICE-UVS 593457, JUICE-UVS 2030 | 100% |  |  |
| JUICE-UVS 593526 |  | FMEA/Hardware-Software Interaction Analysis/Contengency Analysis/Software Criticallity Analysis Report PA - 03.03 | 0d | 2017-08-16 A | 2017-08-16 A | JUICE-UVS 593484, JUICE-UVS 592458 | 100% |  |  |
| JUICE-UVS 593430 |  | Instrument AIV/AIT Plan SE - 05 | 0d | 2017-08-17 A | 2017-08-17 A | JUICE-UVS 593481, JUICE-UVS 2136 | 100% |  |  |
| JUICE-UVS 593532 |  | Worst Case Analysis Report PA - 03.06 | 0d | 2017-08-17 A | 2017-08-17 A | JUICE-UVS 593526, JUICE-UVS 592354, JUICE-UVS 2096, JUICE-UVS 2103, JUICE-UVS 2100 | 100% |  |  |
| JUICE-UVS 593460 |  | Instrument Thermal Interface Control Document SE - 20 | 0d | 2017-09-05 A | 2017-09-05 A | JUICE-UVS 593523, JUICE-UVS 592488 | 100% |  |  |
| JUICE-UVS 593478 |  | Mechanical Analysis Report SE - 32a | 0d | 2017-09-05 A | 2017-09-05 A | JUICE-UVS 593538, JUICE-UVS 0023 | 100% |  |  |
| JUICE-UVS 593481 |  | Thermal Analysis Report SE - 32a | 0d | 2017-09-05 A | 2017-09-05 A | JUICE-UVS 593532, JUICE-UVS 592461 | 100% |  |  |
| JUICE-UVS 593439 |  | Instrument Design Report SE - 08 | 0d | 2017-09-06 A | 2017-09-06 A | JUICE-UVS 593442, JUICE-UVS 593613 | 100% |  |  |

| ID | WBS | Task | Duration | Start | Finish | Predecessors | Complete | Total float |
| --- | --- | --- | --- | --- | --- | --- | --- | --- |
| JUICE-UVS 593442 |  | Technical Budget Report SE - 09 | 0d | 2017-09-08 A | 2017-09-08 A | JUICE-UVS 593454, JUICE-UVS 593616 | 100% |  |
| JUICE-UVS 593454 |  | Trade-Off Report SE - 17 | 0d | 2017-09-08 A | 2017-09-08 A | JUICE-UVS 593469, JUICE-UVS 593619 | 100% |  |
| JUICE-UVS 593469 |  | Instrument Configuration Item Data List (CIDL) SE - 23 | 0d | 2017-09-08 A | 2017-09-08 A | JUICE-UVS 593475, JUICE-UVS 593625 | 100% |  |
| JUICE-UVS 593475 |  | Fracture Control Plan & Summary Report SE - 31 | 0d | 2017-09-08 A | 2017-09-08 A | JUICE-UVS 593544, JUICE-UVS 593628 | 100% |  |
| JUICE-UVS 593544 |  | Radiation Effect Modeling Report PA - 06.01 | 0d | 2017-10-02 A | 2017-10-02 A | JUICE-UVS 593430, JUICE-UVS 593262 | 100% |  |
| JUICE-UVS 593472 |  | Instrument User Manual SE - 26 | 0d | 2019-06-20 | 2019-06-20 | JUICE-UVS11520 |  | 49d |
|  | 03 | **Safety & Performance Assurance** |  | 2016-10-03 | 2019-07-01 |  |  |  |
|  | 01 | **PA Support** |  | 2016-10-03 | 2019-07-01 |  |  |  |
|  | 01 | **PA Sustaining Support** |  | 2016-10-03 | 2019-07-01 |  |  |  |
| JUICE-UVS 592323 |  | PA FY 17 Phase C | 250d | 2016-10-03 A | 2017-09-29 A | JUICE-UVS 0011 | 100% |  |
| JUICE-UVS 592329 |  | PA FY 18 | 250d | 2017-10-02 A | 2018-09-28 A | JUICE-UVS 592323 | 100% |  |
| JUICE-UVS 592332 |  | PA FY 19 | 105d | 2018-10-01 A | 2019-07-01 | JUICE-UVS 592329 | 76% | 63d |
|  | 02 | **PA Discrete Support** |  | 2017-08-07 | 2017-08-30 |  |  |  |
| JUICE-UVS 593637 |  | Instrument Product Assurance & Safety Plan PA - 01.04 | 18d | 2017-08-07 A | 2017-08-30 A | JUICE-UVS 0023 | 100% |  |
| JUICE-UVS 593643 |  | Non-Conformance Report (NCR) PA - 01.05 | 10d | 2017-08-17 A | 2017-08-30 A | JUICE-UVS 0023 | 100% |  |
| JUICE-UVS 593646 |  | NCRs Status List PA - 01.06 | 10d | 2017-08-17 A | 2017-08-30 A | JUICE-UVS 0023 | 100% |  |
|  | 02 | **Safety** |  | 2016-10-31 | 2019-07-01 |  |  |  |
|  | 01 | **Safety Engineering** |  | 2016-10-31 | 2019-07-01 |  |  |  |
| JUICE-UVS 591630 |  | Safety Engineering FY 17 Phase C | 230d | 2016-10-31 A | 2017-09-29 A | JUICE-UVS 0011 | 100% |  |
| JUICE-UVS 591633 |  | Safety Engineering FY 18 | 250d | 2017-10-02 A | 2018-09-28 A | JUICE-UVS 591630 | 100% |  |
| JUICE-UVS 591636 |  | Safety Engineering FY 19 | 105d | 2018-10-01 A | 2019-07-01 | JUICE-UVS 591633 | 76% | 63d |
|  | 02 | **Hazard Analysis** |  | 2017-02-06 | 2017-08-30 |  |  |  |
| JUICE-UVS 593649 |  | Hazard Analysis PA - 04.01 Update per RIDS | 25d | 2017-02-06 A | 2017-03-10 A | JUICE-UVS 0023 | 100% |  |
| JUICE-UVS 593706 |  | Hazard Analysis PA - 04.01 for CDR | 20d | 2017-08-07 A | 2017-08-30 A | JUICE-UVS 0023 | 100% |  |
|  | 03 | **Parts Engineering** |  | 2016-10-03 | 2019-07-01 |  |  |  |
|  | 01 | **Sustained Parts Eng.** |  | 2016-10-03 | 2019-07-01 |  |  |  |
| JUICE-UVS 591600 |  | Parts Engineering FY 17 Phase C | 250d | 2016-10-03 A | 2017-09-29 A | JUICE-UVS 0011 | 100% |  |
| JUICE-UVS 591603 |  | Parts Engineering FY 18 | 250d | 2017-10-02 A | 2018-09-28 A | JUICE-UVS 591600 | 100% |  |
| JUICE-UVS 591606 |  | Parts Engineering FY 19 | 105d | 2018-10-01 A | 2019-07-01 | JUICE-UVS 591603 | 76% | 63d |
|  | 02 | **Discrete Parts Eng.** |  | 2017-08-17 | 2017-08-30 |  |  |  |
| JUICE-UVS 593640 |  | Alerts & Warnings Status List PA - 01.04 | 10d | 2017-08-17 A | 2017-08-30 A | JUICE-UVS 0023 | 100% |  |
|  | 04 | **Materials & Process** |  | 2016-10-03 | 2019-07-01 |  |  |  |
| JUICE-UVS 592287 |  | Materials & Process Support FY 17 Phase C | 250d | 2016-10-03 A | 2017-09-29 A | JUICE-UVS 0011 | 100% |  |
| JUICE-UVS 592293 |  | Materials & Process Support FY 18 | 250d | 2017-10-02 A | 2018-09-28 A | JUICE-UVS 592287 | 100% |  |
| JUICE-UVS 592296 |  | Materials & Process Support FY 19 | 105d | 2018-10-01 A | 2019-07-01 | JUICE-UVS 592293 | 76% | 63d |
|  | 05 | **Hardware QA Support** |  | 2016-10-03 | 2019-07-01 |  |  |  |
| JUICE-UVS 2219 |  | QA FY 17 Phase C | 250d | 2016-10-03 A | 2017-09-29 A | JUICE-UVS 0011 | 100% |  |
| JUICE-UVS 2222 |  | QA FY 18 | 250d | 2017-10-02 A | 2018-09-28 A | JUICE-UVS 2219 | 100% |  |
| JUICE-UVS 2225 |  | QA FY 19 | 105d | 2018-10-01 A | 2019-07-01 | JUICE-UVS 2222 | 76% | 63d |
|  | 06 | **Software QA Support** |  | 2016-10-03 | 2019-07-01 |  |  |  |
|  | 01 | **Sustained SQA** |  | 2016-10-03 | 2019-07-01 |  |  |  |
| JUICE-UVS 592338 |  | QA FY 17 Phase C | 250d | 2016-10-03 A | 2017-09-28 A | JUICE-UVS 0011 | 100% |  |
| JUICE-UVS 592341 |  | QA FY 18 | 250d | 2017-10-02 A | 2018-09-28 A | JUICE-UVS 592338 | 100% |  |
| JUICE-UVS 592344 |  | QA FY 19 | 105d | 2018-10-01 A | 2019-07-01 | JUICE-UVS 592341 | 76% | 63d |
|  | 02 | **Discrete SCA** |  | 2017-08-17 | 2017-08-30 |  |  |  |
| JUICE-UVS 593652 |  | Software Product Assurance Milestone Report PA - 09.02 | 10d | 2017-08-17 A | 2017-08-30 A | JUICE-UVS 0023 | 100% |  |
| JUICE-UVS 593961 |  | Software Product Assurance Plan PA - 09.01 | 10d | 2017-08-17 A | 2017-08-30 A | JUICE-UVS 0023 | 100% |  |
|  | 08 | **SMA SDRLs** |  | 2017-03-10 | 2017-08-30 |  |  |  |
| JUICE-UVS 593964 |  | Hazard Analysis PA - 04.01 Update per RIDS | 0d | 2017-03-10 A | 2017-03-10 A | JUICE-UVS 593649 | 100% |  |
| JUICE-UVS 593556 |  | Derating Analysis PA - 07.04 | 0d | 2017-08-07 A | 2017-08-07 A | JUICE-UVS 592362, JUICE-UVS 592356, JUICE-UVS 592354, JUICE-UVS 592366, JUICE-UVS 592351 | 100% |  |
| JUICE-UVS 593559 |  | Declared Components List PA - 07.05 | 0d | 2017-08-07 A | 2017-08-07 A | JUICE-UVS 592740, JUICE-UVS 3277, JUICE-UVS 3217 | 100% |  |
| JUICE-UVS 593967 |  | Declared Materials List PA - 07.01 | 10d | 2017-08-17 A | 2017-08-30 A | JUICE-UVS 2581, JUICE-UVS 3217, JUICE-UVS 3277, JUICE-UVS 592740 | 100% |  |
| JUICE-UVS 593970 |  | Declared Mechanical Parts List PA - 07.02 | 10d | 2017-08-17 A | 2017-08-30 A | JUICE-UVS 2581 | 100% |  |
| JUICE-UVS 593973 |  | Declared Processes List PA - 07.03 | 10d | 2017-08-17 A | 2017-08-30 A | JUICE-UVS 2581 | 100% |  |
| JUICE-UVS 593496 |  | Instrument Product Assurance & Safety Plan PA - 01.04 | 0d | 2017-08-30 A | 2017-08-30 A | JUICE-UVS 593637 FF | 100% |  |
| JUICE-UVS 593502 |  | Alerts & Warnings Status List PA - 01.04 | 0d | 2017-08-30 A | 2017-08-30 A | JUICE-UVS 593640 | 100% |  |
| JUICE-UVS 593505 |  | Non-Conformance Report (NCR) PA - 01.05 | 0d | 2017-08-30 A | 2017-08-30 A | JUICE-UVS 593643 FF | 100% |  |
| JUICE-UVS 593508 |  | NCRs Status List PA - 01.06 | 0d | 2017-08-30 A | 2017-08-30 A | JUICE-UVS 593646 FF | 100% |  |
| JUICE-UVS 593541 |  | Hazard Analysis PA - 04.01 for CDR | 0d | 2017-08-30 A | 2017-08-30 A | JUICE-UVS 593706 | 100% |  |
| JUICE-UVS 593568 |  | Software Product Assurance Plan PA - 09.01 | 0d | 2017-08-30 A | 2017-08-30 A | JUICE-UVS 593376, JUICE-UVS 593961 | 100% |  |
| JUICE-UVS 593571 |  | Software Product Assurance Milestone Report PA - 09.02 | 0d | 2017-08-30 A | 2017-08-30 A | JUICE-UVS 593652 | 100% |  |
| JUICE-UVS 593976 |  | Declared Materials List PA - 07.01 | 0d | 2017-08-30 A | 2017-08-30 A | JUICE-UVS 593967 | 100% |  |
| JUICE-UVS 593979 |  | Declared Mechanical Parts List PA - 07.02 | 0d | 2017-08-30 A | 2017-08-30 A | JUICE-UVS 593970 | 100% |  |
| JUICE-UVS 593982 |  | Declared Processes List PA - 07.03 | 0d | 2017-08-30 A | 2017-08-30 A | JUICE-UVS 593973 | 100% |  |
|  | 04 | **Science** |  | 2016-10-03 | 2022-09-21 |  |  |  |
|  | 01 | **Science Oversight & Support - PI** |  | 2016-10-03 | 2022-09-21 |  |  |  |
|  | 01 | **SwRI PI/DPI** |  | 2016-10-03 | 2022-09-21 |  |  |  |
|  | 01 | **SwRI PI/DPI Phase C/D** |  | 2016-10-03 | 2022-09-21 |  |  |  |
|  | 01 | **Science Oversight & Support - PI** |  | 2016-10-03 | 2022-09-21 |  |  |  |
| JUICE-UVS 11443 |  | PI/DPI Oversight - FY 17 Phase C Start | 250d | 2016-10-03 A | 2017-09-29 A | JUICE-UVS 0011 | 100% |  |

| ID | WBS | Task | Duration | Start | Finish | Predecessors | Complete | Total float | Constraint |
| --- | --- | --- | --- | --- | --- | --- | --- | --- | --- |
| JUICE-UVS 11446 |  | PI/DPI Oversight - FY 18 | 250d | 2017-10-02 A | 2018-09-28 A | JUICE-UVS 11443 | 100% |  |  |
| JUICE-UVS 11449 |  | PI/DPI Oversight - FY 19 | 251d | 2018-10-01 A | 2019-09-30 | JUICE-UVS 11446 | 65% | 0d |  |
| JUICE-UVS 11452 |  | PI/DPI Oversight - FY 20 | 252d | 2019-10-01 | 2020-09-30 | JUICE-UVS 11449 |  | 0d |  |
| JUICE-UVS 11506 |  | PI/DPI Oversight - FY 21 End of Phase C | 32d | 2020-10-01 | 2020-11-13 | JUICE-UVS 11452 |  | 0d |  |
| JUICE-UVS 11455 |  | PI/DPI Oversight - FY 21 Start of Phase D | 218d | 2020-11-16 | 2021-09-30 | JUICE-UVS 11506 |  | 0d |  |
| JUICE-UVS 11509 |  | PI/DPI Oversight - FY 22 End of Phase D | 243d | 2021-10-01 | 2022-09-21 | JUICE-UVS 11455 |  | 0d |  |
|  | 02 | **Science Oversight & Support - DPI** |  | 2016-10-03 | 2022-09-21 |  |  |  |  |
| JUICE-UVS 593676 |  | PI/DPI Oversight - FY 17 Phase C Start | 250d | 2016-10-03 A | 2017-09-29 A | JUICE-UVS 0011 | 100% |  |  |
| JUICE-UVS 593679 |  | PI/DPI Oversight - FY 18 | 250d | 2017-10-02 A | 2018-09-28 A | JUICE-UVS 593676 | 100% |  |  |
| JUICE-UVS 593683 |  | PI/DPI Oversight - FY 19 | 251d | 2018-10-01 A | 2019-09-30 | JUICE-UVS 593679 | 65% | 0d |  |
| JUICE-UVS 593685 |  | PI/DPI Oversight - FY 20 | 252d | 2019-10-01 | 2020-09-30 | JUICE-UVS 593683 |  | 0d |  |
| JUICE-UVS 593688 |  | PI/DPI Oversight - FY 21 End of Phase C | 32d | 2020-10-01 | 2020-11-13 | JUICE-UVS 593685 |  | 0d |  |
| JUICE-UVS 593691 |  | PI/DPI Oversight - FY 21 Start of Phase D | 218d | 2020-11-16 | 2021-09-30 | JUICE-UVS 593688 |  | 0d |  |
| JUICE-UVS 593694 |  | PI/DPI Oversight - FY 22 End of Phase D | 243d | 2021-10-01 | 2022-09-21 | JUICE-UVS 593691 |  | 0d |  |
|  | 03 | **Discrete Science - PI/DPI** |  | 2017-08-01 | 2017-08-14 |  |  |  |  |
| JUICE-UVS 593631 |  | Instrument Science Performance Report SE - 120 | 10d | 2017-08-01 A | 2017-08-14 A | JUICE-UVS 0023 | 100% |  |  |
| JUICE-UVS 593634 |  | Instrument Science Implementation Plan SE - 121 | 10d | 2017-08-01 A | 2017-08-14 A | JUICE-UVS 0023 | 100% |  |  |
|  | 02 | **SwRI CO-I** |  | 2016-10-03 | 2022-09-21 |  |  |  |  |
|  | 01 | **SwRI CO-I Phase C/D** |  | 2016-10-03 | 2022-09-21 |  |  |  |  |
| JUICE-UVS 11311 |  | PS Support - FY 17 Phase C Start | 250d | 2016-10-03 A | 2017-09-29 A | JUICE-UVS 0011 | 100% |  |  |
| JUICE-UVS 8170 |  | Co-I Support - FY17 Phase C Start | 250d | 2016-10-03 A | 2017-09-29 A | JUICE-UVS 0011 | 100% |  |  |
| JUICE-UVS 10849 |  | PS Support - FY 18 | 250d | 2017-10-02 A | 2018-09-28 A | JUICE-UVS 11311 | 100% |  |  |
| JUICE-UVS 1400 |  | CO-I Support - FY 18 | 250d | 2017-10-02 A | 2018-09-28 A | JUICE-UVS 8170 | 100% |  |  |
| JUICE-UVS 10852 |  | PS Support - FY 19 | 251d | 2018-10-01 A | 2019-09-30 | JUICE-UVS 10849 | 65% | 0d |  |
| JUICE-UVS 8173 |  | Co-I Support - FY 19 | 251d | 2018-10-01 A | 2019-09-30 | JUICE-UVS 1400 | 65% | 0d |  |
| JUICE-UVS 10855 |  | PS Support - FY 20 | 252d | 2019-10-01 | 2020-09-30 | JUICE-UVS 10852 |  | 0d |  |
| JUICE-UVS 8176 |  | Co-I Support - FY 20 | 252d | 2019-10-01 | 2020-09-30 | JUICE-UVS 8173 |  | 0d |  |
| JUICE-UVS 8182 |  | PS Support - FY 21 End of Phase C | 32d | 2020-10-01 | 2020-11-13 | JUICE-UVS 10855 |  | 0d |  |
| JUICE-UVS 8185 |  | Co-I Support - FY 21 End of Phase C | 32d | 2020-10-01 | 2020-11-13 | JUICE-UVS 8176 |  | 0d |  |
| JUICE-UVS 10858 |  | PS Support - FY 21 Start of Phase D | 218d | 2020-11-16 | 2021-09-30 | JUICE-UVS 8182 |  | 0d |  |
| JUICE-UVS 8179 |  | Co-I Support - FY 21 Start of Phase D | 218d | 2020-11-16 | 2021-09-30 | JUICE-UVS 8185 |  | 0d |  |
| JUICE-UVS 10909 |  | PS Support - FY 22 End of Phase D | 243d | 2021-10-01 | 2022-09-21 | JUICE-UVS 10858 |  | 0d |  |
| JUICE-UVS 8188 |  | Co-I Support - FY 22 End of Phase D | 243d | 2021-10-01 | 2022-09-21 | JUICE-UVS 8179 |  | 0d |  |
|  | 02 | **Non-Hardware Science CO-Is** |  | 2016-10-03 | 2022-09-21 |  |  |  |  |
|  | 01 | **University of Colorado** |  | 2016-10-03 | 2022-09-21 |  |  |  |  |
|  | 01 | **University of Colorado Phase C/D** |  | 2016-10-03 | 2022-09-21 |  |  |  |  |
| JUICE-UVS 11317 |  | University of Colorado Support - FY 17 Phase C Start | 250d | 2016-10-03 A | 2017-09-29 A | JUICE-UVS 0011 | 100% |  |  |
| JUICE-UVS594231 |  | University of Colorado Support - Oct FY 18 | 1d | 2017-10-26 A | 2017-10-26 A | JUICE-UVS 11317 | 100% |  |  |
| JUICE-UVS594234 |  | University of Colorado Support - Nov FY 18 | 1d | 2017-11-22 A | 2017-11-22 A | JUICE-UVS594231 | 100% |  |  |
| JUICE-UVS594237 |  | University of Colorado Support - Dec FY 18 | 1d | 2017-12-21 A | 2017-12-21 A | JUICE-UVS594234 | 100% |  |  |
| JUICE-UVS594240 |  | University of Colorado Support - Jan FY 18 | 1d | 2018-02-01 A | 2018-02-01 A | JUICE-UVS594237 | 100% |  |  |
| JUICE-UVS594243 |  | University of Colorado Support - Feb FY 18 | 1d | 2018-03-01 A | 2018-03-01 A | JUICE-UVS594240 | 100% |  |  |
| JUICE-UVS594246 |  | University of Colorado Support - Mar FY 18 | 1d | 2018-03-29 A | 2018-03-29 A | JUICE-UVS594243 | 100% |  |  |
| JUICE-UVS594249 |  | University of Colorado Support - Apr FY 18 | 1d | 2018-04-26 A | 2018-04-26 A | JUICE-UVS594246 | 100% |  |  |
| JUICE-UVS594252 |  | University of Colorado Support - May FY 18 | 1d | 2018-05-24 A | 2018-06-21 A | JUICE-UVS594249 | 100% |  |  |
| JUICE-UVS594255 |  | University of Colorado Support - Jun FY 18 | 1d | 2018-06-21 A | 2018-06-21 A | JUICE-UVS594252 | 100% |  |  |
| JUICE-UVS594258 |  | University of Colorado Support - Jul FY 18 | 1d | 2018-08-02 A | 2018-08-02 A | JUICE-UVS594255 | 100% |  |  |
| JUICE-UVS594261 |  | University of Colorado Support - Aug FY 18 | 1d | 2018-08-30 A | 2018-08-30 A | JUICE-UVS594258 | 100% |  |  |
| JUICE-UVS594264 |  | University of Colorado Support - Sep FY 18 | 1d | 2018-09-27 A | 2018-09-27 A | JUICE-UVS594261 | 100% |  |  |
| JUICE-UVS594267 |  | University of Colorado Support - Oct FY 19 | 1d | 2018-10-25 A | 2018-10-25 A | JUICE-UVS594264 | 100% |  |  |
| JUICE-UVS594270 |  | University of Colorado Support - Nov FY 19 | 1d | 2018-11-21 A | 2018-11-21 A | JUICE-UVS594267 | 100% |  |  |
| JUICE-UVS594273 |  | University of Colorado Support - Dec FY 19 | 1d | 2019-01-02 A | 2019-01-02 A | JUICE-UVS594270 | 100% |  |  |
| JUICE-UVS594276 |  | University of Colorado Support - Jan FY 19 | 1d | 2019-01-31 A | 2019-01-31 A | JUICE-UVS594273 | 100% |  |  |
| JUICE-UVS594279 |  | University of Colorado Support - Feb FY 19 | 1d | 2019-02-28 A | 2019-02-28 A | JUICE-UVS594276 | 100% |  | start on or after 2019-02-28 |
| JUICE-UVS594282 |  | University of Colorado Support - Mar FY 19 | 1d | 2019-03-28 A | 2019-03-28 A | JUICE-UVS594279 | 100% |  | start on or after 2019-03-28 |
| JUICE-UVS594285 |  | University of Colorado Support - Apr FY 19 | 1d | 2019-04-25 A | 2019-04-25 A | JUICE-UVS594282 | 100% |  | start on or after 2019-04-25 |
| JUICE-UVS594288 |  | University of Colorado Support - May FY 19 | 1d | 2019-05-23 A | 2019-05-23 A | JUICE-UVS594285 | 100% |  | start on or after 2019-05-23 |
| JUICE-UVS594291 |  | University of Colorado Support - Jun FY 19 | 1d | 2019-07-03 | 2019-07-03 | JUICE-UVS594288 |  | 766d | start on or after 2019-07-03 |
| JUICE-UVS594294 |  | University of Colorado Support - Jul FY 19 | 1d | 2019-08-01 | 2019-08-01 | JUICE-UVS594291 |  | 747d | start on or after 2019-08-01 |
| JUICE-UVS594297 |  | University of Colorado Support - Aug FY 19 | 1d | 2019-08-29 | 2019-08-29 | JUICE-UVS594294 |  | 728d | start on or after 2019-08-29 |
| JUICE-UVS594300 |  | University of Colorado Support - Sep FY 19 | 1d | 2019-09-26 | 2019-09-26 | JUICE-UVS594297 |  | 711d | start on or after 2019-09-26 |
| JUICE-UVS594303 |  | University of Colorado Support - Oct FY 20 | 1d | 2019-10-24 | 2019-10-24 | JUICE-UVS594300 |  | 692d | start on or after 2019-10-24 |
| JUICE-UVS594306 |  | University of Colorado Support - Nov FY 20 | 1d | 2019-11-20 | 2019-11-20 | JUICE-UVS594303 |  | 674d | start on or after 2019-11-20 |
| JUICE-UVS594309 |  | University of Colorado Support - Dec FY 20 | 1d | 2020-01-02 | 2020-01-02 | JUICE-UVS594306 |  | 649d | start on or after 2020-01-02 |
| JUICE-UVS594312 |  | University of Colorado Support - Jan FY 20 | 1d | 2020-01-30 | 2020-01-30 | JUICE-UVS594309 |  | 630d | start on or after 2020-01-30 |
| JUICE-UVS594315 |  | University of Colorado Support - Feb FY 20 | 1d | 2020-02-27 | 2020-02-27 | JUICE-UVS594312 |  | 611d | start on or after 2020-02-27 |
| JUICE-UVS594318 |  | University of Colorado Support - Mar FY 20 | 1d | 2020-03-26 | 2020-03-26 | JUICE-UVS594315 |  | 592d | start on or after 2020-03-26 |
| JUICE-UVS594321 |  | University of Colorado Support - Apr FY 20 | 1d | 2020-04-23 | 2020-04-23 | JUICE-UVS594318 |  | 573d | start on or after 2020-04-23 |
| JUICE-UVS594324 |  | University of Colorado Support - May FY 20 | 1d | 2020-05-21 | 2020-05-21 | JUICE-UVS594321 |  | 554d | start on or after 2020-05-21 |
| JUICE-UVS594327 |  | University of Colorado Support - Jun FY 20 | 1d | 2020-07-02 | 2020-07-02 | JUICE-UVS594324 |  | 527d | start on or after 2020-07-02 |

| ID | WBS | Task | Duration | Start | Finish | Predecessors | Complete | Total float | Constraint |
| --- | --- | --- | --- | --- | --- | --- | --- | --- | --- |
| JUICE-UVS594330 |  | University of Colorado Support - Jul FY 20 | 1d | 2020-07-30 | 2020-07-30 | JUICE-UVS594327 |  | 509d | start on or after 2020-07-30 |
| JUICE-UVS594333 |  | University of Colorado Support - Aug FY 20 | 1d | 2020-08-27 | 2020-08-27 | JUICE-UVS594330 |  | 490d | start on or after 2020-08-27 |
| JUICE-UVS594336 |  | University of Colorado Support - Sep FY 20 | 1d | 2020-09-24 | 2020-09-24 | JUICE-UVS594333 |  | 473d | start on or after 2020-09-24 |
| JUICE-UVS594339 |  | University of Colorado Support - Oct FY 21 | 1d | 2020-10-22 | 2020-10-22 | JUICE-UVS594336 |  | 454d | start on or after 2020-10-22 |
| JUICE-UVS594342 |  | University of Colorado Support - Nov FY 21 | 1d | 2020-12-03 | 2020-12-03 | JUICE-UVS594339 |  | 427d | start on or after 2020-12-03 |
| JUICE-UVS594345 |  | University of Colorado Support - Dec FY 21 | 1d | 2020-12-31 | 2020-12-31 | JUICE-UVS594342 |  | 410d | start on or after 2020-12-31 |
| JUICE-UVS594348 |  | University of Colorado Support - Jan FY 21 | 1d | 2021-01-28 | 2021-01-28 | JUICE-UVS594345 |  | 392d | start on or after 2021-01-28 |
| JUICE-UVS594351 |  | University of Colorado Support - Feb FY 21 | 1d | 2021-02-25 | 2021-02-25 | JUICE-UVS594348 |  | 373d | start on or after 2021-02-25 |
| JUICE-UVS594354 |  | University of Colorado Support - Mar FY 21 | 1d | 2021-03-25 | 2021-03-25 | JUICE-UVS594351 |  | 354d | start on or after 2021-03-25 |
| JUICE-UVS594357 |  | University of Colorado Support - Apr FY 21 | 1d | 2021-04-22 | 2021-04-22 | JUICE-UVS594354 |  | 335d | start on or after 2021-04-22 |
| JUICE-UVS594360 |  | University of Colorado Support - May FY 21 | 1d | 2021-06-03 | 2021-06-03 | JUICE-UVS594357 |  | 308d | start on or after 2021-06-03 |
| JUICE-UVS594363 |  | University of Colorado Support - Jun FY 21 | 1d | 2021-07-01 | 2021-07-01 | JUICE-UVS594360 |  | 289d | start on or after 2021-07-01 |
| JUICE-UVS594366 |  | University of Colorado Support - Jul FY 21 | 1d | 2021-07-29 | 2021-07-29 | JUICE-UVS594363 |  | 272d | start on or after 2021-07-29 |
| JUICE-UVS594369 |  | University of Colorado Support - Aug FY 21 | 1d | 2021-08-26 | 2021-08-26 | JUICE-UVS594366 |  | 253d | start on or after 2021-08-26 |
| JUICE-UVS594372 |  | University of Colorado Support - Sep FY 21 | 1d | 2021-09-23 | 2021-09-23 | JUICE-UVS594369 |  | 236d | start on or after 2021-09-23 |
| JUICE-UVS594375 |  | University of Colorado Support - Oct FY 22 | 1d | 2021-10-21 | 2021-10-21 | JUICE-UVS594372 |  | 217d | start on or after 2021-10-21 |
| JUICE-UVS594378 |  | University of Colorado Support - Nov FY 22 | 1d | 2021-12-02 | 2021-12-02 | JUICE-UVS594375 |  | 190d | start on or after 2021-12-02 |
| JUICE-UVS594381 |  | University of Colorado Support - Dec FY 22 | 1d | 2021-12-30 | 2021-12-30 | JUICE-UVS594378 |  | 173d | start on or after 2021-12-30 |
| JUICE-UVS594384 |  | University of Colorado Support - Jan FY 22 | 1d | 2022-02-03 | 2022-02-03 | JUICE-UVS594381 |  | 150d | start on or after 2022-02-03 |
| JUICE-UVS594387 |  | University of Colorado Support - Feb FY 22 | 1d | 2022-03-03 | 2022-03-03 | JUICE-UVS594384 |  | 131d | start on or after 2022-03-03 |
| JUICE-UVS594390 |  | University of Colorado Support - Mar FY 22 | 1d | 2022-03-31 | 2022-03-31 | JUICE-UVS594387 |  | 112d | start on or after 2022-03-31 |
| JUICE-UVS594393 |  | University of Colorado Support - Apr FY 22 | 1d | 2022-04-28 | 2022-04-28 | JUICE-UVS594390 |  | 93d | start on or after 2022-04-28 |
| JUICE-UVS594396 |  | University of Colorado Support - May FY 22 | 1d | 2022-05-26 | 2022-05-26 | JUICE-UVS594393 |  | 74d | start on or after 2022-05-26 |
| JUICE-UVS594399 |  | University of Colorado Support - Jun FY 22 | 1d | 2022-06-23 | 2022-06-23 | JUICE-UVS594396 |  | 57d | start on or after 2022-06-23 |
| JUICE-UVS594402 |  | University of Colorado Support - Jul FY 22 | 1d | 2022-07-21 | 2022-07-21 | JUICE-UVS594399 |  | 40d | start on or after 2022-07-21 |
| JUICE-UVS594405 |  | University of Colorado Support - Aug FY 22 | 1d | 2022-09-01 | 2022-09-01 | JUICE-UVS594402 |  | 11d | start on or after 2022-09-01 |
| JUICE-UVS594408 |  | University of Colorado Support - Sep FY 22 | 1d | 2022-09-21 | 2022-09-21 | JUICE-UVS594405 |  | 0d | start on or after 2022-09-21 |
|  | 02 | **Johns Hopkins University Phase C/D** |  | 2016-10-03 | 2022-09-21 |  |  |  |  |
| JUICE-UVS 592387 |  | Johns Hopkins Support - FY 17 Phase C Start | 250d | 2016-10-03 A | 2017-09-29 A | JUICE-UVS 0011 | 100% |  |  |
| JUICE-UVS594411 |  | Johns Hopkins Support - Oct FY 18 | 1d | 2017-10-26 A | 2017-10-26 A | JUICE-UVS 592387 | 100% |  |  |
| JUICE-UVS594414 |  | Johns Hopkins Support - Nov FY 18 | 1d | 2017-11-22 A | 2017-11-22 A | JUICE-UVS594411 | 100% |  |  |
| JUICE-UVS594417 |  | Johns Hopkins Support - Dec FY 18 | 1d | 2017-12-21 A | 2017-12-21 A | JUICE-UVS594414 | 100% |  |  |
| JUICE-UVS594420 |  | Johns Hopkins Support - Jan FY 18 | 1d | 2018-02-01 A | 2018-02-01 A | JUICE-UVS594417 | 100% |  |  |
| JUICE-UVS594423 |  | Johns Hopkins Support - Feb FY 18 | 1d | 2018-03-01 A | 2018-03-01 A | JUICE-UVS594420 | 100% |  |  |
| JUICE-UVS594426 |  | Johns Hopkins Support - Mar FY 18 | 1d | 2018-03-29 A | 2018-03-29 A | JUICE-UVS594423 | 100% |  |  |
| JUICE-UVS594429 |  | Johns Hopkins Support - Apr FY 18 | 1d | 2018-04-26 A | 2018-04-26 A | JUICE-UVS594426 | 100% |  |  |
| JUICE-UVS594432 |  | Johns Hopkins Support - May FY 18 | 1d | 2018-05-24 A | 2018-05-24 A | JUICE-UVS594429 | 100% |  |  |
| JUICE-UVS594435 |  | Johns Hopkins Support - Jun FY 18 | 1d | 2018-06-21 A | 2018-06-21 A | JUICE-UVS594432 | 100% |  |  |
| JUICE-UVS594438 |  | Johns Hopkins Support - Jul FY 18 | 1d | 2018-08-02 A | 2018-08-02 A | JUICE-UVS594435 | 100% |  |  |
| JUICE-UVS594441 |  | Johns Hopkins Support - Aug FY 18 | 1d | 2018-08-30 A | 2018-08-30 A | JUICE-UVS594438 | 100% |  |  |
| JUICE-UVS594444 |  | Johns Hopkins Support - Sep FY 18 | 1d | 2018-09-26 A | 2018-09-26 A | JUICE-UVS594441 | 100% |  |  |
| JUICE-UVS594447 |  | Johns Hopkins Support - Oct FY 19 | 1d | 2018-10-25 A | 2018-10-25 A | JUICE-UVS594444 | 100% |  |  |
| JUICE-UVS594450 |  | Johns Hopkins Support - Nov FY 19 | 1d | 2018-11-21 A | 2018-11-21 A | JUICE-UVS594447 | 100% |  |  |
| JUICE-UVS594453 |  | Johns Hopkins Support - Dec FY 19 | 1d | 2019-01-02 A | 2019-01-02 A | JUICE-UVS594450 | 100% |  |  |
| JUICE-UVS594456 |  | Johns Hopkins Support - Jan FY 19 | 1d | 2019-01-31 A | 2019-01-31 A | JUICE-UVS594453 | 100% |  |  |
| JUICE-UVS594459 |  | Johns Hopkins Support - Feb FY 19 | 1d | 2019-02-28 A | 2019-02-28 A | JUICE-UVS594456 | 100% |  | start on or after 2019-02-28 |
| JUICE-UVS594462 |  | Johns Hopkins Support - Mar FY 19 | 1d | 2019-03-28 A | 2019-03-28 A | JUICE-UVS594459 | 100% |  | start on or after 2019-03-28 |
| JUICE-UVS594465 |  | Johns Hopkins Support - Apr FY 19 | 1d | 2019-04-25 A | 2019-04-25 A | JUICE-UVS594462 | 100% |  | start on or after 2019-04-25 |
| JUICE-UVS594468 |  | Johns Hopkins Support - May FY 19 | 1d | 2019-05-23 A | 2019-05-23 A | JUICE-UVS594465 | 100% |  | start on or after 2019-05-23 |
| JUICE-UVS594471 |  | Johns Hopkins Support - Jun FY 19 | 1d | 2019-07-03 | 2019-07-03 | JUICE-UVS594468 |  | 766d | start on or after 2019-07-03 |
| JUICE-UVS594474 |  | Johns Hopkins Support - Jul FY 19 | 1d | 2019-08-01 | 2019-08-01 | JUICE-UVS594471 |  | 747d | start on or after 2019-08-01 |
| JUICE-UVS594477 |  | Johns Hopkins Support - Aug FY 19 | 1d | 2019-08-29 | 2019-08-29 | JUICE-UVS594474 |  | 728d | start on or after 2019-08-29 |
| JUICE-UVS594480 |  | Johns Hopkins Support - Sep FY 19 | 1d | 2019-09-26 | 2019-09-26 | JUICE-UVS594477 |  | 711d | start on or after 2019-09-26 |
| JUICE-UVS594483 |  | Johns Hopkins Support - Oct FY 20 | 1d | 2019-10-24 | 2019-10-24 | JUICE-UVS594480 |  | 692d | start on or after 2019-10-24 |
| JUICE-UVS594486 |  | Johns Hopkins Support - Nov FY 20 | 1d | 2019-11-20 | 2019-11-20 | JUICE-UVS594483 |  | 674d | start on or after 2019-11-20 |
| JUICE-UVS594489 |  | Johns Hopkins Support - Dec FY 20 | 1d | 2020-01-02 | 2020-01-02 | JUICE-UVS594486 |  | 649d | start on or after 2020-01-02 |
| JUICE-UVS594492 |  | Johns Hopkins Support - Jan FY 20 | 1d | 2020-01-30 | 2020-01-30 | JUICE-UVS594489 |  | 630d | start on or after 2020-01-30 |
| JUICE-UVS594495 |  | Johns Hopkins Support - Feb FY 20 | 1d | 2020-02-27 | 2020-02-27 | JUICE-UVS594492 |  | 611d | start on or after 2020-02-27 |
| JUICE-UVS594498 |  | Johns Hopkins Support - Mar FY 20 | 1d | 2020-03-26 | 2020-03-26 | JUICE-UVS594495 |  | 592d | start on or after 2020-03-26 |
| JUICE-UVS594501 |  | Johns Hopkins Support - Apr FY 20 | 1d | 2020-04-23 | 2020-04-23 | JUICE-UVS594498 |  | 573d | start on or after 2020-04-23 |
| JUICE-UVS594504 |  | Johns Hopkins Support - May FY 20 | 1d | 2020-05-21 | 2020-05-21 | JUICE-UVS594501 |  | 554d | start on or after 2020-05-21 |
| JUICE-UVS594507 |  | Johns Hopkins Support - Jun FY 20 | 1d | 2020-07-02 | 2020-07-02 | JUICE-UVS594504 |  | 527d | start on or after 2020-07-02 |
| JUICE-UVS594510 |  | Johns Hopkins Support - Jul FY 20 | 1d | 2020-07-30 | 2020-07-30 | JUICE-UVS594507 |  | 509d | start on or after 2020-07-30 |
| JUICE-UVS594513 |  | Johns Hopkins Support - Aug FY 20 | 1d | 2020-08-27 | 2020-08-27 | JUICE-UVS594510 |  | 490d | start on or after 2020-08-27 |
| JUICE-UVS594516 |  | Johns Hopkins Support - Sep FY 20 | 1d | 2020-09-24 | 2020-09-24 | JUICE-UVS594513 |  | 473d | start on or after 2020-09-24 |
| JUICE-UVS594519 |  | Johns Hopkins Support - Oct FY 21 | 1d | 2020-10-22 | 2020-10-22 | JUICE-UVS594516 |  | 454d | start on or after 2020-10-22 |
| JUICE-UVS594522 |  | Johns Hopkins Support - Nov FY 21 | 1d | 2020-12-03 | 2020-12-03 | JUICE-UVS594519 |  | 427d | start on or after 2020-12-03 |
| JUICE-UVS594525 |  | Johns Hopkins Support - Dec FY 21 | 1d | 2020-12-31 | 2020-12-31 | JUICE-UVS594522 |  | 410d | start on or after 2020-12-31 |
| JUICE-UVS594528 |  | Johns Hopkins Support - Jan FY 21 | 1d | 2021-01-28 | 2021-01-28 | JUICE-UVS594525 |  | 392d | start on or after 2021-01-28 |
| JUICE-UVS594531 |  | Johns Hopkins Support - Feb FY 21 | 1d | 2021-02-25 | 2021-02-25 | JUICE-UVS594528 |  | 373d | start on or after 2021-02-25 |

| ID | WBS | Task | Duration | Start | Finish | Predecessors | Complete | Total float | Constraint |
| --- | --- | --- | --- | --- | --- | --- | --- | --- | --- |
| JUICE-UVS594534 |  | Johns Hopkins Support - Mar FY 21 | 1d | 2021-03-25 | 2021-03-25 | JUICE-UVS594531 |  | 354d | start on or after 2021-03-25 |
| JUICE-UVS594537 |  | Johns Hopkins Support - Apr FY 21 | 1d | 2021-04-22 | 2021-04-22 | JUICE-UVS594534 |  | 335d | start on or after 2021-04-22 |
| JUICE-UVS594540 |  | Johns Hopkins Support - May FY 21 | 1d | 2021-06-03 | 2021-06-03 | JUICE-UVS594537 |  | 308d | start on or after 2021-06-03 |
| JUICE-UVS594543 |  | Johns Hopkins Support - Jun FY 21 | 1d | 2021-07-01 | 2021-07-01 | JUICE-UVS594540 |  | 289d | start on or after 2021-07-01 |
| JUICE-UVS594546 |  | Johns Hopkins Support - Jul FY 21 | 1d | 2021-07-29 | 2021-07-29 | JUICE-UVS594543 |  | 272d | start on or after 2021-07-29 |
| JUICE-UVS594549 |  | Johns Hopkins Support - Aug FY 21 | 1d | 2021-08-26 | 2021-08-26 | JUICE-UVS594546 |  | 253d | start on or after 2021-08-26 |
| JUICE-UVS594552 |  | Johns Hopkins Support - Sep FY 21 | 1d | 2021-09-23 | 2021-09-23 | JUICE-UVS594549 |  | 236d | start on or after 2021-09-23 |
| JUICE-UVS594555 |  | Johns Hopkins Support - Oct FY 22 | 1d | 2021-10-21 | 2021-10-21 | JUICE-UVS594552 |  | 217d | start on or after 2021-10-21 |
| JUICE-UVS594558 |  | Johns Hopkins Support - Nov FY 22 | 1d | 2021-12-02 | 2021-12-02 | JUICE-UVS594555 |  | 190d | start on or after 2021-12-02 |
| JUICE-UVS594561 |  | Johns Hopkins Support - Dec FY 22 | 1d | 2021-12-30 | 2021-12-30 | JUICE-UVS594558 |  | 173d | start on or after 2021-12-30 |
| JUICE-UVS594564 |  | Johns Hopkins Support - Jan FY 22 | 1d | 2022-02-03 | 2022-02-03 | JUICE-UVS594561 |  | 150d | start on or after 2022-02-03 |
| JUICE-UVS594567 |  | Johns Hopkins Support - Feb FY 22 | 1d | 2022-03-03 | 2022-03-03 | JUICE-UVS594564 |  | 131d | start on or after 2022-03-03 |
| JUICE-UVS594570 |  | Johns Hopkins Support - Mar FY 22 | 1d | 2022-03-31 | 2022-03-31 | JUICE-UVS594567 |  | 112d | start on or after 2022-03-31 |
| JUICE-UVS594573 |  | Johns Hopkins Support - Apr FY 22 | 1d | 2022-04-28 | 2022-04-28 | JUICE-UVS594570 |  | 93d | start on or after 2022-04-28 |
| JUICE-UVS594576 |  | Johns Hopkins Support - May FY 22 | 1d | 2022-05-26 | 2022-05-26 | JUICE-UVS594573 |  | 74d | start on or after 2022-05-26 |
| JUICE-UVS594579 |  | Johns Hopkins Support - Jun FY 22 | 1d | 2022-06-23 | 2022-06-23 | JUICE-UVS594576 |  | 57d | start on or after 2022-06-23 |
| JUICE-UVS594582 |  | Johns Hopkins Support - Jul FY 22 | 1d | 2022-07-21 | 2022-07-21 | JUICE-UVS594579 |  | 40d | start on or after 2022-07-21 |
| JUICE-UVS594585 |  | Johns Hopkins Support - Aug FY 22 | 1d | 2022-09-01 | 2022-09-01 | JUICE-UVS594582 |  | 11d | start on or after 2022-09-01 |
| JUICE-UVS594588 |  | Johns Hopkins Support - Sep FY 22 | 1d | 2022-09-21 | 2022-09-21 | JUICE-UVS594585 |  | 0d | start on or after 2022-09-21 |
|  | 03 | **SETI** |  | 2016-10-03 | 2022-09-21 |  |  |  |  |
|  | 01 | **SETI Phase C/D** |  | 2016-10-03 | 2022-09-21 |  |  |  |  |
| JUICE-UVS 11586 |  | SETI Support FY 17 Phase C Start | 250d | 2016-10-03 A | 2017-09-29 A | JUICE-UVS 0011 | 100% |  |  |
| JUICE-UVS594591 |  | SETI Support - Oct FY 18 | 1d | 2017-10-26 A | 2017-10-26 A | JUICE-UVS 11586 | 100% |  |  |
| JUICE-UVS594594 |  | SETI Support - Nov FY 18 | 1d | 2017-11-22 A | 2017-11-22 A | JUICE-UVS594591 | 100% |  |  |
| JUICE-UVS594597 |  | SETI Support - Dec FY 18 | 1d | 2017-12-21 A | 2017-12-21 A | JUICE-UVS594594 | 100% |  |  |
| JUICE-UVS594600 |  | SETI Support - Jan FY 18 | 1d | 2018-02-01 A | 2018-02-01 A | JUICE-UVS594597 | 100% |  |  |
| JUICE-UVS594603 |  | SETI Support - Feb FY 18 | 1d | 2018-03-01 A | 2018-03-01 A | JUICE-UVS594600 | 100% |  |  |
| JUICE-UVS594606 |  | SETI Support - Mar FY 18 | 1d | 2018-03-29 A | 2018-03-29 A | JUICE-UVS594603 | 100% |  |  |
| JUICE-UVS594609 |  | SETI Support - Apr FY 18 | 1d | 2018-04-26 A | 2018-04-26 A | JUICE-UVS594606 | 100% |  |  |
| JUICE-UVS594612 |  | SETI Support - May FY 18 | 1d | 2018-05-24 A | 2018-05-24 A | JUICE-UVS594609 | 100% |  |  |
| JUICE-UVS594615 |  | SETI Support - Jun FY 18 | 1d | 2018-06-21 A | 2018-06-21 A | JUICE-UVS594612 | 100% |  |  |
| JUICE-UVS594618 |  | SETI Support - Jul FY 18 | 1d | 2018-08-02 A | 2018-08-02 A | JUICE-UVS594615 | 100% |  |  |
| JUICE-UVS594621 |  | SETI Support - Aug FY 18 | 1d | 2018-08-30 A | 2018-08-30 A | JUICE-UVS594618 | 100% |  |  |
| JUICE-UVS594624 |  | SETI Support - Sep FY 18 | 1d | 2018-09-27 A | 2018-09-27 A | JUICE-UVS594621 | 100% |  |  |
| JUICE-UVS594627 |  | SETI Support - Oct FY 19 | 1d | 2018-10-25 A | 2018-10-25 A | JUICE-UVS594624 | 100% |  |  |
| JUICE-UVS594630 |  | SETI Support - Nov FY 19 | 1d | 2018-11-21 A | 2018-11-21 A | JUICE-UVS594627 | 100% |  |  |
| JUICE-UVS594633 |  | SETI Support - Dec FY 19 | 1d | 2019-01-02 A | 2019-01-02 A | JUICE-UVS594630 | 100% |  |  |
| JUICE-UVS594636 |  | SETI Support - Jan FY 19 | 1d | 2019-01-31 A | 2019-01-31 A | JUICE-UVS594633 | 100% |  |  |
| JUICE-UVS594639 |  | SETI Support - Feb FY 19 | 1d | 2019-02-28 A | 2019-02-28 A | JUICE-UVS594636 | 100% |  | start on or after 2019-02-28 |
| JUICE-UVS594642 |  | SETI Support - Mar FY 19 | 1d | 2019-03-28 A | 2019-03-28 A | JUICE-UVS594639 | 100% |  | start on or after 2019-03-28 |
| JUICE-UVS594645 |  | SETI Support - Apr FY 19 | 1d | 2019-04-25 A | 2019-04-25 A | JUICE-UVS594642 | 100% |  | start on or after 2019-04-25 |
| JUICE-UVS594648 |  | SETI Support - May FY 19 | 1d | 2019-05-23 A | 2019-05-23 A | JUICE-UVS594645 | 100% |  | start on or after 2019-05-23 |
| JUICE-UVS594651 |  | SETI Support - Jun FY 19 | 1d | 2019-07-03 | 2019-07-03 | JUICE-UVS594648 |  | 766d | start on or after 2019-07-03 |
| JUICE-UVS594654 |  | SETI Support - Jul FY 19 | 1d | 2019-08-01 | 2019-08-01 | JUICE-UVS594651 |  | 747d | start on or after 2019-08-01 |
| JUICE-UVS594657 |  | SETI Support - Aug FY 19 | 1d | 2019-08-29 | 2019-08-29 | JUICE-UVS594654 |  | 728d | start on or after 2019-08-29 |
| JUICE-UVS594660 |  | SETI Support - Sep FY 19 | 1d | 2019-09-26 | 2019-09-26 | JUICE-UVS594657 |  | 711d | start on or after 2019-09-26 |
| JUICE-UVS594663 |  | SETI Support - Oct FY 20 | 1d | 2019-10-24 | 2019-10-24 | JUICE-UVS594660 |  | 692d | start on or after 2019-10-24 |
| JUICE-UVS594666 |  | SETI Support - Nov FY 20 | 1d | 2019-11-20 | 2019-11-20 | JUICE-UVS594663 |  | 674d | start on or after 2019-11-20 |
| JUICE-UVS594669 |  | SETI Support - Dec FY 20 | 1d | 2020-01-02 | 2020-01-02 | JUICE-UVS594666 |  | 649d | start on or after 2020-01-02 |
| JUICE-UVS594672 |  | SETI Support - Jan FY 20 | 1d | 2020-01-30 | 2020-01-30 | JUICE-UVS594669 |  | 630d | start on or after 2020-01-30 |
| JUICE-UVS594675 |  | SETI Support - Feb FY 20 | 1d | 2020-02-27 | 2020-02-27 | JUICE-UVS594672 |  | 611d | start on or after 2020-02-27 |
| JUICE-UVS594678 |  | SETI Support - Mar FY 20 | 1d | 2020-03-26 | 2020-03-26 | JUICE-UVS594675 |  | 592d | start on or after 2020-03-26 |
| JUICE-UVS594681 |  | SETI Support - Apr FY 20 | 1d | 2020-04-23 | 2020-04-23 | JUICE-UVS594678 |  | 573d | start on or after 2020-04-23 |
| JUICE-UVS594684 |  | SETI Support - May FY 20 | 1d | 2020-05-21 | 2020-05-21 | JUICE-UVS594681 |  | 554d | start on or after 2020-05-21 |
| JUICE-UVS594687 |  | SETI Support - Jun FY 20 | 1d | 2020-07-02 | 2020-07-02 | JUICE-UVS594684 |  | 527d | start on or after 2020-07-02 |
| JUICE-UVS594690 |  | SETI Support - Jul FY 20 | 1d | 2020-07-30 | 2020-07-30 | JUICE-UVS594687 |  | 509d | start on or after 2020-07-30 |
| JUICE-UVS594693 |  | SETI Support - Aug FY 20 | 1d | 2020-08-27 | 2020-08-27 | JUICE-UVS594690 |  | 490d | start on or after 2020-08-27 |
| JUICE-UVS594696 |  | SETI Support - Sep FY 20 | 1d | 2020-09-24 | 2020-09-24 | JUICE-UVS594693 |  | 473d | start on or after 2020-09-24 |
| JUICE-UVS594699 |  | SETI Support - Oct FY 21 | 1d | 2020-10-22 | 2020-10-22 | JUICE-UVS594696 |  | 454d | start on or after 2020-10-22 |
| JUICE-UVS594702 |  | SETI Support - Nov FY 21 | 1d | 2020-12-03 | 2020-12-03 | JUICE-UVS594699 |  | 427d | start on or after 2020-12-03 |
| JUICE-UVS594705 |  | SETI Support - Dec FY 21 | 1d | 2020-12-31 | 2020-12-31 | JUICE-UVS594702 |  | 410d | start on or after 2020-12-31 |
| JUICE-UVS594708 |  | SETI Support - Jan FY 21 | 1d | 2021-01-28 | 2021-01-28 | JUICE-UVS594705 |  | 392d | start on or after 2021-01-28 |
| JUICE-UVS594711 |  | SETI Support - Feb FY 21 | 1d | 2021-02-25 | 2021-02-25 | JUICE-UVS594708 |  | 373d | start on or after 2021-02-25 |
| JUICE-UVS594714 |  | SETI Support - Mar FY 21 | 1d | 2021-03-25 | 2021-03-25 | JUICE-UVS594711 |  | 354d | start on or after 2021-03-25 |
| JUICE-UVS594717 |  | SETI Support - Apr FY 21 | 1d | 2021-04-22 | 2021-04-22 | JUICE-UVS594714 |  | 335d | start on or after 2021-04-22 |
| JUICE-UVS594720 |  | SETI Support - May FY 21 | 1d | 2021-06-03 | 2021-06-03 | JUICE-UVS594717 |  | 308d | start on or after 2021-06-03 |
| JUICE-UVS594723 |  | SETI Support - Jun FY 21 | 1d | 2021-07-01 | 2021-07-01 | JUICE-UVS594720 |  | 289d | start on or after 2021-07-01 |
| JUICE-UVS594726 |  | SETI Support - Jul FY 21 | 1d | 2021-07-29 | 2021-07-29 | JUICE-UVS594723 |  | 272d | start on or after 2021-07-29 |
| JUICE-UVS594729 |  | SETI Support - Aug FY 21 | 1d | 2021-08-26 | 2021-08-26 | JUICE-UVS594726 |  | 253d | start on or after 2021-08-26 |
| JUICE-UVS594732 |  | SETI Support - Sep FY 21 | 1d | 2021-09-23 | 2021-09-23 | JUICE-UVS594729 |  | 236d | start on or after 2021-09-23 |

| ID | WBS | Task | Duration | Start | Finish | Predecessors | Complete | Total float | Constraint |
| --- | --- | --- | --- | --- | --- | --- | --- | --- | --- |
| JUICE-UVS594735 |  | SETI Support - Oct FY 22 | 1d | 2021-10-21 | 2021-10-21 | JUICE-UVS594732 |  | 217d | start on or after 2021-10-21 |
| JUICE-UVS594738 |  | SETI Support - Nov FY 22 | 1d | 2021-12-02 | 2021-12-02 | JUICE-UVS594735 |  | 190d | start on or after 2021-12-02 |
| JUICE-UVS594741 |  | SETI Support - Dec FY 22 | 1d | 2021-12-30 | 2021-12-30 | JUICE-UVS594738 |  | 173d | start on or after 2021-12-30 |
| JUICE-UVS594744 |  | SETI Support - Jan FY 22 | 1d | 2022-02-03 | 2022-02-03 | JUICE-UVS594741 |  | 150d | start on or after 2022-02-03 |
| JUICE-UVS594747 |  | SETI Support - Feb FY 22 | 1d | 2022-03-03 | 2022-03-03 | JUICE-UVS594744 |  | 131d | start on or after 2022-03-03 |
| JUICE-UVS594750 |  | SETI Support - Mar FY 22 | 1d | 2022-03-31 | 2022-03-31 | JUICE-UVS594747 |  | 112d | start on or after 2022-03-31 |
| JUICE-UVS594753 |  | SETI Support - Apr FY 22 | 1d | 2022-04-28 | 2022-04-28 | JUICE-UVS594750 |  | 93d | start on or after 2022-04-28 |
| JUICE-UVS594756 |  | SETI Support - May FY 22 | 1d | 2022-05-26 | 2022-05-26 | JUICE-UVS594753 |  | 74d | start on or after 2022-05-26 |
| JUICE-UVS594759 |  | SETI Support - Jun FY 22 | 1d | 2022-06-23 | 2022-06-23 | JUICE-UVS594756 |  | 57d | start on or after 2022-06-23 |
| JUICE-UVS594762 |  | SETI Support - Jul FY 22 | 1d | 2022-07-21 | 2022-07-21 | JUICE-UVS594759 |  | 40d | start on or after 2022-07-21 |
| JUICE-UVS594765 |  | SETI Support - Aug FY 22 | 1d | 2022-09-01 | 2022-09-01 | JUICE-UVS594762 |  | 11d | start on or after 2022-09-01 |
| JUICE-UVS594768 |  | SETI Support - Sep FY 22 | 1d | 2022-09-21 | 2022-09-21 | JUICE-UVS594765 |  | 0d | start on or after 2022-09-21 |
|  | 03 | **Mission Design & Analysis** |  | 2017-08-01 | 2017-08-14 |  |  |  |  |
| JUICE-UVS 593622 |  | Instrument Operations Concept Document (IOCD) SE - 19 | 10d | 2017-08-01 A | 2017-08-14 A | JUICE-UVS 0023 | 100% |  |  |
|  | 05 | **UVS Instrument Development** |  | 2016-10-03 | 2019-12-02 |  |  |  |  |
|  | 01 | **Mechanical** |  | 2016-10-03 | 2019-12-02 |  |  |  |  |
|  | 01 | **Structure/Housing** |  | 2016-11-28 | 2019-12-02 |  |  |  |  |
|  | 01 | **EM Structure/Housing** |  | 2017-04-17 | 2017-09-05 |  |  |  |  |
| JUICE-UVS 593271 |  | EM 2 Housing Plating | 15d | 2017-04-17 A | 2017-05-05 A | JUICE-UVS 0023 | 100% |  |  |
| JUICE-UVS 591783 |  | EM 2 Mechanical Part Kitting | 1d | 2017-05-10 A | 2017-05-10 A | JUICE-UVS 593271, JUICE-UVS 593373 | 100% |  |  |
| JUICE-UVS 591780 |  | EM 2 Mechanical Assembly | 79d | 2017-05-11 A | 2017-09-05 A | JUICE-UVS 593280, JUICE-UVS 592065 FF, JUICE-UVS 592047 FF, JUICE-UVS 591783 | 100% |  |  |
|  | 02 | **FM Final Design** |  | 2017-02-03 | 2018-10-19 |  |  |  |  |
| JUICE-UVS 2581 |  | FM Housing Design Update | 76d | 2017-02-03 A | 2017-05-19 A | JUICE-UVS 4022 SS, JUICE-UVS 0023 | 100% |  |  |
| JUICE-UVS 2582 |  | FM Housing Dwgs | 57d | 2017-04-17 A | 2017-07-07 A | JUICE-UVS 593271 SS | 100% |  |  |
| JUICE-UVS 2586 |  | FM Housing Assy Dwg Update (inc. Ta plates & cover) | 62d | 2017-04-17 A | 2017-07-14 A | JUICE-UVS 2582 SS | 100% |  |  |
| JUICE-UVS 2058 |  | UVS Instrument S/C Mechanical/Thermal ICD - Draft | 44d | 2017-05-22 A | 2017-07-25 A | JUICE-UVS 2581 | 100% |  |  |
| JUICE-UVS 592488 |  | UVS Instrument S/C Mechanical/Thermal ICD - Final | 57d | 2017-05-22 A | 2017-08-11 A | JUICE-UVS 2058 SS | 100% |  |  |
| JUICE-UVS 5235 |  | Receive Final Thermal Inputs from ESA/ADS | 0d | 2017-05-30 A | 2017-05-30 A |  | 100% |  |  |
| JUICE-UVS 5232 |  | Full Peer Review and update of all Housing Dwgs. | 37d | 2017-06-26 A | 2017-08-16 A | JUICE-UVS 2586 | 100% |  |  |
| JUICE-UVS 592536 |  | Heater Design - Final | 5d | 2018-02-19 A | 2018-02-23 A | JUICE-UVS 592533 | 100% |  |  |
| JUICE-UVS 592686 |  | Design & Drawings Heater Harness | 164d | 2018-03-01 A | 2018-10-19 A | JUICE-UVS 592536 | 100% |  |  |
|  | 03 | **FM Structure/Housing** |  | 2016-11-28 | 2019-03-22 |  |  |  |  |
|  | 01 | **FM Housing Fab** |  | 2017-09-28 | 2019-03-22 |  |  |  |  |
| JUICE-UVS 2606 |  | FM Housing Fab | 157d | 2017-09-28 A | 2018-05-11 A | JUICE-UVS 5232 | 100% |  |  |
| JUICE-UVS 592569 |  | FS Housing Fab | 126d | 2017-11-17 A | 2018-05-18 A | JUICE-UVS 2606 SS | 100% |  |  |
| JUICE-UVS 592476 |  | FM Housing Bead Blast | 3d | 2018-05-14 A | 2018-05-16 A | JUICE-UVS 2606 | 100% |  |  |
| JUICE-UVS 2620 |  | FM Housing Thermal Conditioning | 1d | 2018-05-17 A | 2018-05-17 A | JUICE-UVS 592476 | 100% |  |  |
| JUICE-UVS 2622 |  | FM Housing Plating | 3d | 2018-05-18 A | 2018-05-22 A | JUICE-UVS 2620 | 100% |  |  |
| JUICE-UVS 592572 |  | FS Housing Bead Blast | 3d | 2018-05-21 A | 2018-05-23 A | JUICE-UVS 592569 | 100% |  |  |
| JUICE-UVS 592575 |  | FS Housing Thermal Conditioning | 1d | 2018-05-24 A | 2018-05-24 A | JUICE-UVS 592572 | 100% |  |  |
| JUICE-UVS 592578 |  | FS Housing Plating | 3d | 2018-05-29 A | 2018-05-31 A | JUICE-UVS 592575 | 100% |  |  |
| JUICE-UVS 592545 |  | Fab Heater Harness | 10d | 2019-03-11 A | 2019-03-22 A | JUICE-UVS 592686 | 100% |  |  |
|  | 02 | **FM Ta Plates** |  | 2017-05-30 | 2018-08-17 |  |  |  |  |
| JUICE-UVS 2650 |  | FM Ta Plates Design | 20d | 2017-05-30 A | 2017-06-26 A | JUICE-UVS 2581 | 100% |  |  |
| JUICE-UVS 2652 |  | FM Ta Plates Detail Dwgs | 28d | 2017-06-27 A | 2017-08-04 A | JUICE-UVS 2650 | 100% |  |  |
| JUICE-UVS 2658 |  | FM Ta Plates MPS | 3d | 2017-09-29 A | 2017-10-03 A | JUICE-UVS 2652 SS+10d | 100% |  |  |
| JUICE-UVS 2655 |  | FM Ta Plates Fab | 146d | 2017-10-26 A | 2018-05-24 A | JUICE-UVS 2658, JUICE-UVS593934, JUICE-UVS593937 | 100% |  |  |
| JUICE-UVS 2656 |  | Bead Blast FM Ta Plates | 40d | 2018-06-22 A | 2018-08-17 A | JUICE-UVS 2655 | 100% |  |  |
|  | 03 | **FM Housing Cover** |  | 2017-05-30 | 2018-11-27 |  |  |  |  |
| JUICE-UVS 592809 |  | FM Housing Cover DWG | 44d | 2017-05-30 A | 2017-07-31 A | JUICE-UVS 2581 | 100% |  |  |
| JUICE-UVS 592812 |  | FM Housing Cover MPS | 44d | 2017-09-29 A | 2017-12-04 A | JUICE-UVS 592809 | 100% |  |  |
| JUICE-UVS 2686 |  | Machine FM Housing Cover | 53d | 2018-01-18 A | 2018-04-02 A | JUICE-UVS 592812, JUICE-UVS 5232 | 100% |  |  |
| JUICE-UVS 2688 |  | Plate FM Housing Cover | 15d | 2018-04-16 A | 2018-05-04 A | JUICE-UVS 2686 | 100% |  |  |
| JUICE-UVS 593148 |  | Install FM Radiator Coating | 108d | 2018-06-22 A | 2018-11-27 A | JUICE-UVS593940 | 100% |  |  |
|  | 04 | **FM Mechanical Pump Out Tube** |  | 2017-06-26 | 2018-05-11 |  |  |  |  |
| JUICE-UVS 592815 |  | FM POT DWG | 5d | 2017-06-26 A | 2017-06-30 A | JUICE-UVS 2581 | 100% |  |  |
| JUICE-UVS 592818 |  | FM POT MPS | 3d | 2017-09-28 A | 2017-10-02 A | JUICE-UVS 592815 | 100% |  |  |
| JUICE-UVS 2644 |  | Machine FM Pump Out Tube | 42d | 2017-10-03 A | 2017-12-04 A | JUICE-UVS 592818 | 100% |  |  |
| JUICE-UVS 2660 |  | Plate FM Pump Out Tube | 5d | 2018-05-07 A | 2018-05-11 A | JUICE-UVS593943, JUICE-UVS 2661 | 100% |  |  |
|  | 05 | **FM Mechanical Mechanisms** |  | 2016-11-28 | 2018-08-24 |  |  |  |  |
| JUICE-UVS 5226 |  | Review & Approve Mechanisms SubContract Dcuments | 27d | 2016-11-28 A | 2017-01-06 A | JUICE-UVS 0023 | 100% |  |  |
| JUICE-UVS 2672 |  | FM Mechanisms Dwgs Update | 21d | 2017-05-30 A | 2017-06-27 A | JUICE-UVS 2581, JUICE-UVS 5226 | 100% |  |  |
| JUICE-UVS 592821 |  | FM Mechanicism MPS | 44d | 2017-09-28 A | 2017-10-27 A | JUICE-UVS 2672 | 100% |  |  |
| JUICE-UVS 2674 |  | Fab FM Mechanisms | 133d | 2018-02-16 A | 2018-08-24 A | JUICE-UVS 592821, JUICE-UVS 3579, JUICE-UVS 592375, JUICE-UVS 11676, JUICE-UVS 3514, JUICE-UVS 3571, JUICE-UVS593919, JUICE-UVS593922, JUICE-UVS593925, JUICE-UVS593928 | 100% |  |  |
|  | 06 | **FM Sensor Mechanical Piece Parts** |  | 2017-06-26 | 2019-01-07 |  |  |  |  |
| JUICE-UVS 5217 |  | Design Sensor Mech. piece parts | 15d | 2017-06-26 A | 2017-07-17 A | JUICE-UVS 2581, JUICE-UVS 5226 | 100% |  |  |
| JUICE-UVS 592827 |  | FM Sensor Mechanical Parts DWG | 20d | 2017-09-15 A | 2017-10-12 A | JUICE-UVS 5217 | 100% |  |  |
| JUICE-UVS 592830 |  | FM Sensor Mechanical Parts MPS | 24d | 2017-10-13 A | 2017-11-15 A | JUICE-UVS 592827 | 100% |  |  |
| JUICE-UVS 5223 |  | Fab Sensor Mech. piece parts | 256d | 2017-11-16 A | 2019-01-07 A | JUICE-UVS 592830 | 100% |  |  |
|  | 04 | **Structure/Thermal Model (STM)** |  | 2019-06-17 | 2019-12-02 |  |  |  |  |

| ID | WBS | Task | Duration | Start | Finish | Predecessors | Complete | Total float | Constraint |
| --- | --- | --- | --- | --- | --- | --- | --- | --- | --- |
|  | 01 | **STM Design** |  | 2019-06-17 | 2019-07-15 |  |  |  |  |
| JUICE-UVS 51112 |  | STM Housing & Plates Design | 5d | 2019-06-17 | 2019-06-21 | JUICE-UVS 2581 |  | 8.5d | start on or after 2019-06-17 |
| JUICE-UVS 593154 |  | STM Detector Elec Bd Design | 5d | 2019-06-17 | 2019-06-21 | JUICE-UVS 2581 |  | 8.5d | start on or after 2019-06-17 |
| JUICE-UVS 593157 |  | STM Optics & Detector Design | 5d | 2019-06-17 | 2019-06-21 | JUICE-UVS 2581 |  | 8.5d | start on or after 2019-06-17 |
| JUICE-UVS 593160 |  | STM Instrument Elec Bd Design | 10d | 2019-06-17 | 2019-06-28 | JUICE-UVS 2581 |  | 3.5d | start on or after 2019-06-17 |
| JUICE-UVS 591282 |  | STM Housing, Parts & Assy Drwgs | 10d | 2019-07-01 | 2019-07-15 | JUICE-UVS 593160, JUICE-UVS 51112, JUICE-UVS 593157, JUICE-UVS 593154 |  | 3.5d |  |
|  | 02 | **STM Board Mass Models** |  | 2019-07-16 | 2019-07-22 |  |  |  |  |
|  | 01 | **STM Mass Model Elec Bds** |  | 2019-07-16 | 2019-07-22 |  |  |  |  |
| JUICE-UVS 51001 |  | STM Elec Bds Assy | 5d | 2019-07-16 | 2019-07-22 | JUICE-UVS 591282 |  | 13.5d |  |
|  | 02 | **STM Mass Model Detector Electronic Boards** |  | 2019-07-16 | 2019-07-16 |  |  |  |  |
| JUICE-UVS 51109 |  | STM Detector Electronic Bd Fab | 0d | 2019-07-16 | 2019-07-16 | JUICE-UVS 591282 |  | 18.5d |  |
|  | 03 | **STM Optics & Detector Mass Models** |  | 2019-07-16 | 2019-08-05 |  |  |  |  |
|  | 01 | **STM Mass Model Grating** |  | 2019-07-16 | 2019-07-22 |  |  |  |  |
| JUICE-UVS 591291 |  | STM MM Grating Fab | 5d | 2019-07-16 | 2019-07-22 | JUICE-UVS 591282 |  | 3.5d |  |
|  | 02 | **STM Mass Model Mirror** |  | 2019-07-23 | 2019-07-29 |  |  |  |  |
| JUICE-UVS 591297 |  | STM Mirror Fab | 5d | 2019-07-23 | 2019-07-29 | JUICE-UVS 591282, JUICE-UVS 591291 |  | 3.5d |  |
|  | 03 | **STM Mass Model Detector** |  | 2019-07-30 | 2019-08-05 |  |  |  |  |
| JUICE-UVS 591303 |  | STM Detector Fab | 5d | 2019-07-30 | 2019-08-05 | JUICE-UVS 591282, JUICE-UVS 591297 |  | 3.5d |  |
|  | 04 | **STM Mass Model Housing** |  | 2019-07-16 | 2019-07-29 |  |  |  |  |
| JUICE-UVS 51115 |  | STM Housing Fab | 10d | 2019-07-16 | 2019-07-29 | JUICE-UVS 591282, JUICE-UVS593931 |  | 8.5d |  |
| JUICE-UVS 51118 |  | STM Plate Fab | 10d | 2019-07-16 | 2019-07-29 | JUICE-UVS 591282, JUICE-UVS593946 |  | 8.5d |  |
|  | 05 | **STM Mass Model Assembly** |  | 2019-08-06 | 2019-08-26 |  |  |  |  |
| JUICE-UVS 591285 |  | STM Assy | 15d | 2019-08-06 | 2019-08-26 | JUICE-UVS 11658, JUICE-UVS 51118, JUICE-UVS 51001, JUICE-UVS 51109, JUICE-UVS 51115, JUICE-UVS 591303, JUICE-UVS 591297, JUICE-UVS 591291, JUICE-UVS 591282 |  | 3.5d |  |
|  | 06 | **STM Mass Model Bench-Checkout/Test** |  | 2019-08-27 | 2019-09-09 |  |  |  |  |
| JUICE-UVS 51049 |  | STM Bench Check-Out | 5d | 2019-08-27 | 2019-09-04 | JUICE-UVS 591285 |  | 3.5d |  |
| JUICE-UVS 51052 |  | Dis-assemble Test Config and Ready JUICE-UVS & GSE for Move to Vibe TF | 3d | 2019-09-05 | 2019-09-09 | JUICE-UVS 51049 |  | 3.5d |  |
|  | 07 | **STM Mass Model Testing** |  | 2019-09-10 | 2019-10-28 |  |  |  |  |
|  | 01 | **STM Mass Model Vibration Testing** |  | 2019-09-10 | 2019-10-09 |  |  |  |  |
| JUICE-UVS 4618 |  | STM Vibration Test Procedure | 10d | 2019-09-10 | 2019-09-23 | JUICE-UVS 51049, JUICE-UVS 51052 |  | 3.5d |  |
| JUICE-UVS 4624 |  | Move STM & GSE over to Vibration Test Facility & Setup | 0.5d | 2019-09-10 | 2019-09-10 | JUICE-UVS 4629, JUICE-UVS 51052 |  | 13d |  |
| JUICE-UVS 4620 |  | STM Vibration TRR | 0.5d | 2019-09-24 | 2019-09-24 | JUICE-UVS 4624, JUICE-UVS 4618 |  | 3.5d |  |
| JUICE-UVS 4626 |  | Conduct STM Vibration Tests | 4d | 2019-09-24 | 2019-09-30 | JUICE-UVS 4620 |  | 3.5d |  |
| JUICE-UVS 4628 |  | Closeout STM Vibration "As-Run" TP/Report | 5d | 2019-09-30 | 2019-10-07 | JUICE-UVS 4626 |  | 3.5d |  |
| JUICE-UVS 4632 |  | Dis-assemble Vibration Test Configuration | 1d | 2019-10-07 | 2019-10-08 | JUICE-UVS 4628 |  | 3.5d |  |
| JUICE-UVS 592437 |  | Reassemble Vibration Test Configuration | 1d | 2019-10-08 | 2019-10-09 | JUICE-UVS 4632 |  | 3.5d |  |
|  | 02 | **STM Mass Model Thermal Balance Testing** |  | 2019-09-10 | 2019-10-28 |  |  |  |  |
| JUICE-UVS 4650 |  | STM Thermal Test Procedure | 10d | 2019-09-10 | 2019-09-23 | JUICE-UVS 51052, JUICE-UVS 51049 |  | 25d |  |
| JUICE-UVS 4656 |  | Move STM & GSE over to TB Test Facility | 0.5d | 2019-10-09 | 2019-10-09 | JUICE-UVS 4662, JUICE-UVS 592437 |  | 3.5d |  |
| JUICE-UVS 4652 |  | STM TB TRR | 0.5d | 2019-10-10 | 2019-10-10 | JUICE-UVS 4656 |  | 3.5d |  |
| JUICE-UVS 4658 |  | Clean STM for TB & Install into Chamber | 1d | 2019-10-10 | 2019-10-11 | JUICE-UVS 4656, JUICE-UVS 4652 |  | 3.5d |  |
| JUICE-UVS 51073 |  | Conduct STM TB Tests (1-cycle) | 5d | 2019-10-11 | 2019-10-18 | JUICE-UVS 4658 |  | 3.5d |  |
| JUICE-UVS 4670 |  | Remove STM fm Chamber & Dbl Bag | 1d | 2019-10-18 | 2019-10-21 | JUICE-UVS 51073 |  | 3.5d |  |
| JUICE-UVS 51076 |  | Closeout STM TB "As-Run" TP/Report | 5d | 2019-10-21 | 2019-10-28 | JUICE-UVS 4670 |  | 3.5d |  |
|  | 03 | **STM Mass Model Properties Measurements** |  | 2019-10-21 | 2019-10-23 |  |  |  |  |
| JUICE-UVS 4678 |  | Move STM over to Mass Prop Test Stand | 0.5d | 2019-10-21 | 2019-10-21 | JUICE-UVS 4670 |  | 8.5d |  |
| JUICE-UVS 4680 |  | STM Mass Prop Test Preparation | 0.5d | 2019-10-22 | 2019-10-22 | JUICE-UVS 4670, JUICE-UVS 4678 |  | 8.5d |  |
| JUICE-UVS 4682 |  | Conduct STM Mass Prop Measurements | 0.5d | 2019-10-22 | 2019-10-22 | JUICE-UVS 4680 |  | 8.5d |  |
| JUICE-UVS 4684 |  | Closeout STM Mass Prop "As-Run" Proc/Report | 0.5d | 2019-10-23 | 2019-10-23 | JUICE-UVS 4682 |  | 8.5d |  |
|  | 08 | **STM Mass Model Final Closeout & Delivery to ESA** |  | 2019-10-23 | 2019-12-02 |  |  |  |  |
| JUICE-UVS 51055 |  | Move Clean/Bag'd STM into Hi-Bay Clean Cabin | 0.5d | 2019-10-23 | 2019-10-23 | JUICE-UVS 4684 |  | 8.5d |  |
| JUICE-UVS 51058 |  | Inspect & Photograph STM | 0.5d | 2019-10-24 | 2019-10-24 | JUICE-UVS 51055 |  | 8.5d |  |
| JUICE-UVS 51064 |  | STM Schedule Margin | 15d | 2019-10-24 | 2019-11-14 | JUICE-UVS 51058 |  | 8.5d |  |
| JUICE-UVS 51067 |  | Deliver STM JUICE-UVS Ready for Delivery | 2d | 2019-11-27 | 2019-12-02 | JUICE-UVS 51064 |  | 0d | as late as possible |
|  | 02 | **MGSE** |  | 2018-01-18 | 2019-02-01 |  |  |  |  |
|  | 01 | **Fab Fixtures** |  | 2018-01-18 | 2019-02-01 |  |  |  |  |
| JUICE-UVS 4623 |  | GSE Vibration Design | 159d | 2018-01-18 A | 2018-09-04 A | JUICE-UVS 2686 SS | 100% |  |  |
| JUICE-UVS 4629 |  | GSE Vibration Fabrication/OGSE | 103d | 2018-09-04 A | 2019-01-31 A | JUICE-UVS 4623 | 100% |  |  |
| JUICE-UVS 4659 |  | GSE TB Design | 5d | 2019-01-14 A | 2019-01-18 A | JUICE-UVS 4650 SS | 100% |  |  |
| JUICE-UVS 4662 |  | GSE TB Fabrication | 10d | 2019-01-21 A | 2019-02-01 A | JUICE-UVS 4659 | 100% |  |  |
|  | 02 | **Handling Fixtures** |  | 2018-09-27 | 2018-11-26 |  |  |  |  |
| JUICE-UVS 593166 |  | Lifting Handles Design | 2d | 2018-09-27 A | 2018-09-28 A | JUICE-UVS 2581 | 100% |  |  |
| JUICE-UVS 11658 |  | Lifting Handles Fab | 24d | 2018-10-22 A | 2018-11-26 A | JUICE-UVS 593166, JUICE-UVS 2030 | 100% |  |  |
|  | 03 | **Mechanical Procurements** |  | 2016-10-03 | 2019-07-17 |  |  |  |  |
| JUICE-UVS 11622 |  | SVT FM LAT Motor Procurement Lead Time | 271d | 2016-10-03 A | 2017-10-26 A | JUICE-UVS 593791 | 100% |  |  |
| JUICE-UVS 3511 |  | SVT FM TiNi Latch Actuators Procurement Lead Time | 135d | 2016-10-03 A | 2017-04-14 A | JUICE-UVS 593791 | 100% |  |  |
| JUICE-UVS 3555 |  | SVT Procure FM & STM Mechanical Parts May 17 Lead Time | 213d | 2016-10-03 A | 2017-08-07 A | JUICE-UVS 593791 | 100% |  |  |
| JUICE-UVS 3558 |  | SVT Procure FM & STM Mechanical Parts June 17 Lead Time | 182d | 2016-10-03 A | 2017-06-22 A | JUICE-UVS 593791 | 100% |  |  |
| JUICE-UVS 3559 |  | SVT Mechanical FM Optics - S/C Heaters Procurement Lead Time | 539d | 2016-10-03 A | 2019-01-07 A | JUICE-UVS593805, JUICE-UVS 593791 | 100% |  |  |
| JUICE-UVS 3561 |  | SVT Procure FM & STM Mechanical Parts July 17 Lead Time | 376d | 2016-10-03 A | 2018-03-20 A | JUICE-UVS 593791 | 100% |  |  |
| JUICE-UVS 3562 |  | SVT Procure FM Tantalum Plates July 17 Lead Time | 303d | 2016-10-03 A | 2017-12-14 A | JUICE-UVS 593791 | 100% |  |  |

| ID | Task | Duration | Start | Finish | Predecessors | Complete | Total float |
| --- | --- | --- | --- | --- | --- | --- | --- |
| JUICE-UVS 3564 | SVT Procure FM & STM Mechanical Parts Aug 17 Lead Time | 246d | 2016-10-03 A | 2017-09-25 A | JUICE-UVS 593791 | 100% |  |
| JUICE-UVS 3565 | SVT Procure FM Tantalum Plates Aug 17 Lead Time | 315d | 2016-10-03 A | 2018-01-05 A | JUICE-UVS 593791 | 100% |  |
| JUICE-UVS 3567 | SVT Procure FM & STM Mechanical Parts Sep 17 Lead Time | 415d | 2016-10-03 A | 2018-05-15 A | JUICE-UVS 593151, JUICE-UVS 593791 | 100% |  |
| JUICE-UVS 592372 | SVT FM Detector WPA Actuator Procurement Lead Time | 174d | 2016-10-03 A | 2017-06-12 A | JUICE-UVS 593791 | 100% |  |
| JUICE-UVS 592542 | SVT MLI Design & Procure June 17 Lead Time | 539d | 2016-10-03 A | 2019-05-28 | JUICE-UVS 593791 | 100% | 35d |
| JUICE-UVS 593151 | SVT Procure Radiator Coating Oct 17 Lead Time | 539d | 2016-10-03 A | 2019-01-07 A | JUICE-UVS 593175, JUICE-UVS 593791 | 100% |  |
| JUICE-UVS 593175 | SVT X-ray Test FM Pump Out Tube Oct 17 Lead Time | 539d | 2016-10-03 A | 2019-01-07 A | JUICE-UVS 593791 | 100% |  |
| JUICE-UVS 593256 | SVT Procure STM Stainless Steel Plates July 17 Lead Time | 395d | 2016-10-03 A | 2018-03-14 A | JUICE-UVS 593791 | 100% |  |
| JUICE-UVS 593791 | Mechanical Procurement | 0d | 2016-10-03 A | 2016-10-03 A | JUICE-UVS 0023 | 100% |  |
| JUICE-UVS593787 | SVT Solar Port EM/FM Procurement Lead Time | 213d | 2016-10-03 A | 2017-08-07 A | JUICE-UVS 593791 | 100% |  |
| JUICE-UVS593796 | SVTFM & STM Mechanical Materials Procurement March 17 Lead Time | 106d | 2016-10-03 A | 2017-03-06 A | JUICE-UVS 593791 | 100% |  |
| JUICE-UVS593799 | SVT FM & STM Mechanical Materials Procurement July 17 Lead Time | 213d | 2016-10-03 A | 2017-08-07 A | JUICE-UVS 593791 | 100% |  |
| JUICE-UVS593802 | SVT FM & STM Mechanical Materials Procurement Aug 17 Lead Time | 343d | 2016-10-03 A | 2018-01-25 A | JUICE-UVS 593791 | 100% |  |
| JUICE-UVS593805 | SVT FM & STM Mechanical Materials Procurement Sep 17 Lead Time | 482d | 2016-10-03 A | 2018-08-21 A | JUICE-UVS593808, JUICE-UVS 593791 | 100% |  |
| JUICE-UVS593808 | SVT FM & STM Mechanical Materials Procurement Oct 17 Lead Time | 539d | 2016-10-03 A | 2019-05-28 | JUICE-UVS593811, JUICE-UVS 593791 | 100% | 2d |
| JUICE-UVS593811 | SVT FM & STM Mechanical Materials Procurement Nov 17 Lead Time | 396d | 2016-10-03 A | 2018-04-24 A | JUICE-UVS 3567, JUICE-UVS 593791 | 100% |  |
| JUICE-UVS593814 | SVT FM & STM Mechanical Materials Procurement Dec 17 Lead Time | 343d | 2016-10-03 A | 2018-01-18 A | JUICE-UVS 593791 | 100% |  |
| JUICE-UVS593817 | FM & STM Mechanical Materials Procurement March 17 Delivery | 1d | 2017-03-07 A | 2017-03-07 A | JUICE-UVS593796 | 100% |  |
| JUICE-UVS 593901 | FM & STM Mechanical Materials March 17 Material Task Receipt | 0d | 2017-03-07 A | 2017-03-07 A | JUICE-UVS593817 | 100% |  |
| JUICE-UVS 3508 | Procure FM TiNi Latch Actuators Delivery | 1d | 2017-04-17 A | 2017-04-17 A | JUICE-UVS 5226, JUICE-UVS 3511 | 100% |  |
| JUICE-UVS 3514 | FM TiNi Latch Actuators Material Task Receipt | 0d | 2017-04-17 A | 2017-04-17 A | JUICE-UVS 3508 | 100% |  |
| JUICE-UVS 593283 | Plate EM 2 Mechanisms Delivery | 2d | 2017-05-08 A | 2017-05-09 A | JUICE-UVS 593289 | 100% |  |
| JUICE-UVS 593289 | SVT Plate EM 2 Mechanisms Lead Time | 0d | 2017-05-08 A | 2017-05-08 A | JUICE-UVS 593791 | 100% |  |
| JUICE-UVS 593373 | Plate EM 2 Mechanisms Material Task Receipt | 0d | 2017-05-09 A | 2017-05-09 A | JUICE-UVS 593283 | 100% |  |
| JUICE-UVS 11613 | FM Detector WPA Actuator Delivery | 1d | 2017-06-13 A | 2017-06-13 A | JUICE-UVS 5226, JUICE-UVS 592372 | 100% |  |
| JUICE-UVS 11679 | FM Detector WPA Actuator Material Task Receipt | 0d | 2017-06-13 A | 2017-06-13 A | JUICE-UVS 11613 | 100% |  |
| JUICE-UVS 3573 | FM & STM Mechanical Parts June 17 Delivery | 1d | 2017-06-23 A | 2017-06-23 A | JUICE-UVS 3558 | 100% |  |
| JUICE-UVS593922 | FM & STM Mechanical Parts June 17 Material Task Receipt | 0d | 2017-06-23 A | 2017-06-23 A | JUICE-UVS 3573 | 100% |  |
| JUICE-UVS 3570 | FM & STM Mechanical Parts May 17 Delivery | 1d | 2017-08-07 A | 2017-08-07 A | JUICE-UVS 3555 | 100% |  |
| JUICE-UVS 592369 | Solar Port EM/FM Delivery | 1d | 2017-08-07 A | 2017-08-07 A | JUICE-UVS593787 | 100% |  |
| JUICE-UVS593820 | FM & STM Mechanical Materials Procurement July 17 Delivery | 1d | 2017-08-07 A | 2017-08-07 A | JUICE-UVS593799 | 100% |  |
| JUICE-UVS 592375 | Solar Port EM/FM Material Task Receipt | 0d | 2017-08-07 A | 2017-08-07 A | JUICE-UVS 592369 | 100% |  |
| JUICE-UVS593904 | FM & STM Mechanical Materials July 17 Material Task Receipt | 0d | 2017-08-07 A | 2017-08-07 A | JUICE-UVS593820 | 100% |  |
| JUICE-UVS593919 | FM & STM Mechanical Parts May 17 Material Task Receipt | 0d | 2017-08-07 A | 2017-08-07 A | JUICE-UVS 3570 | 100% |  |
| JUICE-UVS 3579 | FM & STM Mechanical Parts Aug 17 Delivery | 1d | 2017-09-26 A | 2017-09-26 A | JUICE-UVS 3564 | 100% |  |
| JUICE-UVS593928 | FM & STM Mechanical Parts Aug 17 Material Task Receipt | 0d | 2017-09-26 A | 2017-09-26 A | JUICE-UVS 3579 | 100% |  |
| JUICE-UVS 11616 | FM LAT Motor Delivery | 1d | 2017-10-26 A | 2017-10-26 A | JUICE-UVS 11622, JUICE-UVS 0023 | 100% |  |
| JUICE-UVS 11676 | FM LAT Motor Material Task Receipt | 0d | 2017-10-26 A | 2017-10-26 A | JUICE-UVS 11616 | 100% |  |
| JUICE-UVS 2649 | SVT Weld FM Pump Out Tube Procurement Lead Time | 57d | 2017-12-04 A | 2018-02-23 A | JUICE-UVS 2644 | 100% |  |
| JUICE-UVS 3568 | FM Tantalum Plates July 17 Delivery | 1d | 2017-12-15 A | 2017-12-15 A | JUICE-UVS 3562 | 100% |  |
| JUICE-UVS593934 | FM Tantalum Plates July 17 Material Task Receipt | 0d | 2017-12-15 A | 2017-12-15 A | JUICE-UVS 3568 | 100% |  |
| JUICE-UVS 3553 | FM Tantalum Plates Aug 17 Delivery | 1d | 2018-01-08 A | 2018-01-08 A | JUICE-UVS 5226, JUICE-UVS 3565 | 100% |  |
| JUICE-UVS593937 | FM Tantalum Plates Aug 17 Material Task Receipt | 0d | 2018-01-08 A | 2018-01-08 A | JUICE-UVS 3553 | 100% |  |
| JUICE-UVS 3067 | FM & STM Mechanical Materials Procurement Dec 17 Delivery | 1d | 2018-01-19 A | 2018-01-19 A | JUICE-UVS 2581, JUICE-UVS593814 | 100% |  |
| JUICE-UVS593838 | FM & STM Mechanical Materials Dec 17 Material Task Receipt | 0d | 2018-01-19 A | 2018-01-19 A | JUICE-UVS 3067 | 100% |  |
| JUICE-UVS593823 | FM & STM Mechanical Materials Procurement Aug 17 Delivery | 1d | 2018-01-26 A | 2018-01-26 A | JUICE-UVS593802 | 100% |  |
| JUICE-UVS593907 | FM & STM Mechanical Materials Aug 17 Material Task Receipt | 0d | 2018-01-26 A | 2018-01-26 A | JUICE-UVS593823 | 100% |  |
| JUICE-UVS 2679 | SVT Plate Mechanisms Lead Time | 10d | 2018-02-16 A | 2018-03-01 A | JUICE-UVS 592821 | 100% |  |
| JUICE-UVS 2646 | Weld FM Pump Out Tube Delivery | 5d | 2018-02-26 A | 2018-03-02 A | JUICE-UVS 2649 | 100% |  |
| JUICE-UVS 592842 | Plate Sensor Mech. Piece Parts Nov 17 Delivery | 2d | 2018-03-01 A | 2018-03-02 A | JUICE-UVS 5223 | 100% |  |
| JUICE-UVS 2676 | Plate FM Mechanisms Delivery | 1d | 2018-03-02 A | 2018-03-02 A | JUICE-UVS 2679 SS | 100% |  |
| JUICE-UVS 2661 | Weld FM Pump Out Tube Material Task Receipt | 0d | 2018-03-02 A | 2018-03-02 A | JUICE-UVS 2646 | 100% |  |
| JUICE-UVS 2682 | Plate Mechanisms Material Task Receipt | 0d | 2018-03-02 A | 2018-03-02 A | JUICE-UVS 2676 | 100% |  |
| JUICE-UVS 593163 | STM Stainless Steel Plates July 17 Delivery | 1d | 2018-03-15 A | 2018-03-15 A | JUICE-UVS 5226, JUICE-UVS 593256 | 100% |  |
| JUICE-UVS593946 | STM Stainless Steel Plates July 17 Material Task Receipt | 0d | 2018-03-15 A | 2018-03-15 A | JUICE-UVS 593163 | 100% |  |
| JUICE-UVS 3576 | FM & STM Mechanical Parts July 17 Delivery | 1d | 2018-03-21 A | 2018-03-21 A | JUICE-UVS 3561 | 100% |  |
| JUICE-UVS593925 | FM & STM Mechanical Parts July 17 Material Task Receipt | 0d | 2018-03-21 A | 2018-03-21 A | JUICE-UVS 3576 | 100% |  |
| JUICE-UVS593832 | FM & STM Mechanical Materials Procurement Nov 17 Delivery | 1d | 2018-04-25 A | 2018-04-25 A | JUICE-UVS593811 | 100% |  |
| JUICE-UVS593916 | FM & STM Mechanical Materials Nov 17 Material Task Receipt | 0d | 2018-04-25 A | 2018-04-25 A | JUICE-UVS593832 | 100% |  |
| JUICE-UVS 3552 | FM & STM Mechanical Parts Sep 17 Delivery | 1d | 2018-05-16 A | 2018-05-16 A | JUICE-UVS 5226, JUICE-UVS 3567 | 100% |  |
| JUICE-UVS593931 | FM & STM Mechanical Parts Sep 17 Material Task Receipt | 0d | 2018-05-16 A | 2018-05-16 A | JUICE-UVS 3552 | 100% |  |
| JUICE-UVS593826 | FM & STM Mechanical Materials Procurement Sep 17 Delivery | 1d | 2018-08-22 A | 2018-08-22 A | JUICE-UVS593805 | 100% |  |
| JUICE-UVS593910 | FM & STM Mechanical Materials Sep 17 Material Task Receipt | 0d | 2018-08-22 A | 2018-08-22 A | JUICE-UVS593826 | 100% |  |
| JUICE-UVS 2648 | X-ray Test FM Pump Out Tube Oct 17 Delivery | 1d | 2019-01-07 A | 2019-01-07 A | JUICE-UVS 593175 | 100% |  |
| JUICE-UVS 3556 | Mechanical procurements for FM Optics - S/C Heaters Delivery | 1d | 2019-01-07 A | 2019-01-07 A | JUICE-UVS 5226, JUICE-UVS 3559, JUICE-UVS 0023 | 100% |  |
| JUICE-UVS 592836 | Plate Sensor Mech. Piece Parts Dec 17 Delivery | 1d | 2019-01-07 A | 2019-01-07 A | JUICE-UVS 5223 | 100% |  |
| JUICE-UVS 593145 | Procure Radiator Coating Oct 17 Delivery | 1d | 2019-01-07 A | 2019-01-07 A | JUICE-UVS 2688 SS, JUICE-UVS 593151 | 100% |  |
| JUICE-UVS 3571 | Mechanical for FM Optics - S/C Heaters Material Task Receipt | 0d | 2019-01-07 A | 2019-01-07 A | JUICE-UVS 3556 | 100% |  |
| JUICE-UVS593940 | Radiator Coating Oct 17 Material Task Receipt | 0d | 2019-01-07 A | 2019-01-07 A | JUICE-UVS 593145 | 100% |  |
| JUICE-UVS593943 | X-ray Test FM Pump Out Tube Oct 17 Material Task Receipt | 0d | 2019-01-07 A | 2019-01-07 A | JUICE-UVS 2648 | 100% |  |

| ID | WBS | Task | Duration | Start | Finish | Predecessors | Complete | Total float |
| --- | --- | --- | --- | --- | --- | --- | --- | --- |
| JUICE-UVS 11646 |  | FM Shipping Cases Procurement Delivery | 1d | 2019-05-28 | 2019-05-28 | JUICE-UVS 2030 |  | 17d |
| JUICE-UVS 592533 |  | MLI Design MLI - Final Dec 17 Delivery | 35d | 2019-05-28 | 2019-07-16 | JUICE-UVS 2581, JUICE-UVS 5235, JUICE-UVS 593791 |  | 0d |
| JUICE-UVS593829 |  | FM & STM Mechanical Materials Procurement Oct 17 Delivery | 1d | 2019-05-28 | 2019-05-28 | JUICE-UVS593808 |  | 2d |
| JUICE-UVS593913 |  | FM & STM Mechanical Materials Oct 17 Material Task Receipt | 0d | 2019-05-28 | 2019-05-28 | JUICE-UVS593829 |  | 2d |
| JUICE-UVS 592539 |  | MLI Design & Procure Delivery | 1d | 2019-07-17 | 2019-07-17 | JUICE-UVS 592542, JUICE-UVS 592536 |  | 0d |
| JUICE-UVS593949 |  | MLI Design & Procure Material Task Receipt | 0d | 2019-07-17 | 2019-07-17 | JUICE-UVS 592539 |  | 0d |
|  | 04 | **EM Mechanical Oversight** |  | 2017-03-06 | 2017-07-21 |  |  |  |
| JUICE-UVS 592845 |  | EM Mechanical Oversight | 97d | 2017-03-06 A | 2017-07-21 A | JUICE-UVS 0011 | 100% |  |
|  | 05 | **EM Mechanical** |  | 2017-03-06 | 2017-08-18 |  |  |  |
| JUICE-UVS 592833 |  | Fab Sensor Mech. piece parts | 29d | 2017-03-06 A | 2017-04-13 A | JUICE-UVS 0023 | 100% |  |
| JUICE-UVS 592032 |  | Machine EM 1 Optics Housing Covers | 6d | 2017-03-20 A | 2017-03-27 A | JUICE-UVS 0023 | 100% |  |
| JUICE-UVS 592274 |  | Machine EM 2 Optics Housing Covers | 5d | 2017-03-20 A | 2017-03-24 A | JUICE-UVS 0023 | 100% |  |
| JUICE-UVS 592053 |  | Fab EM 1 Mechanisms | 11d | 2017-03-22 A | 2017-04-05 A | JUICE-UVS 0023 | 100% |  |
| JUICE-UVS 593280 |  | Fab EM 2 Mechanisms | 105d | 2017-03-22 A | 2017-08-18 A | JUICE-UVS 592053 SS | 100% |  |
| JUICE-UVS 31268 |  | EM 1 Mechanical Parts Kitting | 1d | 2017-04-07 A | 2017-04-07 A | JUICE-UVS 592035 FF | 100% |  |
|  | 06 | **EM Mechanical Procurements** |  | 2017-03-27 | 2017-08-09 |  |  |  |
| JUICE-UVS 592035 |  | Plate EM 1/2 Optics Housing Covers | 10d | 2017-03-27 A | 2017-04-07 A | JUICE-UVS 592032, JUICE-UVS 592274 | 100% |  |
| JUICE-UVS 592056 |  | Plate EM 1 Mechanisms | 8d | 2017-03-31 A | 2017-04-11 A | JUICE-UVS 592053 | 100% |  |
| JUICE-UVS 592065 |  | Plate Sensor Mech. piece parts | 4d | 2017-04-14 A | 2017-04-19 A | JUICE-UVS 592833 | 100% |  |
| JUICE-UVS 592041 |  | Weld EM 1/2 Pump Out Tube | 10d | 2017-07-10 A | 2017-07-21 A | JUICE-UVS 0023 | 100% |  |
| JUICE-UVS 592044 |  | X-ray Test EM Pump Out Tube | 5d | 2017-07-24 A | 2017-07-28 A | JUICE-UVS 592041 | 100% |  |
| JUICE-UVS 592047 |  | Plate EM 1/2 Pump Out Tube | 3d | 2017-08-07 A | 2017-08-09 A | JUICE-UVS 592044 | 100% |  |
|  | 07 | **S/C Back Shell Ta** |  | 2018-09-17 | 2019-05-17 |  |  |  |
|  | 01 | **S/C Back Shell Ta Piece Parts Design & Fab** |  | 2018-09-17 | 2019-05-17 |  |  |  |
| JUICE-UVS594774 |  | S/C Back Shell Ta Design | 5d | 2018-09-17 A | 2018-09-17 A | JUICE-UVS 5784 | 100% |  |
| JUICE-UVS594777 |  | S/C Back Shell Ta Custom Screws | 50d | 2018-09-17 A | 2019-01-15 A | JUICE-UVS594774 SS | 100% |  |
| JUICE-UVS594780 |  | S/C Back Shell Ta Back Shell Covers | 20d | 2018-10-30 A | 2019-01-16 A | JUICE-UVS594777 | 100% |  |
| JUICE-UVS594783 |  | S/C Back Shell Ta Back Shell Halves Phase 1 | 36d | 2018-10-30 A | 2019-01-15 A | JUICE-UVS594774 SS | 100% |  |
| JUICE-UVS594786 |  | S/C Back Shell Ta Back Shell Halves Phase 2 | 28d | 2019-01-02 A | 2019-05-17 A | JUICE-UVS594798 FF, JUICE-UVS594783 FF | 100% |  |
|  | 02 | **S/C Back Shell QA** |  | 2019-01-14 | 2019-03-29 |  |  |  |
| JUICE-UVS594801 |  | S/C Back Shell Ta Custom Screws QA | 15d | 2019-01-14 A | 2019-02-01 A | JUICE-UVS594777 SS | 100% |  |
| JUICE-UVS594804 |  | S/C Back Shell Ta Back Shell Halves Phase 1 QA | 36d | 2019-01-14 A | 2019-01-31 A | JUICE-UVS594783 SS | 100% |  |
| JUICE-UVS594810 |  | S/C Back Shell Ta Back Shell Halves Phase 2 QA | 28d | 2019-01-14 A | 2019-03-29 A | JUICE-UVS594786 SS | 100% |  |
| JUICE-UVS594807 |  | S/C Back Shell Ta Back Shell Covers QA | 20d | 2019-01-16 A | 2019-01-31 A | JUICE-UVS594780 SS | 100% |  |
|  | 03 | **S/C Back Shell Ta Piece Parts Materials Procurement** |  | 2018-09-17 | 2018-10-24 |  |  |  |
| JUICE-UVS594792 |  | S/C Back Shell Ta Piece Parts Procurement | 0d | 2018-09-17 A | 2018-09-17 A | JUICE-UVS594774 SS | 100% |  |
| JUICE-UVS594795 |  | S/C Back Shell Ta Piece Parts Procurement SVT | 44d | 2018-09-17 A | 2018-10-24 A | JUICE-UVS594792 | 100% |  |
| JUICE-UVS594789 |  | S/C Back Shell Ta Piece Parts Delivery | 1d | 2018-10-24 A | 2018-10-24 A | JUICE-UVS594795 | 100% |  |
| JUICE-UVS594798 |  | S/C Back Shell Ta Piece Parts Task Receipt | 1d | 2018-10-24 A | 2018-10-24 A | JUICE-UVS594789 | 100% |  |
|  | 02 | **Electrical** |  | 2016-10-03 | 2019-05-28 |  |  |  |
|  | 01 | **C&DH** |  | 2016-11-28 | 2018-09-14 |  |  |  |
|  | 01 | **C&DH EM Testing** |  | 2016-11-28 | 2017-04-28 |  |  |  |
| JUICE-UVS 3030b6 |  | C&DH EM 2 PWA Bench test w/FPGAs | 30d | 2016-11-28 A | 2017-01-11 A | JUICE-UVS 0023 | 100% |  |
| JUICE-UVS 592584 |  | Final Test C&DH EM 1 PWA with Build 1 S/W | 11d | 2017-02-10 A | 2017-02-24 A | JUICE-UVS 0023 | 100% |  |
| JUICE-UVS 591807 |  | Pre-Emulator (GSEOS) I&T with C&DH EM 2 & SW Build 1 | 20d | 2017-03-20 A | 2017-04-14 A | JUICE-UVS 3030b6 | 100% |  |
| JUICE-UVS 591810 |  | Final Test C&DH EM 2 PWA with Build 1 S/W | 10d | 2017-04-17 A | 2017-04-28 A | JUICE-UVS 3030b6, JUICE-UVS 591807 | 100% |  |
|  | 02 | **C&DH FM Final Design** |  | 2017-05-22 | 2017-07-11 |  |  |  |
| JUICE-UVS 5208 |  | C&DH Updates | 28d | 2017-05-22 A | 2017-06-30 A | JUICE-UVS 4024 SS | 100% |  |
| JUICE-UVS 3176 |  | FM C&DH Peer Review | 1d | 2017-07-03 A | 2017-07-03 A | JUICE-UVS 5208 | 100% |  |
| JUICE-UVS 592740 |  | FM C&DH Peer Review Updates | 5d | 2017-07-05 A | 2017-07-11 A | JUICE-UVS 3176 | 100% |  |
|  | 03 | **C&DH FM FPGA** |  | 2017-01-09 | 2018-09-14 |  |  |  |
| JUICE-UVS 592350 |  | FM C&DH FPGA Update | 310d | 2017-01-09 A | 2018-03-30 A | JUICE-UVS 3030b6 | 100% |  |
| JUICE-UVS 3196 |  | FPGA Peer Review | 1d | 2017-07-17 A | 2017-07-17 A |  | 100% |  |
| JUICE-UVS 592743 |  | FPGA Peer Review Updates | 5d | 2017-07-18 A | 2017-07-24 A | JUICE-UVS 3196 | 100% |  |
| JUICE-UVS 3193 |  | FM C&DH FPGA Simulations/WCTA Review | 287d | 2017-07-25 A | 2018-09-14 A | JUICE-UVS 592743, JUICE-UVS 592350 | 100% |  |
|  | 04 | **C&DH FM Fab** |  | 2017-09-15 | 2018-03-05 |  |  |  |
| JUICE-UVS 3186 |  | FM C&DH Update Assembly Dwg | 54d | 2017-09-15 A | 2017-12-01 A | JUICE-UVS 592740 | 100% |  |
| JUICE-UVS 3182 |  | C&DH FM MPS Development | 5d | 2017-11-27 A | 2017-12-01 A | JUICE-UVS 592740 | 100% |  |
| JUICE-UVS 3188 |  | FM C&DH Parts Kitting | 3d | 2017-12-04 A | 2017-12-06 A | JUICE-UVS 3182, JUICE-UVS 593715, JUICE-UVS 593391, JUICE-UVS 591288, JUICE-UVS 593721, JUICE-UVS 593733, JUICE-UVS 593745, JUICE-UVS 593757, JUICE-UVS 593769 | 100% |  |
| JUICE-UVS 3192 |  | FM C&DH Fab PWA | 48d | 2018-01-29 A | 2018-03-05 A | JUICE-UVS 3188, JUICE-UVS 3186 | 100% |  |
|  | 05 | **C&DH FM Test** |  | 2018-02-08 | 2018-05-18 |  |  |  |
| JUICE-UVS 592485 |  | UVS C&DH FTP Release - FM Final | 20d | 2018-02-08 A | 2018-02-09 A | JUICE-UVS 5208 | 100% |  |
| JUICE-UVS 3198 |  | FM C&DH PWA Stand-Alone Test (checkout FTP) | 15d | 2018-04-27 A | 2018-05-18 A | JUICE-UVS 592485, JUICE-UVS 3192 | 100% |  |
|  | 02 | **LVPS** |  | 2017-01-23 | 2018-05-21 |  |  |  |
|  | 01 | **LVPS FM Final Design** |  | 2017-01-23 | 2017-07-14 |  |  |  |
| JUICE-UVS 3272 |  | Update FM LVPS Design & Layouts | 90d | 2017-01-23 A | 2017-05-30 A | JUICE-UVS594045 FF | 100% |  |
| JUICE-UVS 5076 |  | Update FM LVPS Magnetics Source Control Drawings | 28d | 2017-05-30 A | 2017-07-07 A | JUICE-UVS 3272 | 100% |  |
| JUICE-UVS 3274 |  | FM LVPS Peer Review | 1d | 2017-07-07 A | 2017-07-07 A | JUICE-UVS 3272, JUICE-UVS594033, JUICE-UVS594042, JUICE-UVS594039 | 100% |  |
| JUICE-UVS 3277 |  | FM LVPS Peer Review Updates | 5d | 2017-07-10 A | 2017-07-14 A | JUICE-UVS 3274 | 100% |  |
|  | 02 | **LVPS FM Fab** |  | 2017-09-11 | 2018-02-27 |  |  |  |

| ID | WBS | Task | Duration | Start | Finish | Predecessors | Complete |
| --- | --- | --- | --- | --- | --- | --- | --- |
|  | 01 | **LVPS FM 1 Fab** |  | 2017-09-11 | 2018-02-26 |  |  |
| JUICE-UVS 3292 |  | LVPS FM 1 ASSY dwg. | 26d | 2017-09-11 A | 2017-10-16 A | JUICE-UVS 3277, JUICE-UVS 3274 | 100% |
| JUICE-UVS 5214 |  | LVPS FM 1 MPS Development | 27d | 2017-09-28 A | 2017-11-03 A | JUICE-UVS 3274 | 100% |
| JUICE-UVS 3280 |  | LVPS FM 1 Parts Kitting | 9d | 2017-10-27 A | 2017-11-08 A | JUICE-UVS 5214, JUICE-UVS 3274, JUICE-UVS 3220, JUICE-UVS 593715, JUICE-UVS 593391, JUICE-UVS 591300, JUICE-UVS 593721, JUICE-UVS 593733, JUICE-UVS 593745, JUICE-UVS 593757, JUICE-UVS 593775, JUICE-UVS 593769, JUICE-UVS 593781 | 100% |
| JUICE-UVS 3284 |  | LVPS FM 1 Board Assembly | 75d | 2017-11-07 A | 2018-02-26 A | JUICE-UVS 3292, JUICE-UVS 3280 | 100% |
|  | 02 | **LVPS FM 2 Fab** |  | 2017-09-11 | 2018-02-27 |  |  |
| JUICE-UVS 592521 |  | LVPS FM 2 ASSY dwg. | 26d | 2017-09-11 A | 2017-10-16 A | JUICE-UVS 3277 | 100% |
| JUICE-UVS 592518 |  | LVPS FM 2 MPS Development | 21d | 2017-10-06 A | 2017-11-03 A | JUICE-UVS 3274 | 100% |
| JUICE-UVS 592524 |  | LVPS FM 2 Parts Kitting | 7d | 2017-10-27 A | 2017-11-06 A | JUICE-UVS 592518 | 100% |
| JUICE-UVS 592527 |  | LVPS FM 2 Board Assembly | 75d | 2017-11-07 A | 2018-02-27 A | JUICE-UVS 592521, JUICE-UVS 592524 | 100% |
|  | 03 | **LVPS FM Test** |  | 2018-01-16 | 2018-05-21 |  |  |
|  | 01 | **LVPS FM 1 Test** |  | 2018-01-16 | 2018-03-16 |  |  |
| JUICE-UVS 593388 |  | LVPS FM GSE & SW Development | 20d | 2018-01-16 A | 2018-02-02 A | JUICE-UVS 592758 | 100% |
| JUICE-UVS 3286 |  | LVPS FM 1 PWA #1 Bench FTP & Test | 40d | 2018-01-22 A | 2018-03-16 A | JUICE-UVS 5076, JUICE-UVS 593388 SS, JUICE-UVS 3272, JUICE-UVS 3284 FF | 100% |
|  | 02 | **LVPS FM 2 Test** |  | 2018-03-28 | 2018-05-21 |  |  |
| JUICE-UVS 592530 |  | LVPS FM 2 PWA #1 Bench Test | 39d | 2018-03-28 A | 2018-05-21 A | JUICE-UVS 592527 FF, JUICE-UVS 3286 | 100% |
|  | 04 | **LVPS Input Filter Redesign with EM Update** |  | 2017-03-13 | 2017-06-16 |  |  |
| JUICE-UVS594045 |  | Redesign Input Filter | 15d | 2017-03-13 A | 2017-03-31 A | JUICE-UVS594036 | 100% |
| JUICE-UVS594039 |  | LCL Power Stability WCA (R001882) | 15d | 2017-04-03 A | 2017-04-21 A | JUICE-UVS594045 | 100% |
| JUICE-UVS594048 |  | Retrofit 2 EM LVPS | 10d | 2017-04-03 A | 2017-04-14 A | JUICE-UVS594045 | 100% |
| JUICE-UVS594051 |  | Retest EM LVPS | 43d | 2017-04-17 A | 2017-06-16 A | JUICE-UVS594048 SS+5d | 100% |
|  | 03 | **HVPS** |  | 2016-12-06 | 2018-07-20 |  |  |
|  | 01 | **HVPS FM Final Design** |  | 2017-02-20 | 2017-05-31 |  |  |
| JUICE-UVS 3229 |  | FM HVPS DWG Review & Updates | 40d | 2017-02-20 A | 2017-04-14 A | JUICE-UVS 0023 | 100% |
| JUICE-UVS 3212 |  | FM HVPS Update Board Layouts | 16d | 2017-04-17 A | 2017-05-08 A | JUICE-UVS 3229 | 100% |
| JUICE-UVS 3214 |  | FM HVPS Peer Review | 1d | 2017-05-09 A | 2017-05-09 A | JUICE-UVS 3212 | 100% |
| JUICE-UVS 3217 |  | FM HVPS Peer Review Updates | 14d | 2017-05-10 A | 2017-05-31 A | JUICE-UVS 3214 | 100% |
|  | 02 | **HVPS FM Fab** |  | 2017-09-13 | 2018-02-16 |  |  |
| JUICE-UVS 3226 |  | HVPS FM 1 MPS Development | 14d | 2017-09-13 A | 2017-10-02 A | JUICE-UVS 3217 | 100% |
| JUICE-UVS 3228 |  | HVPS FM 1 Parts Kitting | 2d | 2017-10-13 A | 2017-10-16 A | JUICE-UVS 3229, JUICE-UVS 3226, JUICE-UVS 3220, JUICE-UVS 593715, JUICE-UVS 593391, JUICE-UVS 591309, JUICE-UVS 593721, JUICE-UVS 593733, JUICE-UVS 593745, JUICE-UVS 593757, JUICE-UVS 593775, JUICE-UVS 593769, JUICE-UVS 593781 | 100% |
| JUICE-UVS 3236 |  | HVPS FM 1 Multiplier String Fab (2) | 5d | 2017-10-17 A | 2017-10-23 A | JUICE-UVS 3228 | 100% |
| JUICE-UVS 3240 |  | HVPS FM 1 Multiplier String Test | 1d | 2017-10-24 A | 2017-10-24 A | JUICE-UVS 3236 | 100% |
| JUICE-UVS 3242 |  | HVPS FM 1 Multiplier String Parylene Service | 14d | 2017-10-25 A | 2017-11-13 A | JUICE-UVS 3240 | 100% |
| JUICE-UVS 592755 |  | HVPS FM 1 Multiplier String Parylene Labor | 14d | 2017-10-25 A | 2017-11-13 A | JUICE-UVS 3242 SS | 100% |
| JUICE-UVS 3231 |  | HVPS FM 1 Multiplier/Filter Board Assembly (2) | 15d | 2017-11-09 A | 2017-12-01 A | JUICE-UVS 3230 | 100% |
| JUICE-UVS 3230 |  | HVPS FM 1 test Multiplier Strings before installation (2) | 1d | 2017-11-14 A | 2017-11-14 A | JUICE-UVS 592755, JUICE-UVS 3228 | 100% |
| JUICE-UVS 3234 |  | HVPS FM 1 Multiplier/Filter Board Test | 5d | 2017-12-04 A | 2017-12-08 A | JUICE-UVS 3231 | 100% |
| JUICE-UVS 3250 |  | HVPS FM 1 Main Board Assembly | 38d | 2017-12-11 A | 2018-02-16 A | JUICE-UVS 3234, JUICE-UVS 3228 | 100% |
|  | 03 | **HVPS EM/FM Test** |  | 2016-12-06 | 2018-07-20 |  |  |
|  | 01 | **HVPS EM Test** |  | 2016-12-06 | 2016-12-19 |  |  |
| JUICE-UVS 591876 |  | Final EM 1 HVPS FTP & Test | 10d | 2016-12-06 A | 2016-12-19 A | JUICE-UVS 0023 | 100% |
|  | 02 | **HVPS FM Test** |  | 2018-01-23 | 2018-07-20 |  |  |
| JUICE-UVS 3252 |  | HVPS FM 1 Main Board Test | 10d | 2018-01-23 A | 2018-02-22 A | JUICE-UVS 3220 SS, JUICE-UVS 3214, JUICE-UVS 3212, JUICE-UVS 3250 FF, JUICE-UVS 594189 | 100% |
| JUICE-UVS 3262 |  | HVPS FM 1 Main Board Assembly Parylene Service | 23d | 2018-03-29 A | 2018-05-02 A | JUICE-UVS 3252 | 100% |
| JUICE-UVS 592752 |  | HVPS FM 1 Main Board Assembly Parylene Labor | 5d | 2018-04-26 A | 2018-05-02 A | JUICE-UVS 3262 SS | 100% |
| JUICE-UVS 3264 |  | HVPS FM 1 Post-Parylene Test | 20d | 2018-05-29 A | 2018-07-20 A | JUICE-UVS 592752 | 100% |
|  | 04 | **Harnessing/Backplane** |  | 2016-10-03 | 2018-09-21 |  |  |
|  | 01 | **Harness FM** |  | 2017-12-27 | 2018-09-21 |  |  |
| JUICE-UVS 3310 |  | FM Instrument Harness Final Design | 10d | 2017-12-27 A | 2018-01-10 A | JUICE-UVS 592475 | 100% |
| JUICE-UVS 3295 |  | FM Instrument Harness MPS Development | 3d | 2018-03-26 A | 2018-03-28 A | JUICE-UVS 3310 | 100% |
| JUICE-UVS 3296 |  | FM Instrument Harness Fabrication | 67d | 2018-04-02 A | 2018-07-06 A | JUICE-UVS 3297 | 100% |
| JUICE-UVS 3297 |  | FM Instrument Harness Parts Kitting | 5d | 2018-04-02 A | 2018-04-06 A | JUICE-UVS 3295, JUICE-UVS 593246, JUICE-UVS 593249, JUICE-UVS 593252, JUICE-UVS 593255 | 100% |
| JUICE-UVS 3288 |  | FM Safe/Arm Cable Design | 5d | 2018-05-07 A | 2018-05-11 A | JUICE-UVS 3310 | 100% |
| JUICE-UVS 5091 |  | FM Safe/Arm Cable MPS Development | 5d | 2018-05-14 A | 2018-05-18 A | JUICE-UVS 3288 | 100% |
| JUICE-UVS 5109 |  | SC Interface Connectors | 5d | 2018-05-18 A | 2018-05-24 A | JUICE-UVS 3310, JUICE-UVS 0023 | 100% |
| JUICE-UVS 5094 |  | FM Safe/Arm Cable Parts Kitting | 5d | 2018-05-21 A | 2018-05-25 A | JUICE-UVS 5091, JUICE-UVS 593246, JUICE-UVS 593249, JUICE-UVS 593252 | 100% |
| JUICE-UVS 5097 |  | FM Safe/Arm Plugs Fabrication | 5d | 2018-05-29 A | 2018-06-04 A | JUICE-UVS 5094 | 100% |
| JUICE-UVS 5103 |  | FM Safe/Arm Cable Testing | 63d | 2018-06-22 A | 2018-09-21 A | JUICE-UVS 5097 | 100% |
| JUICE-UVS 3298 |  | FM Instrument Harness Testing | 5d | 2018-06-25 A | 2018-06-29 A | JUICE-UVS 3296 | 100% |
|  | 02 | **Backplane EM** |  | 2016-10-03 | 2016-10-27 |  |  |
|  | 01 | **EM 2 Backplane Fab** |  | 2016-10-03 | 2016-10-27 |  |  |
| JUICE-UVS 591918 |  | Backplane EM Parts Kitting | 3d | 2016-10-03 A | 2016-10-05 A | JUICE-UVS 0023 | 100% |
| JUICE-UVS 3033a3 |  | Assembly Backplane EM PWA EM 2 | 16d | 2016-10-06 A | 2016-10-27 A | JUICE-UVS 591918 | 100% |
|  | 02 | **EM 2 Backplane Test** |  | 2016-10-24 | 2016-10-27 |  |  |
| JUICE-UVS 591921 |  | Test EM 2 Backplane | 4d | 2016-10-24 A | 2016-10-27 A | JUICE-UVS 3033a3 | 100% |
|  | 03 | **Backplane FM** |  | 2017-06-26 | 2018-03-02 |  |  |
|  | 01 | **FM Backplane Design** |  | 2017-06-26 | 2017-08-04 |  |  |
| JUICE-UVS 3015 |  | Update Schematics of Backplane Elec-FM | 7d | 2017-06-26 A | 2017-07-05 A | JUICE-UVS 0023 | 100% |
| JUICE-UVS 3032 |  | Generate FM Backplane Parts List | 10d | 2017-07-06 A | 2017-07-19 A | JUICE-UVS 3015 | 100% |
| JUICE-UVS 3035 |  | Peer Review Backplane Design | 2d | 2017-07-20 A | 2017-07-21 A | JUICE-UVS 3032 | 100% |

| ID | WBS | Task | Duration | Start | Finish | Predecessors | Complete | Total float |
| --- | --- | --- | --- | --- | --- | --- | --- | --- |
| JUICE-UVS 3022 |  | Update Layout & Route Backplane PWB | 10d | 2017-07-24 A | 2017-08-04 A | JUICE-UVS 3035 | 100% |  |
| JUICE-UVS 3048 |  | Peer Review FM Backplane PWB Layout | 3d | 2017-08-02 A | 2017-08-04 A | JUICE-UVS 3022 FF | 100% |  |
|  | 02 | **FM Backplane Fab** |  | 2017-09-25 | 2018-02-19 |  |  |  |
| JUICE-UVS 3038 |  | Backplane FM Assembly Dwg | 80d | 2017-09-25 A | 2018-01-19 A | JUICE-UVS 3048 | 100% |  |
| JUICE-UVS 3041 |  | Backplane FM MPS Development | 16d | 2017-12-28 A | 2018-01-19 A | JUICE-UVS 3038 | 100% |  |
| JUICE-UVS 3037 |  | Backplane FM Parts Kitting | 2d | 2018-01-22 A | 2018-01-23 A | JUICE-UVS 3041, JUICE-UVS 593391, JUICE-UVS 3078, JUICE-UVS 593721, JUICE-UVS 593733, JUICE-UVS 593745, JUICE-UVS 593757, JUICE-UVS 593769, JUICE-UVS 593775, JUICE-UVS 593775 FF, JUICE-UVS 593781, JUICE-UVS 593793, JUICE-UVS 593802 | 100% |  |
| JUICE-UVS 3051 |  | Assembly Backplane FM PWA | 12d | 2018-02-02 A | 2018-02-19 A | JUICE-UVS 3037 | 100% |  |
|  | 03 | **FM Backplane Test** |  | 2018-01-29 | 2018-03-02 |  |  |  |
| JUICE-UVS 3057 |  | Test FM Backplane | 10d | 2018-01-29 A | 2018-03-02 A | JUICE-UVS 3037, JUICE-UVS 3051 FF | 100% |  |
|  | 05 | **EGSE** |  | 2016-11-28 | 2016-12-29 |  |  |  |
| JUICE-UVS 11667 |  | HVPS GSE Phase C Procurement | 22d | 2016-11-28 A | 2016-12-29 A | JUICE-UVS 0023 | 100% |  |
| JUICE-UVS 592758 |  | LVPS GSE Phase C Procurement | 22d | 2016-11-28 A | 2016-12-29 A | JUICE-UVS 0023 | 100% |  |
|  | 06 | **Electrical Procurements** |  | 2016-10-03 | 2019-05-28 |  |  |  |
|  | 01 | **EE Parts Procurement (EM/FM)** |  | 2016-10-03 | 2017-08-14 |  |  |  |
| JUICE-UVS 593391 |  | FM EEE Parts Purchase Request | 0d | 2016-10-03 A | 2016-10-03 A | JUICE-UVS 0023 | 100% |  |
| JUICE-UVS 593712 |  | SVT FM EEE Dec 16 Parts Lead Time | 44d | 2016-10-03 A | 2016-12-05 A | JUICE-UVS 593391 | 100% |  |
| JUICE-UVS 593718 |  | SVT FM EEE Jan 17 Parts Lead Time | 68d | 2016-10-03 A | 2017-01-11 A | JUICE-UVS 593391 | 100% |  |
| JUICE-UVS 593730 |  | SVT FM EEE Feb 17 Parts Lead Time | 106d | 2016-10-03 A | 2017-03-06 A | JUICE-UVS 593391 | 100% |  |
| JUICE-UVS 593742 |  | SVT FM EEE March 17 Parts Lead Time | 107d | 2016-10-03 A | 2017-03-07 A | JUICE-UVS 593391 | 100% |  |
| JUICE-UVS 593754 |  | SVT FM EEE April 17 Parts Lead Time | 92d | 2016-10-03 A | 2017-02-14 A | JUICE-UVS 593391 | 100% |  |
| JUICE-UVS 593766 |  | SVT FM EEE May 17 Parts Lead Time | 97d | 2016-10-03 A | 2017-02-21 A | JUICE-UVS 593391 | 100% |  |
| JUICE-UVS 593772 |  | SVT FM EEE June 17 Parts Lead Time | 121d | 2016-10-03 A | 2017-03-27 A | JUICE-UVS 593391 | 100% |  |
| JUICE-UVS 593778 |  | SVT FM EEE July 17 Parts Lead Time | 157d | 2016-10-03 A | 2017-05-16 A | JUICE-UVS 593391 | 100% |  |
| JUICE-UVS 593784 |  | SVT FM EEE Aug 17 Parts Lead Time | 176d | 2016-10-03 A | 2017-06-14 A | JUICE-UVS 593391 | 100% |  |
| JUICE-UVS 593796 |  | SVT FM EEE Sep 17 Parts Lead Time | 189d | 2016-10-31 A | 2017-08-01 A | JUICE-UVS 593391 | 100% |  |
| JUICE-UVS 593499 |  | FM EEE Dec 16 Delivery | 1d | 2016-12-06 A | 2016-12-06 A | JUICE-UVS 593712 | 100% |  |
| JUICE-UVS 593715 |  | FM EEE Dec 16 Material Task Receipt | 0d | 2016-12-06 A | 2016-12-06 A | JUICE-UVS 593499 | 100% |  |
| JUICE-UVS 593511 |  | FM EEE Jan 17 Delivery | 1d | 2017-01-12 A | 2017-01-12 A | JUICE-UVS 593718 | 100% |  |
| JUICE-UVS 593721 |  | FM EEE Jan 17 Material Task Receipt | 0d | 2017-01-12 A | 2017-01-12 A | JUICE-UVS 593511 | 100% |  |
| JUICE-UVS 593595 |  | FM EEE March 17 Delivery | 1d | 2017-02-08 A | 2017-02-08 A | JUICE-UVS 593742 | 100% |  |
| JUICE-UVS 593529 |  | FM EEE April 17 Delivery | 1d | 2017-02-15 A | 2017-02-15 A | JUICE-UVS 593754 | 100% |  |
| JUICE-UVS 593697 |  | FM EEE May 17 Delivery | 1d | 2017-02-22 A | 2017-02-22 A | JUICE-UVS 593766 | 100% |  |
| JUICE-UVS 593517 |  | FM EEE Feb 17 Delivery | 1d | 2017-03-07 A | 2017-03-07 A | JUICE-UVS 593730, JUICE-UVS 0023 | 100% |  |
| JUICE-UVS 593733 |  | FM EEE Feb 17 Material Task Receipt | 0d | 2017-03-07 A | 2017-03-07 A | JUICE-UVS 593517 | 100% |  |
| JUICE-UVS 593745 |  | FM EEE March 17 Material Receipt | 0d | 2017-03-09 A | 2017-03-09 A | JUICE-UVS 593595 | 100% |  |
| JUICE-UVS 593700 |  | FM EEE June 17 Delivery | 1d | 2017-03-28 A | 2017-03-28 A | JUICE-UVS 593772 | 100% |  |
| JUICE-UVS 593775 |  | FM EEE June 17 Material Task Receipt | 1d | 2017-03-29 A | 2017-03-29 A | JUICE-UVS 593700 | 100% |  |
| JUICE-UVS 593757 |  | FM EEE April 17 Material Task Receipt | 0d | 2017-04-12 A | 2017-04-12 A | JUICE-UVS 593529 | 100% |  |
| JUICE-UVS 593769 |  | FM EEE May 17 Material Task Receipt | 0d | 2017-05-16 A | 2017-05-16 A | JUICE-UVS 593697 | 100% |  |
| JUICE-UVS 593703 |  | FM EEE July 17 Delivery | 1d | 2017-05-17 A | 2017-05-17 A | JUICE-UVS 593778 | 100% |  |
| JUICE-UVS 593781 |  | FM EEE July 17 Material Task Receipt | 0d | 2017-05-17 A | 2017-05-17 A | JUICE-UVS 593703 | 100% |  |
| JUICE-UVS 593790 |  | FM EEE Aug 17 Delivery | 1d | 2017-06-15 A | 2017-06-15 A | JUICE-UVS 593784 | 100% |  |
| JUICE-UVS 593793 |  | FM EEE Aug 17 Material Task Receipt | 0d | 2017-06-15 A | 2017-06-15 A | JUICE-UVS 593790 | 100% |  |
| JUICE-UVS 3220 |  | FM LVPS/HVPS Magnetics Fab | 35d | 2017-06-26 A | 2017-08-14 A | JUICE-UVS 5076, JUICE-UVS 3214 | 100% |  |
| JUICE-UVS 593799 |  | FM EEE Sep 17 Delivery | 1d | 2017-08-02 A | 2017-08-02 A | JUICE-UVS 593796 | 100% |  |
| JUICE-UVS 593802 |  | FM EEE Sep 17 Material Task Receipt | 0d | 2017-08-02 A | 2017-08-02 A | JUICE-UVS 593799 | 100% |  |
|  | 02 | **C&DH Procurements** |  | 2017-08-14 | 2017-09-28 |  |  |  |
| JUICE-UVS 591264 |  | SVT FM C&DH PWB Lead Time | 10d | 2017-08-14 A | 2017-08-25 A | JUICE-UVS593964 | 100% |  |
| JUICE-UVS593964 |  | Procure FM C&DH PWB | 0d | 2017-08-14 A | 2017-08-14 A | JUICE-UVS 592740 | 100% |  |
| JUICE-UVS 591276 |  | FM C&DH PWB Delivery, Inspection, & Coupon Test | 10d | 2017-08-28 A | 2017-09-28 A | JUICE-UVS 591264 | 100% |  |
| JUICE-UVS 591288 |  | FM C&DH PWB Material Task Receipt | 0d | 2017-09-28 A | 2017-09-28 A | JUICE-UVS 591276 | 100% |  |
|  | 03 | **LVPS Procurements** |  | 2017-08-07 | 2017-10-12 |  |  |  |
| JUICE-UVS 591273 |  | SVT Procure FM LVPS PWB Lead Time | 18d | 2017-08-07 A | 2017-08-30 A | JUICE-UVS 591294 | 100% |  |
| JUICE-UVS 591294 |  | Procure FM LVPS PWB | 0d | 2017-08-07 A | 2017-08-07 A | JUICE-UVS 3277 | 100% |  |
| JUICE-UVS 591279 |  | FM LVPS PWB Delivery, Inspection, & Coupon Test | 29d | 2017-08-31 A | 2017-10-12 A | JUICE-UVS 591273 | 100% |  |
| JUICE-UVS 591300 |  | FM LVPS PWB Material Task Receipt | 0d | 2017-10-12 A | 2017-10-12 A | JUICE-UVS 591279 | 100% |  |
|  | 04 | **HVPS Procurement** |  | 2017-07-17 | 2017-10-12 |  |  |  |
| JUICE-UVS 591270 |  | SVT Procure FM HVPS PWBs | 10d | 2017-07-17 A | 2017-07-28 A | JUICE-UVS 591306 | 100% |  |
| JUICE-UVS 591306 |  | Procure FM HVPS PWBs | 0d | 2017-07-17 A | 2017-07-17 A | JUICE-UVS 3217 | 100% |  |
| JUICE-UVS 591267 |  | FM HVPS PWB Delivery, Inspection, & Coupon Test | 73d | 2017-07-31 A | 2017-10-12 A | JUICE-UVS 591270 | 100% |  |
| JUICE-UVS 591309 |  | FM HVPS PWB Material Task Receipt | 0d | 2017-10-12 A | 2017-10-12 A | JUICE-UVS 591267 | 100% |  |
|  | 05 | **Harness Procurement** |  | 2016-10-03 | 2019-05-28 |  |  |  |
| JUICE-UVS593835 |  | Harness Procurement | 0d | 2016-10-03 A | 2016-10-03 A | JUICE-UVS 0023 | 100% |  |
| JUICE-UVS593841 |  | SVT Procure Misc EEE and Harness Parts June 17 Lead Time | 92d | 2016-10-03 A | 2017-02-14 A | JUICE-UVS593835 | 100% |  |
| JUICE-UVS593844 |  | SVT Procure Misc EEE and Harness Parts July 17 Lead Time | 157d | 2016-10-03 A | 2017-05-16 A | JUICE-UVS593835 | 100% |  |
| JUICE-UVS593847 |  | SVT Procure Misc EEE and Harness Parts Aug 17 Lead Time | 212d | 2016-10-03 A | 2017-08-04 A | JUICE-UVS593835 | 100% |  |
| JUICE-UVS593850 |  | SVT Procure Long Lead FM Harness Parts Sep 17 Lead Time | 249d | 2016-10-03 A | 2017-09-28 A | JUICE-UVS593835 | 100% |  |
| JUICE-UVS593853 |  | SVT Procure Long Lead FM Harness Parts Oct 17 Lead Time | 289d | 2016-10-03 A | 2017-10-30 A | JUICE-UVS593835 | 100% |  |
| JUICE-UVS593856 |  | SVT Procure Long Lead FM Harness Parts Nov 17 Lead Time | 539d | 2016-10-03 A | 2019-05-28 | JUICE-UVS 3559, JUICE-UVS593835 | 100% | 2d |
| JUICE-UVS593859 |  | SVT Procure Long Lead FM Harness Parts Dec 17 Lead Time | 243d | 2016-10-03 A | 2017-09-20 A | JUICE-UVS593835 | 100% |  |

| ID | WBS | Task | Duration | Start | Finish | Predecessors | Complete | Total float | Constraint |
| --- | --- | --- | --- | --- | --- | --- | --- | --- | --- |
| JUICE-UVS593862 |  | Misc EEE and Harness Parts June 17 Delivery | 1d | 2017-02-15 A | 2017-02-15 A | JUICE-UVS593841 | 100% |  |  |
| JUICE-UVS 593246 |  | Misc EEE and Harness Parts June 17 Material Task Receipt | 0d | 2017-02-15 A | 2017-02-15 A | JUICE-UVS593862 | 100% |  |  |
| JUICE-UVS593865 |  | Misc EEE and Harness Parts July 17 Delivery | 1d | 2017-05-17 A | 2017-05-17 A | JUICE-UVS593844 | 100% |  |  |
| JUICE-UVS 593249 |  | Misc EEE and Harness Parts July 17 Material Task Receipt | 0d | 2017-05-17 A | 2017-05-17 A | JUICE-UVS593865 | 100% |  |  |
| JUICE-UVS 591261 |  | Misc EEE and Harness Parts Aug 17 Delivery | 1d | 2017-08-07 A | 2017-08-07 A | JUICE-UVS593847 | 100% |  |  |
| JUICE-UVS 593252 |  | Misc EEE and Harness Parts Aug 17 Material Task Receipt | 0d | 2017-08-07 A | 2017-08-07 A | JUICE-UVS 591261 | 100% |  |  |
| JUICE-UVS 593243 |  | Long Lead FM Harness Parts Dec 17 Delivery | 1d | 2017-09-21 A | 2017-09-21 A | JUICE-UVS593859 | 100% |  |  |
| JUICE-UVS 593264 |  | Long Lead FM Harness Parts Dec 17 Material Task Receipt | 0d | 2017-09-21 A | 2017-09-21 A | JUICE-UVS 593243 | 100% |  |  |
| JUICE-UVS 593298 |  | Long Lead FM Harness Parts Sep 17 Delivery | 1d | 2017-09-29 A | 2017-09-29 A | JUICE-UVS593850 | 100% |  |  |
| JUICE-UVS 593255 |  | Long Lead FM Harness Parts Sep 17 Material Task Receipt | 0d | 2017-09-29 A | 2017-09-29 A | JUICE-UVS 593298 | 100% |  |  |
| JUICE-UVS 593331 |  | Long Lead FM Harness Parts Oct 17 Delivery | 1d | 2017-11-22 A | 2017-11-22 A | JUICE-UVS593853 | 100% |  |  |
| JUICE-UVS 593258 |  | Long Lead FM Harness Parts Oct 17 Material Task Receipt | 0d | 2017-11-22 A | 2017-11-22 A | JUICE-UVS 593331 | 100% |  |  |
| JUICE-UVS 593340 |  | Long Lead FM Harness Parts Nov 17 Delivery | 1d | 2019-05-28 | 2019-05-28 | JUICE-UVS593856 |  | 66d | start on or after 2019-05-08 |
| JUICE-UVS 593261 |  | Long Lead FM Harness Parts Nov 17 Material Task Receipt | 0d | 2019-05-28 | 2019-05-28 | JUICE-UVS 593340 |  | 66d |  |
|  | 06 | **Backplane Procurements** |  | 2017-06-26 | 2017-09-06 |  |  |  |  |
| JUICE-UVS 3069 |  | SVT Procure FM Backplane PWB Lead Time | 1d | 2017-06-26 A | 2017-07-24 A | JUICE-UVS 3075 | 100% |  |  |
| JUICE-UVS 3075 |  | Procure FM Backplane | 0d | 2017-06-26 A | 2017-06-26 A | JUICE-UVS 3048 | 100% |  |  |
| JUICE-UVS 3070 |  | FM Backplane PWB Delivery, Inspection, & Coupon Test | 30d | 2017-07-25 A | 2017-09-06 A | JUICE-UVS 3069 | 100% |  |  |
| JUICE-UVS 3078 |  | FM Backplane Material Receipt Task | 0d | 2017-09-06 A | 2017-09-06 A | JUICE-UVS 3070 | 100% |  |  |
|  | 07 | **FM EE High Value Parts Procurement** |  | 2017-11-27 | 2018-11-21 |  |  |  |  |
| JUICE-UVS 594180 |  | High Value EE High Voltage Resistor Purchase Request # 17901433, PO # K21045KM | 1d | 2017-11-27 A | 2017-11-27 A | JUICE-UVS 3217 | 100% |  |  |
| JUICE-UVS 594192 |  | High Value EE Choke Inductor Purchase Request # 17901666, PO # K18410SRM | 1d | 2017-11-27 A | 2017-11-27 A | JUICE-UVS 3217 | 100% |  |  |
| JUICE-UVS 594183 |  | SVT High Value EE High Voltage Resistor Parts Procurement Lead Time | 21d | 2017-11-28 A | 2017-12-22 A | JUICE-UVS 594180 | 100% |  |  |
| JUICE-UVS 594195 |  | SVT High Value EE Choke Inductor Parts Procurement Dec 2017 Lead Time | 193d | 2017-11-28 A | 2018-11-19 A | JUICE-UVS 594192 | 100% |  |  |
| JUICE-UVS 594198 |  | SVT High Value EE Choke Inductor Feb 2018 Parts Procurement Lead Time | 193d | 2017-11-28 A | 2018-11-19 A | JUICE-UVS593856, JUICE-UVS 594192 | 100% |  |  |
| JUICE-UVS 594186 |  | High Value EE High Voltage Resistor Dec 2017 Delivery & Inspection | 1d | 2018-01-11 A | 2018-01-11 A | JUICE-UVS 594183 | 100% |  |  |
| JUICE-UVS 594189 |  | High Value EE High Voltage Resistor Dec 2017 Material Receipt Task | 0d | 2018-01-12 A | 2018-01-12 A | JUICE-UVS 594186 | 100% |  |  |
| JUICE-UVS 594201 |  | High Value EE Choke Inductor Dec 2017 Delivery & Inspection | 1d | 2018-11-20 A | 2018-11-20 A | JUICE-UVS 594195 | 100% |  |  |
| JUICE-UVS 594204 |  | High Value EE Choke Inductor Feb 2018 Delivery & Inspection | 1d | 2018-11-20 A | 2018-11-20 A | JUICE-UVS 594198 | 100% |  |  |
| JUICE-UVS 594207 |  | High Value EE Choke Inductor Dec 2017 Material Receipt Task | 0d | 2018-11-20 A | 2018-11-20 A | JUICE-UVS 594201 | 100% |  |  |
| JUICE-UVS 594210 |  | High Value EE Choke Inductor Feb 2018 Material Receipt Task | 0d | 2018-11-20 A | 2018-11-21 A | JUICE-UVS 594204 | 100% |  |  |
|  | 07 | **Electronics NCR Investigation/Resolution** |  | 2017-01-20 | 2017-02-16 |  |  |  |  |
|  | 01 | **EM LVPS AR-19190-4** |  | 2017-01-20 | 2017-02-16 |  |  |  |  |
| JUICE-UVS593967 |  | EM LVPS AR-19190-4 | 20d | 2017-01-20 A | 2017-02-16 A | JUICE-UVS 4022 SS | 100% |  |  |
|  | 08 | **EM Electrical** |  | 2017-03-08 | 2017-08-04 |  |  |  |  |
| JUICE-UVS 3146 |  | Update Harness Drawing | 40d | 2017-03-08 A | 2017-05-02 A | JUICE-UVS 0023 | 100% |  |  |
| JUICE-UVS 3143 |  | EM 1 Instrument Harness Fab | 27d | 2017-05-09 A | 2017-06-16 A | JUICE-UVS 3146 | 100% |  |  |
| JUICE-UVS 591897 |  | EM 2 Instrument Harness Fab | 34d | 2017-06-19 A | 2017-08-04 A | JUICE-UVS 3143 | 100% |  |  |
|  | 03 | **Detector/Optics** |  | 2016-10-03 | 2019-10-25 |  |  |  |  |
|  | 01 | **Detector** |  | 2016-10-03 | 2019-10-25 |  |  |  |  |
|  | 01 | **Detector SubC Mgmt** |  | 2016-10-03 | 2019-10-25 |  |  |  |  |
|  | 01 | **Detector SubC Mgmt** |  | 2016-10-03 | 2019-10-25 |  |  |  |  |
| JUICE-UVS 9012 |  | Detector Oversight & Spt Phase FY 17 Phase C Start | 250d | 2016-10-03 A | 2017-09-29 A | JUICE-UVS 0011 | 100% |  |  |
| JUICE-UVS 9015 |  | Detector Oversight & Spt Phase FY 18 | 355d | 2017-10-02 A | 2019-10-25 | JUICE-UVS 9012 | 70% | 726d |  |
|  | 02 | **Discrete SubC Mgmt** |  | 2017-01-11 | 2017-01-13 |  |  |  |  |
| JUICE-UVS 9027 |  | Detector CDR Mtg - OSSY | 3d | 2017-01-11 A | 2017-01-13 A | JUICE-UVS 0023 | 100% |  |  |
|  | 02 | **Detector FM** |  | 2017-01-11 | 2019-02-05 |  |  |  |  |
| JUICE-UVS 9063 |  | Update Det Elec. Layouts | 17d | 2017-01-11 A | 2017-02-02 A | JUICE-UVS 9054 | 100% |  |  |
| JUICE-UVS 9066 |  | Update & Release Final FM Detector Electronics Parts List | 68d | 2017-01-11 A | 2017-04-14 A | JUICE-UVS 9054 | 100% |  |  |
| JUICE-UVS 9069 |  | FM Det Elec. Final Design Review | 1d | 2017-02-03 A | 2017-02-03 A | JUICE-UVS 9063 FF | 100% |  |  |
| JUICE-UVS 9072 |  | Detector Elec Fab PWB (SwRI) x2 | 80d | 2017-05-18 A | 2017-09-13 A | JUICE-UVS 592605, JUICE-UVS 9069 | 100% |  |  |
| JUICE-UVS 9033 |  | Hand Carry DET Elec. to Ossy for Initial Testing | 55d | 2017-09-14 A | 2017-12-01 A | JUICE-UVS 9072 | 100% |  |  |
| JUICE-UVS 9036 |  | Pick up DET elect. for Stake & Coat | 25d | 2018-03-02 A | 2018-04-06 A | JUICE-UVS 9105 | 100% |  |  |
| JUICE-UVS 9075 |  | Install Flight FPGA & final SAT resistors (SwRI) | 5d | 2018-04-06 A | 2018-04-12 A | JUICE-UVS 9057, JUICE-UVS 9036 | 100% |  |  |
| JUICE-UVS 9108 |  | Test DET Elect. FPGAs & SAT resistors w/C&DH | 5d | 2018-04-13 A | 2018-04-19 A | JUICE-UVS 9075 | 100% |  |  |
| JUICE-UVS 9090 |  | Disassemble & Conf-Coat/Stake FM Det Elec. (SwRI) | 5d | 2018-04-20 A | 2018-04-26 A | JUICE-UVS 9108 | 100% |  |  |
| JUICE-UVS 9039 |  | Hand Carry Det. Elect. to Ossy for Final testing | 9d | 2018-04-27 A | 2018-05-10 A | JUICE-UVS 9090 | 100% |  |  |
| JUICE-UVS 9081 |  | Pick-Up Of Completed Det & Det Electronincs | 49d | 2018-06-11 A | 2018-08-20 A | JUICE-UVS 9102, JUICE-UVS593961, JUICE-UVS 11685, JUICE-UVS 11688 | 100% |  |  |
| JUICE-UVS 9132 |  | Install Flight FPGA & final SAT resistors (SwRI) - FS | 5d | 2018-08-21 A | 2018-08-23 A | JUICE-UVS 9162 | 100% |  |  |
| JUICE-UVS 9147 |  | Disassemble & Conf-Coat/Stake FM Det Elec. (SwRI) - FS | 5d | 2018-08-22 A | 2018-08-28 A | JUICE-UVS 9132 | 100% |  |  |
| JUICE-UVS 9156 |  | FS Detector fabrication complete | 1d | 2018-08-29 A | 2018-08-29 A | JUICE-UVS 9147 | 100% |  |  |
| JUICE-UVS 9150 |  | Ship to OSSY (SwRI) - FS | 2d | 2019-02-04 A | 2019-02-05 A | JUICE-UVS 9156 | 100% |  | start on or after 2019-02-04 |
|  | 03 | **Detector SubContracts & Milestone Payment Schedule** |  | 2016-10-03 | 2019-02-26 |  |  |  |  |
| JUICE-UVS 593677 |  | Start of Phase C | 0d | 2016-10-03 A | 2016-10-03 A | JUICE-UVS 0023 | 100% |  |  |
| JUICE-UVS3097 |  | FM Detector Sub Contract FY 17 | 250d | 2016-10-03 A | 2017-09-29 A | JUICE-UVS 0023 | 100% |  |  |
| JUICE-UVS 9054 |  | Update FM Det. Elec. Schematic | 10d | 2016-12-27 A | 2017-01-10 A | JUICE-UVS 9027 | 100% |  |  |
| JUICE-UVS 593682 |  | Order placed for procurement of other long-lead items Milestone Payment 14 | 1d | 2017-01-16 A | 2017-01-16 A | JUICE-UVS 593677 | 100% |  |  |
| JUICE-UVS 9045 |  | FM Detector Fabrication | 95d | 2017-01-16 A | 2017-05-30 A | JUICE-UVS 9027 | 100% |  |  |
| JUICE-UVS593679 |  | Order placed for Procure MCPs Milestone Payment 13 | 1d | 2017-01-16 A | 2017-01-16 A | JUICE-UVS 9027 | 100% |  |  |
| JUICE-UVS 9060 |  | FM Detector Elect. Design Update Milestone Payment 15 | 1d | 2017-02-28 A | 2017-02-28 A | JUICE-UVS 9069 FF, JUICE-UVS 0023 | 100% |  |  |

| ID | WBS | Task | Duration | Start | Finish | Predecessors | Complete | Total float | Constraint |
| --- | --- | --- | --- | --- | --- | --- | --- | --- | --- |
| JUICE-UVS593685 |  | FM Detector Electronics Fabrication Complete Milestone Payment 16 | 1d | 2017-04-28 A | 2017-04-28 A | JUICE-UVS 0023 | 100% |  |  |
| JUICE-UVS 9048 |  | FM Detector Assembly | 90d | 2017-05-22 A | 2017-09-29 A | JUICE-UVS 9045, JUICE-UVS593679, JUICE-UVS 593682, JUICE-UVS 0023 | 100% |  |  |
| JUICE-UVS593688 |  | FM Detector Fabrication Complete Milestone Payment 17 | 1d | 2017-06-16 A | 2017-06-16 A | JUICE-UVS593685, JUICE-UVS 0023 | 100% |  |  |
| JUICE-UVS593715 |  | JUICE-UVS CDR Milestone Payment 19 | 1d | 2017-09-15 A | 2017-09-15 A | JUICE-UVS593712, JUICE-UVS 0023 | 100% |  |  |
| JUICE-UVS 9057 |  | Update FM Det. Elec. FPGAs | 52d | 2017-09-18 A | 2017-11-30 A | JUICE-UVS 9054, JUICE-UVS 9033 | 100% |  |  |
| JUICE-UVS 9084 |  | Assemble Det. Elect. (Ossy) | 16d | 2017-09-18 A | 2017-10-09 A | JUICE-UVS 9033 | 100% |  |  |
| JUICE-UVS593712 |  | FM Detector Assembly Complete Milestone Payment 18 | 1d | 2017-09-29 A | 2017-09-29 A | JUICE-UVS 9048, JUICE-UVS593688, JUICE-UVS 0023 | 100% |  |  |
| JUICE-UVS 9042 |  | FM Detector Bench [Initial] Test [OSSY] | 38d | 2017-10-10 A | 2017-11-27 A | JUICE-UVS 9084 | 100% |  |  |
| JUICE-UVS 9096 |  | FM Detector Elect Func Test & Trim (Ossy) | 21d | 2017-11-27 A | 2018-01-17 A | JUICE-UVS 9048, JUICE-UVS 9042 | 100% |  |  |
| JUICE-UVS593691 |  | FS Detector Electronincs Fabrication Complete Milestone Payment 20 | 2d | 2017-12-12 A | 2017-12-13 A | JUICE-UVS593715, JUICE-UVS 0023 | 100% |  |  |
| JUICE-UVS 9078 |  | Install SAT Resistors (Ossy) | 3d | 2018-01-18 A | 2018-01-22 A | JUICE-UVS 9096 | 100% |  |  |
| JUICE-UVS 9105 |  | Functional Test Det./Det. Elec w/SATs (Ossy) | 30d | 2018-01-23 A | 2018-03-05 A | JUICE-UVS 9078 | 100% |  |  |
| JUICE-UVS593700 |  | FS Detector Fabrication complete Milestone Payment 21 | 1d | 2018-02-01 A | 2018-02-01 A | JUICE-UVS593691 FF, JUICE-UVS 0023 | 100% |  |  |
| JUICE-UVS 9087 |  | Final Elec Test & Single-Cycle Thermal Test Det Electronics (Ossy) | 20d | 2018-04-02 A | 2018-04-27 A | JUICE-UVS 9039 | 100% |  |  |
| JUICE-UVS 9141 |  | Assemble Det. Elect. (Ossy) - FS | 10d | 2018-05-29 A | 2018-06-11 A | JUICE-UVS 9087 | 100% |  |  |
| JUICE-UVS 9153 |  | FM Detector Elect Func Test & Trim (Ossy) - FS | 9d | 2018-06-12 A | 2018-06-22 A | JUICE-UVS 9141 | 100% |  |  |
| JUICE-UVS 9102 |  | Final FM Det/Det Elect. Integrated Test (OSSY) | 5d | 2018-06-25 A | 2018-06-29 A | JUICE-UVS 9087 | 100% |  |  |
| JUICE-UVS 9099 |  | Flight Detector Elec ready for I&T | 1d | 2018-08-06 A | 2018-08-06 A | JUICE-UVS 9081 | 100% |  |  |
| JUICE-UVS593697 |  | FS Detector Assembly Complete Milestone Payment 23 | 1d | 2018-08-21 A | 2018-08-21 A | JUICE-UVS 9153, JUICE-UVS 0023 | 100% |  |  |
| JUICE-UVS593718 |  | FM Detector & Electronics Delivered to SwRI Milestone Payment 22 | 1d | 2018-08-24 A | 2018-08-24 A | JUICE-UVS593700, JUICE-UVS 0023 | 100% |  |  |
| JUICE-UVS 9135 |  | Install SAT Resistors (Ossy) - FS | 3d | 2019-01-21 A | 2019-01-23 A | JUICE-UVS 9153 | 100% |  | start on or after 2019-01-21 |
| JUICE-UVS 9162 |  | Functional Test Det./Det. Elec w/SATs (Ossy) - FS | 5d | 2019-01-24 A | 2019-01-30 A | JUICE-UVS593697, JUICE-UVS3097, JUICE-UVS 9135 | 100% |  | start on or after 2018-11-12 |
| JUICE-UVS 9144 |  | Final Elec Test & Single-Cycle Thermal Test Det Electronics (Ossy) - FS | 10d | 2019-02-06 A | 2019-02-19 A | JUICE-UVS 9150 | 100% |  |  |
| JUICE-UVS 2469 |  | FS Detector & Detector Electronics Delivered to SwRI Milestone Payment 24 | 0.12d | 2019-02-20 A | 2019-02-20 A | JUICE-UVS 9159, JUICE-UVS 9099 | 100% |  | start on or after 2019-03-26 |
| JUICE-UVS 9159 |  | Final FS Det/Det Elect. Integrated Test (OSSY) - FS | 5d | 2019-02-20 A | 2019-02-26 A | JUICE-UVS 9144 | 100% |  |  |
|  | 04 | **Detector Procurements** |  | 2017-01-03 | 2018-04-30 |  |  |  |  |
| JUICE-UVS 11643 |  | SVT Detector Pump Station Procurement Lead Time | 335d | 2017-01-03 A | 2018-04-20 A | JUICE-UVS 594195, JUICE-UVS 593952 | 100% |  |  |
| JUICE-UVS 11682 |  | SVT Detector Light Source Procurement Lead Time | 269d | 2017-01-03 A | 2018-01-26 A | JUICE-UVS 593952 | 100% |  |  |
| JUICE-UVS 593952 |  | Detector Procurements | 0d | 2017-01-03 A | 2017-01-03 A | JUICE-UVS 593677 | 100% |  |  |
| JUICE-UVS593955 |  | SVT Detector EGSE Procurement Lead Time | 335d | 2017-01-03 A | 2018-04-30 A | JUICE-UVS 11643, JUICE-UVS 593952 | 100% |  |  |
| JUICE-UVS 9051 |  | FM Detector Elec. PWB Procurement | 18d | 2017-04-17 A | 2017-05-10 A | JUICE-UVS 9066 SS, JUICE-UVS 593952, JUICE-UVS 9069 | 100% |  |  |
| JUICE-UVS 592605 |  | Coupon Test DETE PWBs | 5d | 2017-05-11 A | 2017-05-17 A | JUICE-UVS 9051 | 100% |  |  |
| JUICE-UVS 11640 |  | Detector Light Source Procurement Delivery | 5d | 2018-01-29 A | 2018-02-02 A | JUICE-UVS 2030, JUICE-UVS 11682 | 100% |  |  |
| JUICE-UVS 11685 |  | Detector Light Source Material Task Receipt | 0d | 2018-02-02 A | 2018-02-02 A | JUICE-UVS 11640 | 100% |  |  |
| JUICE-UVS 11637 |  | Detector Pump Station Procurement Delivery | 1d | 2018-04-23 A | 2018-04-23 A | JUICE-UVS 2030, JUICE-UVS 11643 | 100% |  |  |
| JUICE-UVS 11688 |  | Detector Pump Station Material Task Receipt | 0d | 2018-04-23 A | 2018-04-23 A | JUICE-UVS 11637 | 100% |  |  |
| JUICE-UVS 593958 |  | Detector EGSE Procurement Delivery | 0.5d | 2018-04-30 A | 2018-04-30 A | JUICE-UVS 2030, JUICE-UVS593955 | 100% |  |  |
| JUICE-UVS593961 |  | Detector EGSE Material Task Receipt | 0d | 2018-04-30 A | 2018-04-30 A | JUICE-UVS 593958 | 100% |  |  |
|  | 02 | **Optics** |  | 2016-10-03 | 2018-10-12 |  |  |  |  |
|  | 01 | **Optics FM** |  | 2016-10-03 | 2018-10-12 |  |  |  |  |
| JUICE-UVS593886 |  | Procure FM Optics | 0d | 2016-10-03 A | 2016-10-03 A | JUICE-UVS 0023 | 100% |  |  |
| JUICE-UVS593889 |  | SVT Coat FM OAP/Gratings @ GSFC Lead Time | 400d | 2016-10-03 A | 2018-05-04 A | JUICE-UVS593886 | 100% |  |  |
| JUICE-UVS 9173 |  | Coat FM OAP/Gratings @ GSFC Delievery | 100d | 2018-05-07 A | 2018-10-12 A | JUICE-UVS593889 | 100% |  |  |
| JUICE-UVS 592998 |  | Coat FM OAP/Gratings Material Task Receipt | 0d | 2018-10-12 A | 2018-10-12 A | JUICE-UVS 9173 | 100% |  |  |
|  | 02 | **Optics Procurement** |  | 2016-10-03 | 2018-07-02 |  |  |  |  |
| JUICE-UVS593892 |  | SVT Procure Witness Sample Mirrors Lead Time | 434d | 2016-10-03 A | 2018-06-25 A | JUICE-UVS593886 | 100% |  |  |
| JUICE-UVS593895 |  | SVT Procure SP Mirror Lead Time | 434d | 2016-10-03 A | 2018-06-25 A | JUICE-UVS593886 | 100% |  |  |
| JUICE-UVS593898 |  | SVT FM OAP procurement (Fab/Test) (Nu-Tek) x2 Lead Time | 405d | 2016-10-03 A | 2018-04-30 A | JUICE-UVS593886 | 100% |  |  |
| JUICE-UVS 592989 |  | Receive FM Gratings x2 from LATMOS | 0d | 2018-02-01 A | 2018-02-01 A |  | 100% |  |  |
| JUICE-UVS 9194 |  | FM OAP procurement (Fab/Test) (Nu-Tek) x2 Delivery | 5d | 2018-05-14 A | 2018-05-18 A | JUICE-UVS 592989, JUICE-UVS593898 | 100% |  |  |
| JUICE-UVS 593013 |  | FM OAP (Fab/Test) (Nu-Tek) x2 Material Task Receipt | 0d | 2018-05-18 A | 2018-05-18 A | JUICE-UVS 9194 | 100% |  |  |
| JUICE-UVS 11511 |  | Procure SP Mirror Delivery | 5d | 2018-06-26 A | 2018-07-02 A | JUICE-UVS593895 | 100% |  |  |
| JUICE-UVS 9176 |  | Procure Witness Sample Mirrors Delivery | 5d | 2018-06-26 A | 2018-07-02 A | JUICE-UVS593892 | 100% |  |  |
| JUICE-UVS 593007 |  | Witness Sample Mirrors Material Task Receipt | 0d | 2018-07-02 A | 2018-07-02 A | JUICE-UVS 9176 | 100% |  |  |
| JUICE-UVS 593010 |  | SP Mirror Material Task Receipt | 0d | 2018-07-02 A | 2018-07-02 A | JUICE-UVS 11511 | 100% |  |  |
|  | 04 | **Flight Software** |  | 2016-10-03 | 2019-08-06 |  |  |  |  |
|  | 01 | **FSW Mgmt** |  | 2016-10-03 | 2019-07-01 |  |  |  |  |
| JUICE-UVS 3411 |  | S/W Configuration Mgmt Phase C/D FY 17 | 250d | 2016-10-03 A | 2017-09-29 A | JUICE-UVS 0011 | 100% |  |  |
| JUICE-UVS 3430 |  | SW Support/Clerical/Misc. Phase C/D FY 17 | 250d | 2016-10-03 A | 2017-09-29 A | JUICE-UVS 0011 | 100% |  |  |
| JUICE-UVS 3458 |  | SW Project Management/Meetings Phase C/D FY 17 | 250d | 2016-10-03 A | 2017-09-29 A | JUICE-UVS 0011 | 100% |  |  |
| JUICE-UVS 3461 |  | SW Project Management & Team Meetings Phase C/D FY 18 | 250d | 2017-10-02 A | 2018-09-28 A | JUICE-UVS 3458 | 100% |  |  |
| JUICE-UVS 3414 |  | S/W Configuration Mgmt Phase C/D FY 18 | 250d | 2017-10-02 A | 2018-09-28 A | JUICE-UVS 3411 | 100% |  |  |
| JUICE-UVS 3433 |  | SW Support/Clerical/Misc. Phase C/D FY 18 | 250d | 2017-10-02 A | 2018-09-28 A | JUICE-UVS 3430 | 100% |  |  |
| JUICE-UVS 3417 |  | S/W Configuration Mgmt Phase C/D FY 19 | 105d | 2018-10-01 A | 2019-07-01 | JUICE-UVS 3414 | 76% | 63d |  |
| JUICE-UVS 3464 |  | SW Project Management & Team Meetings Phase C/D FY 19 | 105d | 2018-10-01 A | 2019-07-01 | JUICE-UVS 3461, JUICE-UVS594216 | 80% | 63d |  |
| JUICE-UVS 592839 |  | SW Support/Clerical/Misc. Phase C/D FY 19 | 105d | 2018-10-01 A | 2019-07-01 | JUICE-UVS 3433 | 76% | 63d |  |
|  | 02 | **FSW SE** |  | 2016-10-03 | 2019-06-28 |  |  |  |  |
| JUICE-UVS 3413 |  | S/W Peer Reviews Phase C/D FY 17 | 64d | 2016-10-03 A | 2017-01-05 A | JUICE-UVS 0011 | 100% |  |  |
| JUICE-UVS 3415 |  | S/W Project Review Meetings (PDR, CDR, etc.) FY 17 | 64d | 2016-10-03 A | 2017-01-05 A | JUICE-UVS 0011 | 100% |  |  |
| JUICE-UVS 3416 |  | S/W Peer Reviews Phase C/D FY 17 | 186d | 2017-01-06 A | 2017-09-29 A | JUICE-UVS 3413 | 100% |  |  |

| ID | WBS | Task | Duration | Start | Finish | Predecessors | Complete | Total float | Constraint |
| --- | --- | --- | --- | --- | --- | --- | --- | --- | --- |
| JUICE-UVS 3418 |  | S/W Project Review Meetings (PDR, CDR, etc.) FY 17 | 186d | 2017-01-06 A | 2017-09-29 A | JUICE-UVS 3415 | 100% |  |  |
| JUICE-UVS 3419 |  | S/W Peer Reviews Phase C/D FY 18 | 250d | 2017-10-02 A | 2018-09-28 A | JUICE-UVS 3416 | 100% |  |  |
| JUICE-UVS 3421 |  | S/W Project Review Meetings (PDR, CDR, etc.) FY 18 | 250d | 2017-10-02 A | 2018-09-28 A | JUICE-UVS 3418 | 100% |  |  |
| JUICE-UVS 3422 |  | S/W Peer Reviews Phase C/D FY 19 | 105d | 2018-10-01 A | 2019-04-19 A | JUICE-UVS 3419 | 100% |  |  |
| JUICE-UVS 3427 |  | S/W Project Review Meetings (PDR, CDR, etc.) FY 19 | 105d | 2018-10-01 A | 2019-06-28 | JUICE-UVS 3421 | 77% | 64d |  |
|  | 03 | **FSW Build 1 (EM)** |  | 2016-12-28 | 2017-03-01 |  |  |  |  |
| JUICE-UVS 593664 |  | SW Simulator Setup Phase C | 18d | 2016-12-28 A | 2017-01-23 A | JUICE-UVS 0023 | 100% |  |  |
| JUICE-UVS 592413 |  | Build 1 Version Description Document (VDD) | 34d | 2017-01-13 A | 2017-03-01 A | JUICE-UVS 593664 SS | 100% |  |  |
| JUICE-UVS 592422 |  | Build 1 SW Delivery | 0d | 2017-02-27 A | 2017-02-27 A | JUICE-UVS 593664 | 100% |  |  |
|  | 04 | **FSW Build 2 (EM)** |  | 2017-03-01 | 2017-10-11 |  |  |  |  |
| JUICE-UVS 592491 |  | S/W Build 2 Code (EM TM/TC) Phase 1 | 41d | 2017-03-01 A | 2017-04-26 A | JUICE-UVS 592422, JUICE-UVS594024 FF | 100% |  |  |
| JUICE-UVS 592734 |  | SW Simulator Complete Functionality Phase 1 | 26d | 2017-03-01 A | 2017-04-05 A | JUICE-UVS 592491 SS | 100% |  |  |
| JUICE-UVS 593376 |  | SW Simulator Complete Functionality Phase 2 | 25d | 2017-04-05 A | 2017-05-09 A | JUICE-UVS 592734 | 100% |  |  |
| JUICE-UVS 20214 |  | S/W Build 2 Code (EM TM/TC) Phase 2 | 55d | 2017-04-26 A | 2017-07-14 A | JUICE-UVS 592491 | 100% |  |  |
| JUICE-UVS 20211 |  | S/W Build 2 Test (EM TM/TC) | 100d | 2017-05-17 A | 2017-10-10 A | JUICE-UVS594027, JUICE-UVS 593376 FF, JUICE-UVS 20214 FF | 100% |  |  |
| JUICE-UVS 20217 |  | Build 2 Version Description Document (VDD) | 4.5d | 2017-10-04 A | 2017-10-10 A | JUICE-UVS 20211 FF | 100% |  |  |
| JUICE-UVS 20223 |  | Build 2 SW Delivery | 0d | 2017-10-11 A | 2017-10-11 A | JUICE-UVS 20217, JUICE-UVS 20211 | 100% |  |  |
|  | 05 | **FSW Build 3 (EM)** |  | 2017-10-11 | 2019-07-26 |  |  |  |  |
| JUICE-UVS 3424 |  | S/W Build 3 Code (Full EM Integration) Phase 1 | 52d | 2017-10-11 A | 2017-12-27 A | JUICE-UVS 20211, JUICE-UVS 20223 FF | 100% |  |  |
| JUICE-UVS 3434 |  | S/W Build 3 Test (Full EM Integration) Phase 1 | 27d | 2017-12-19 A | 2018-01-29 A | JUICE-UVS 592494 FF, JUICE-UVS594030 | 100% |  |  |
| JUICE-UVS 592494 |  | S/W Build 3 Code (Full EM Integration) Phase 2 | 101d | 2017-12-19 A | 2018-05-14 A | JUICE-UVS 10714, JUICE-UVS 3424 | 100% |  |  |
| JUICE-UVS 592497 |  | S/W Build 3 Test (Full EM Integration) Phase 2 | 107d | 2018-02-06 A | 2018-07-10 A | JUICE-UVS 3434 | 100% |  |  |
| JUICE-UVS 3454 |  | ATP Dry Run on EM (Multiple Runs) Phase 1 | 28d | 2018-06-11 A | 2018-07-19 A | JUICE-UVS 592497 FF | 100% |  |  |
| JUICE-UVS 592500 |  | ATP Dry Run on EM (Multiple Runs) Phase 2 | 38d | 2018-07-20 A | 2018-09-13 A | JUICE-UVS 10711, JUICE-UVS 592473 FF, JUICE-UVS 3454 | 100% |  |  |
| JUICE-UVS 3457 |  | ATP Run for Score on EM + Test Report | 41d | 2018-09-27 A | 2019-01-07 A | JUICE-UVS 592500 | 100% |  |  |
| JUICE-UVS 592746 |  | Build 3 SW Delivery | 0.5d | 2019-01-08 A | 2019-01-08 A | JUICE-UVS 3457 | 100% |  |  |
| JUICE-UVS 3437 |  | FSW Design Document (As Build) Phase 1 | 43d | 2019-01-08 A | 2019-06-27 | JUICE-UVS 592746 | 50% | 24d |  |
| JUICE-UVS 3493 |  | Build 3 Version Description Document (VDD) | 1.5d | 2019-05-31 | 2019-05-31 | JUICE-UVS 3457 |  | 29d | start on or after 2019-05-31 |
| JUICE-UVS11520 |  | SW User Manual Phase 1 | 15d | 2019-05-31 | 2019-06-20 | JUICE-UVS 592746, JUICE-UVS 3496 |  | 29d | start on or after 2019-02-04 |
| JUICE-UVS 593379 |  | SW User Manual Phase 2 | 20d | 2019-06-21 | 2019-07-19 | JUICE-UVS11520 |  | 29d |  |
| JUICE-UVS 592503 |  | FSW Design Document (As Build) Phase 2 | 20d | 2019-06-28 | 2019-07-26 | JUICE-UVS 3437 |  | 24d |  |
|  | 06 | **FSW Build 4 (FM)** |  | 2019-05-31 | 2019-08-06 |  |  |  |  |
| JUICE-UVS 3426 |  | S/W Build 4 Code (FM I&T PROMs) | 22d | 2019-05-31 | 2019-07-01 | JUICE-UVS 592746 |  | 19d | start on or after 2019-05-31 |
| JUICE-UVS 3435 |  | S/W Build 4 Test (FM I&T PROMs) | 15d | 2019-07-02 | 2019-07-23 | JUICE-UVS 594225, JUICE-UVS 594228, JUICE-UVS 3426 |  | 19d |  |
| JUICE-UVS 592398 |  | ATP Dry Run on EM & FM | 5d | 2019-07-24 | 2019-07-30 | JUICE-UVS 10717, JUICE-UVS 15709, JUICE-UVS 3435 |  | 19d |  |
| JUICE-UVS 592401 |  | ATP Run for Score on FM + Test Report | 3d | 2019-08-01 | 2019-08-05 | JUICE-UVS 592398 FS+1d |  | 19d |  |
| JUICE-UVS 3495 |  | Build 4 Version Description Document (VDD) | 1d | 2019-08-06 | 2019-08-06 | JUICE-UVS 592401 |  | 38d |  |
| JUICE-UVS 592749 |  | Build 4 SW Delivery | 0d | 2019-08-06 | 2019-08-06 | JUICE-UVS 592401 |  | 19d |  |
|  | 07 | **GSW** |  | 2017-02-27 | 2019-04-26 |  |  |  |  |
| JUICE-UVS 592473 |  | Write Test Scripts (ATP on EM) Final | 342d | 2017-02-27 A | 2018-07-06 A | JUICE-UVS 592734 SS | 100% |  |  |
| JUICE-UVS 3496 |  | Update Test Scripts (ATP on FM) | 22d | 2018-10-26 A | 2019-04-26 A | JUICE-UVS 592473, JUICE-UVS 3493 | 100% |  |  |
|  | 08 | **TM/TC Database Definitions: SIS Usage & SC Operations** |  | 2017-03-10 | 2019-07-30 |  |  |  |  |
| JUICE-UVS593985 |  | Translate TM definitions into ESA-defined format | 21d | 2017-03-10 A | 2017-04-07 A | JUICE-UVS 592422 | 100% |  |  |
| JUICE-UVS593988 |  | Translate TC definitions into ESA-defined format | 21d | 2017-04-07 A | 2017-05-05 A | JUICE-UVS593985 | 100% |  |  |
| JUICE-UVS593991 |  | Incorporate all initial values, calibration parameters, etc into database | 10d | 2017-04-28 A | 2017-05-11 A | JUICE-UVS593988 | 100% |  |  |
| JUICE-UVS593994 |  | Database Verification with ESA-specified public-domain tool | 10d | 2017-05-12 A | 2017-05-25 A | JUICE-UVS593991 | 100% |  |  |
| JUICE-UVS593997 |  | Initial DB release for ESA/Airbus review | 0d | 2017-05-30 A | 2017-05-30 A | JUICE-UVS593994 | 100% |  |  |
| JUICE-UVS594000 |  | SVT Airbus Review | 10d | 2017-05-30 A | 2017-06-12 A | JUICE-UVS593997 | 100% |  |  |
| JUICE-UVS594003 |  | Incorporate feedback from Airbus/ESA | 15d | 2017-06-13 A | 2017-07-03 A | JUICE-UVS594000 | 100% |  |  |
| JUICE-UVS594009 |  | Test DB & Update database with FM Calibration Parameters | 24d | 2018-10-22 A | 2019-07-01 | JUICE-UVS 15709, JUICE-UVS594003 |  | 23d |  |
| JUICE-UVS594012 |  | DB release for ESA/Airbus Review | 0d | 2019-07-01 | 2019-07-01 | JUICE-UVS594009 |  | 23d |  |
| JUICE-UVS594015 |  | SVT Airbus Review | 10d | 2019-07-02 | 2019-07-16 | JUICE-UVS594012 |  | 23d |  |
| JUICE-UVS594018 |  | Incorporate feedback from Airbus/ESA | 10d | 2019-07-17 | 2019-07-30 | JUICE-UVS594015 |  | 23d |  |
|  | 09 | **SpaceWire Updated** |  | 2017-03-28 | 2017-09-29 |  |  |  |  |
| JUICE-UVS594021 |  | Receive Updated FPGA spec incoporating SpW changes | 0d | 2017-03-28 A | 2017-03-28 A |  | 100% |  |  |
| JUICE-UVS594024 |  | FSW Update (including SDD update) | 18d | 2017-03-29 A | 2017-04-21 A | JUICE-UVS594021 | 100% |  |  |
| JUICE-UVS594027 |  | Simulator + ATP doc update: | 28d | 2017-03-29 A | 2017-05-05 A | JUICE-UVS594021 | 100% |  |  |
| JUICE-UVS594030 |  | GSE + test scripts updates: | 128d | 2017-03-29 A | 2017-09-29 A | JUICE-UVS594021 | 100% |  |  |
|  | 10 | **EM GSE SW** |  | 2017-03-06 | 2017-11-22 |  |  |  |  |
| JUICE-UVS 10699 |  | GSE Countrate Screen | 13d | 2017-03-06 A | 2017-03-22 A | JUICE-UVS 592422 | 100% |  |  |
| JUICE-UVS 10702 |  | GSE Science Packet Decode-Histogram Reassembly | 11d | 2017-03-23 A | 2017-04-06 A | JUICE-UVS 10699 | 100% |  |  |
| JUICE-UVS 10705 |  | GSE Science Packet Decode-Pixellist Reassembly | 11d | 2017-03-23 A | 2017-04-06 A | JUICE-UVS 10699 | 100% |  |  |
| JUICE-UVS 10708 |  | GSE TM Check | 63d | 2017-04-07 A | 2017-07-07 A | JUICE-UVS 10702, JUICE-UVS 10705 | 100% |  |  |
| JUICE-UVS 10711 |  | GSE Science Packet Decode-Histogram Presentation | 159d | 2017-04-07 A | 2017-11-22 A | JUICE-UVS 10702, JUICE-UVS 10708 SS | 100% |  |  |
| JUICE-UVS 10717 |  | GSE Bug fixes (Ongoing) | 124d | 2017-05-30 A | 2017-11-22 A | JUICE-UVS 10699 SS | 100% |  |  |
| JUICE-UVS 10714 |  | GSE Science Packet Decode-Pixellist Presentation | 19d | 2017-06-26 A | 2017-07-21 A | JUICE-UVS 10705 | 100% |  |  |
|  | 11 | **SW Bug Fixes** |  | 2017-11-30 | 2019-05-31 |  |  |  |  |
| JUICE-UVS594216 |  | SW Bug Fixes | 248d | 2017-11-30 A | 2019-05-31 | JUICE-UVS 3411 | 98% | 63d |  |
|  | 12 | **SIS Testing** |  | 2018-04-30 | 2018-09-20 |  |  |  |  |
| JUICE-UVS 594219 |  | SIS Database Updates | 83d | 2018-04-30 A | 2018-08-28 A | JUICE-UVS 060 | 100% |  |  |

| ID | WBS | Task | Duration | Start | Finish | Predecessors | Complete | Total float |
| --- | --- | --- | --- | --- | --- | --- | --- | --- |
| JUICE-UVS 594222 |  | SIS Power-up Test with UVS | 33d | 2018-04-30 A | 2018-05-18 A | JUICE-UVS 060 | 100% |  |
| JUICE-UVS 594225 |  | SIS PUS-Services Scripts | 83d | 2018-05-22 A | 2018-09-20 A | JUICE-UVS 060 | 100% |  |
| JUICE-UVS 594228 |  | FFT/AFT Test Plan | 99d | 2018-09-04 A | 2018-09-20 A | JUICE-UVS 060 | 100% |  |
|  | 05 | **I&T** |  | 2016-10-03 | 2019-10-02 |  |  |  |
|  | 01 | **EM AI&T** |  | 2017-01-30 | 2019-08-14 |  |  |  |
|  | 01 | **EM Integration** |  | 2017-01-30 | 2018-02-02 |  |  |  |
|  | 01 | **EM #1 Integration** |  | 2017-01-30 | 2017-12-27 |  |  |  |
| JUICE-UVS 4022 |  | EM #1 Assembly | 98d | 2017-01-30 A | 2017-06-16 A | JUICE-UVS 592056 FF, JUICE-UVS 592065 FF, JUICE-UVS 31268 FF | 100% |  |
| JUICE-UVS 4024 |  | EM #1 Checkout | 7d | 2017-06-30 A | 2017-08-11 A | JUICE-UVS 4022, JUICE-UVS 592584 FF, JUICE-UVS593967, JUICE-UVS 3143 FF, JUICE-UVS 592413 | 100% |  |
| JUICE-UVS 4029 |  | EM #1 Final Housing Closeout | 92d | 2017-08-21 A | 2017-12-27 A | JUICE-UVS 4024 | 100% |  |
|  | 02 | **EM #2 Integration** |  | 2017-07-17 | 2018-02-02 |  |  |  |
| JUICE-UVS 4051 |  | EM #2 Assembly | 15d | 2017-07-17 A | 2017-08-04 A | JUICE-UVS 591810, JUICE-UVS 591897 SS, JUICE-UVS 591921, JUICE-UVS 591780 SS, JUICE-UVS 591876 | 100% |  |
| JUICE-UVS 4074 |  | EM 2 Optics Assy | 77d | 2017-09-28 A | 2018-01-15 A | JUICE-UVS 4051 | 100% |  |
| JUICE-UVS 4054 |  | EM #2 Checkout | 15d | 2018-01-16 A | 2018-01-29 A | JUICE-UVS 4074 | 100% |  |
| JUICE-UVS 4056 |  | EM # 2 Final Housing Closeout | 3d | 2018-01-30 A | 2018-02-02 A | JUICE-UVS 4054 | 100% |  |
|  | 02 | **Deleted Per BCR 35** |  |  |  |  |  |  |
|  | 01 | **Deleted Per BCR 34 (EM 1 Funct Test)** |  |  |  |  |  |  |
|  | 01 | **Deleted Per BCR 34** |  |  |  |  |  |  |
|  | 02 | **Deleted Per BCR 34-1** |  |  |  |  |  |  |
|  | 01 | **Deleted Per BCR 34** |  |  |  |  |  |  |
|  | 02 | **Deleted Per BCR 34-1** |  |  |  |  |  |  |
|  | 03 | **Deleted Per BCR 34-2** |  |  |  |  |  |  |
|  | 02 | **Deleted Per BCE 34** |  |  |  |  |  |  |
|  | 01 | **Deleted Per BCR 34-1** |  |  |  |  |  |  |
|  | 02 | **Deleted Per BCR 34-2** |  |  |  |  |  |  |
|  | 01 | **Deleted Per BCR 34** |  |  |  |  |  |  |
|  | 02 | **Deleted Per BCR 34-1** |  |  |  |  |  |  |
|  | 03 | **Deleted Per BCR 34** |  |  |  |  |  |  |
|  | 03 | **Deleted Per BCR 34** |  |  |  |  |  |  |
|  | 04 | **EM Environmental Test** |  | 2017-08-07 | 2019-08-14 |  |  |  |
|  | 01 | **EM I&T Management** |  | 2017-08-07 | 2018-09-28 |  |  |  |
| JUICE-UVS594053 |  | EM I&T Manangement FY 17 | 38d | 2017-08-07 A | 2017-09-29 A | JUICE-UVS 0011 | 100% |  |
| JUICE-UVS594168 |  | EM I&T Manangement FY 18 | 250d | 2017-10-02 A | 2018-09-28 A | JUICE-UVS594053 | 100% |  |
|  | 02 | **EM1 Environmental Test** |  | 2017-09-18 | 2019-07-01 |  |  |  |
|  | 01 | **EM1 Functional Test** |  | 2017-09-18 | 2017-09-21 |  |  |  |
| JUICE-UVS594063 |  | Top Assy Close-out | 1d | 2017-09-18 A | 2017-09-18 A | JUICE-UVS 4029 | 100% |  |
| JUICE-UVS594057 |  | Baseline Func Test | 3d | 2017-09-19 A | 2017-09-21 A | JUICE-UVS594063, JUICE-UVS 11499 | 100% |  |
|  | 02 | **EM1 EMI/EMC Test** |  | 2017-09-25 | 2018-09-28 |  |  |  |
|  | 01 | **EM1 EMI/EMC Test - Full Configuration** |  | 2017-09-25 | 2018-03-16 |  |  |  |
| JUICE-UVS594066 |  | Grounding /Bonding Isolation Test | 1d | 2017-09-25 A | 2017-09-25 A | JUICE-UVS594057, JUICE-UVS593991 | 100% |  |
| JUICE-UVS594069 |  | EM EMI/EMC Testing | 19d | 2017-09-26 A | 2017-10-20 A | JUICE-UVS594066 | 100% |  |
| JUICE-UVS594078 |  | Conduct EM UVS Magnetics Test | 5d | 2017-10-23 A | 2017-10-27 A | JUICE-UVS594069 | 100% |  |
| JUICE-UVS594081 |  | Collect Mag Test Data | 5d | 2017-10-30 A | 2017-11-03 A | JUICE-UVS594078 | 100% |  |
| JUICE-UVS594084 |  | Closeout As-Run Mag Test Proc/Report | 4d | 2017-11-13 A | 2017-11-16 A | JUICE-UVS594081 | 100% |  |
| JUICE-UVS594072 |  | Additional EMI/EMC Susceptibility | 5d | 2017-12-04 A | 2017-12-04 A | JUICE-UVS594078 | 100% |  |
| JUICE-UVS594087 |  | FSW LD Test | 5d | 2017-12-11 A | 2017-12-11 A | JUICE-UVS594072 | 100% |  |
| JUICE-UVS594075 |  | EMI/EMC Test Report | 53d | 2018-01-03 A | 2018-03-16 A | JUICE-UVS594090 FF, JUICE-UVS594084 | 100% |  |
| JUICE-UVS594090 |  | EM UVS Post EMI Full Functional Test | 16d | 2018-01-15 A | 2018-03-05 A | JUICE-UVS594087 | 100% |  |
|  | 02 | **EM1 Reconfiguration & Test for ESA** |  | 2018-03-08 | 2018-09-28 |  |  |  |
| JUICE-UVS594093 |  | Reconfigure EM 1 | 5d | 2018-03-08 A | 2018-03-14 A | JUICE-UVS594090, JUICE-UVS 20223 | 100% |  |
| JUICE-UVS594096 |  | Full Functional Test | 74d | 2018-03-15 A | 2018-06-28 A | JUICE-UVS594093 | 100% |  |
| JUICE-UVS594099 |  | EMI Test - CE/RE Only | 12d | 2018-06-29 A | 2018-07-17 A | JUICE-UVS594096 | 100% |  |
| JUICE-UVS594102 |  | Full Functional Test | 1d | 2018-07-18 A | 2018-07-18 A | JUICE-UVS594099 | 100% |  |
| JUICE-UVS594114 |  | EM1 FSW, SIS, Scripts Unit level testing | 20d | 2018-08-06 A | 2018-09-04 A | JUICE-UVS594120, JUICE-UVS594075, JUICE-UVS 3434 | 100% |  |
| JUICE-UVS594105 |  | Inspection & Physical Properties | 1d | 2018-09-05 A | 2018-09-28 A | JUICE-UVS594114 | 100% |  |
| JUICE-UVS594108 |  | Baseline Functional Test (3x Voltages) | 3d | 2018-09-06 A | 2018-09-07 A | JUICE-UVS594105 | 100% |  |
| JUICE-UVS594111 |  | Test Results Closeout Review | 1d | 2018-09-11 A | 2018-09-11 A | JUICE-UVS594108, JUICE-UVS594075 | 100% |  |
|  | 03 | **Prepare EM1 Data Package** |  | 2018-08-06 | 2018-09-19 |  |  |  |
| JUICE-UVS594117 |  | Acceptance Data Package Prep | 9d | 2018-08-06 A | 2018-08-16 A | JUICE-UVS594102 | 100% |  |
| JUICE-UVS594123 |  | SVT ADP Review | 0d | 2018-08-06 A | 2018-08-06 A | JUICE-UVS594120 | 100% |  |
| JUICE-UVS594120 |  | Submit ADP to ESA | 1d | 2018-08-17 A | 2018-08-17 A | JUICE-UVS594117 | 100% |  |
| JUICE-UVS594126 |  | EM Delivery Review | 1d | 2018-09-12 A | 2018-09-12 A | JUICE-UVS594111, JUICE-UVS594123 | 100% |  |
| JUICE-UVS594129 |  | Respond to RIDS | 5d | 2018-09-13 A | 2018-09-19 A | JUICE-UVS594126 | 100% |  |
| JUICE-UVS594132 |  | Schedule Margin | 0d | 2018-09-13 A | 2018-09-13 A | JUICE-UVS594126, JUICE-UVS 594222, JUICE-UVS 594219 | 100% |  |
|  | 04 | **EM1 Delivery** |  | 2018-09-13 | 2018-09-28 |  |  |  |
| JUICE-UVS594135 |  | Package, Ship Preparations, TSA Inspection prior to Boxing | 1d | 2018-09-13 A | 2018-09-13 A | JUICE-UVS594132 | 100% |  |
| JUICE-UVS594138 |  | Hand carry to ESA | 2d | 2018-09-14 A | 2018-09-17 A | JUICE-UVS594135 | 100% |  |
| JUICE-UVS594141 |  | Field Support | 5d | 2018-09-27 A | 2018-09-28 A | JUICE-UVS594129, JUICE-UVS 098 | 100% |  |
|  | 05 | **EM/FM I&T Anomaly Resolution** |  | 2017-11-27 | 2019-07-01 |  |  |  |
| JUICE-UVS594213 |  | EM/FM I&T Anomaly Resolution | 251d | 2017-11-27 A | 2019-07-01 | JUICE-UVS594053 | 90% | 42d |

| ID | WBS | Task | Duration | Start | Finish | Predecessors | Complete | Total float | Constraint |
| --- | --- | --- | --- | --- | --- | --- | --- | --- | --- |
|  | 03 | **EM2 Final Integration** |  | 2018-02-27 | 2019-08-14 |  |  |  |  |
|  | 01 | **EM2 Final Assembly/Testing** |  | 2018-02-27 | 2019-08-13 |  |  |  |  |
| JUICE-UVS594144 |  | Final Mechanism Assembly | 5d | 2018-02-27 A | 2018-03-05 A | JUICE-UVS 4056 | 100% |  |  |
| JUICE-UVS594147 |  | Optics Assembly/Alignment | 82d | 2018-03-06 A | 2018-06-29 A | JUICE-UVS594144 | 100% |  |  |
| JUICE-UVS594150 |  | Detector/DETE AI&T | 57d | 2018-07-02 A | 2018-11-09 A | JUICE-UVS594147 | 100% |  |  |
| JUICE-UVS594153 |  | Optical GSE Bracket Assembly | 10d | 2018-08-20 A | 2018-11-26 A | JUICE-UVS594150 | 100% |  |  |
| JUICE-UVS594156 |  | Integrate Electronics | 5d | 2018-11-21 A | 2018-11-29 A | JUICE-UVS594093, JUICE-UVS594153 | 100% |  |  |
| JUICE-UVS594159 |  | Full Functional Test | 5d | 2018-11-30 A | 2018-12-06 A | JUICE-UVS594156 | 100% |  |  |
| JUICE-UVS594162 |  | End-to-End Bench Test | 5d | 2019-07-31 | 2019-08-06 | JUICE-UVS594159 |  | 16d | start on or after 2019-07-31 |
| JUICE-UVS594177 |  | CAL & Test Report | 10d | 2019-07-31 | 2019-08-13 | JUICE-UVS594159 |  | 11d | start on or after 2019-07-31 |
|  | 02 | **EM2 Delivery to FSW** |  | 2019-08-14 | 2019-08-14 |  |  |  |  |
| JUICE-UVS594165 |  | EM2 Delivery to FSW | 1d | 2019-08-14 | 2019-08-14 | JUICE-UVS594177, JUICE-UVS594162 |  | 11d |  |
|  | 02 | **FM AI&T** |  | 2018-03-29 | 2019-10-02 |  |  |  |  |
|  | 01 | **Integrate Optics & Detector** |  | 2018-03-29 | 2019-02-07 |  |  |  |  |
| JUICE-UVS 5781 |  | Bake-out #1 Housing | 62d | 2018-03-29 A | 2018-06-26 A | JUICE-UVS 2622 | 100% |  |  |
| JUICE-UVS 5790 |  | Bake-out #2 Additional Components | 5d | 2018-06-26 A | 2018-07-02 A | JUICE-UVS 2682, JUICE-UVS 5781, JUICE-UVS 2660 | 100% |  |  |
| JUICE-UVS 5799 |  | Bench Test Detector | 3d | 2018-08-06 A | 2018-08-08 A | JUICE-UVS 9099, JUICE-UVS593718 | 100% |  |  |
| JUICE-UVS 5784 |  | Bake-out #3 Housing | 3d | 2018-08-30 A | 2018-09-05 A | JUICE-UVS 5790 | 100% |  |  |
| JUICE-UVS 5778 |  | Assemble Housing | 20d | 2018-09-06 A | 2018-10-03 A | JUICE-UVS 5784, JUICE-UVS 11679, JUICE-UVS593838, JUICE-UVS 593901, JUICE-UVS593904, JUICE-UVS593907 | 100% |  |  |
| JUICE-UVS 5805 |  | Actuator & wiring clean-up | 6d | 2018-09-26 A | 2018-10-03 A | JUICE-UVS 5778 FF | 100% |  |  |
| JUICE-UVS 5766 |  | TVAC Test FM Det Elec & Detector | 6d | 2018-10-01 A | 2018-10-08 A | JUICE-UVS 5799 | 100% |  |  |
| JUICE-UVS 5787 |  | Bake-out #4 Housing | 5d | 2018-11-12 A | 2018-11-16 A | JUICE-UVS 2674, JUICE-UVS593913, JUICE-UVS593910, JUICE-UVS593916, JUICE-UVS 592842, JUICE-UVS 2656, JUICE-UVS 5805 | 100% |  |  |
| JUICE-UVS 5757 |  | Install & Align OAP to Housing | 5d | 2018-11-27 A | 2018-12-03 A | JUICE-UVS 5787, JUICE-UVS 593007, JUICE-UVS 593013, JUICE-UVS 592998 | 100% |  |  |
| JUICE-UVS 5775 |  | Install & Align Grating to Housing | 5d | 2018-12-04 A | 2018-12-10 A | JUICE-UVS 5757, JUICE-UVS 592989 | 100% |  |  |
| JUICE-UVS 5793 |  | Bake-out #5 Housing | 0d | 2018-12-11 A | 2018-12-11 A | JUICE-UVS 5775 | 100% |  |  |
| JUICE-UVS 5808 |  | Bake-out #6 Housing | 0d | 2018-12-12 A | 2018-12-12 A | JUICE-UVS 5793, JUICE-UVS 5766 | 100% |  |  |
| JUICE-UVS 5811 |  | Integrate Detector | 3d | 2019-01-02 A | 2019-01-22 A | JUICE-UVS 15706, JUICE-UVS 592836, JUICE-UVS 593148, JUICE-UVS 5808 | 100% |  |  |
| JUICE-UVS 5844 |  | C&DH Flight FPGA Install | 5d | 2019-01-02 A | 2019-01-08 A | JUICE-UVS 594210, JUICE-UVS 594207, JUICE-UVS 592992, JUICE-UVS 3193 | 100% |  |  |
| JUICE-UVS 5802 |  | Install & Align SP to Housing | 3d | 2019-02-05 A | 2019-02-07 A | JUICE-UVS 5637, JUICE-UVS 593010 | 100% |  |  |
|  | 02 | **Integrate Electronics** |  | 2018-06-15 | 2019-05-29 |  |  |  |  |
| JUICE-UVS 15688 |  | Initial Electronics Integ (All Bds & Loads) | 41d | 2018-06-15 A | 2018-08-14 A | JUICE-UVS 5109, JUICE-UVS 3057, JUICE-UVS 592530, JUICE-UVS 3264 FF, JUICE-UVS 3198, JUICE-UVS 3286 | 100% |  |  |
| JUICE-UVS 15709 |  | Initial Test C&DH, LVPS, Loads | 10d | 2018-08-29 A | 2018-09-13 A | JUICE-UVS 15688 | 100% |  |  |
| JUICE-UVS 592992 |  | Disassemble Electronics | 1d | 2018-10-04 A | 2018-10-05 A | JUICE-UVS 15709 | 100% |  |  |
| JUICE-UVS 15706 |  | Install Flight Harness to FM | 2d | 2018-11-20 A | 2018-11-21 A | JUICE-UVS 5103, JUICE-UVS 3298, JUICE-UVS 15688 | 100% |  |  |
| JUICE-UVS 5847 |  | C&DH Flight FPGA Test | 2d | 2019-01-09 A | 2019-01-10 A | JUICE-UVS 5844 | 100% |  |  |
| JUICE-UVS 5814 |  | C&DH Flight PROM Install | 2d | 2019-04-09 A | 2019-04-10 A | JUICE-UVS 5847, JUICE-UVS 592746 | 100% |  | start on or after 2019-04-09 |
| JUICE-UVS 5736 |  | Post Stake & Coat Functional Test (C&DH,LVPS,HVPS) | 2d | 2019-04-26 A | 2019-04-30 A | JUICE-UVS 5814 | 100% |  | start on or after 2019-04-26 |
| JUICE-UVS 5817 |  | C&DH Final QA Insp. & Stake & Coat | 2d | 2019-04-30 A | 2019-05-01 A | JUICE-UVS 5820 | 100% |  |  |
| JUICE-UVS 5820 |  | C&DH Flight PROM Test | 0d | 2019-04-30 A | 2019-04-30 A | JUICE-UVS 5736 | 100% |  |  |
| JUICE-UVS 15697 |  | Bakeout FM Elec | 3d | 2019-05-02 A | 2019-05-06 A | JUICE-UVS 5817, JUICE-UVS 3264 | 100% |  |  |
| JUICE-UVS 592995 |  | Final Electronics Integration | 2d | 2019-05-07 A | 2019-05-08 A | JUICE-UVS 15697 | 100% |  |  |
| JUICE-UVS 592548 |  | Install Heater Harness | 1d | 2019-05-22 A | 2019-05-22 A | JUICE-UVS 592545, JUICE-UVS 11655 | 100% |  | start on or after 2019-05-22 |
| JUICE-UVS 15712 |  | S/W Build 4 ATP (Run for Score on FM) | 1d | 2019-05-29 | 2019-05-29 | JUICE-UVS 592995 |  | 1d | start on or after 2019-05-29 |
|  | 03 | **FM Test** |  | 2019-01-23 | 2019-06-04 |  |  |  |  |
| JUICE-UVS 5637 |  | Final Alignment & Focus Tests w/Detector | 10d | 2019-01-23 A | 2019-02-05 A | JUICE-UVS 5811 | 100% |  | start on or after 2019-01-23 |
| JUICE-UVS 5850 |  | Baseline Func Test | 1d | 2019-05-30 | 2019-05-30 | JUICE-UVS 15712, JUICE-UVS 5802, JUICE-UVS 2030, JUICE-UVS 593258, JUICE-UVS 593264 |  | 1d |  |
| JUICE-UVS 5853 |  | Flight Ambient Actuator Test | 1d | 2019-05-31 | 2019-05-31 | JUICE-UVS 5850 |  | 1d |  |
| JUICE-UVS 15661 |  | Light Leak & Radiometric Alignment Test | 2d | 2019-06-03 | 2019-06-04 | JUICE-UVS 5853 |  | 1d |  |
|  | 04 | **FM Environmental Test** |  | 2019-06-05 | 2019-09-03 |  |  |  |  |
|  | 01 | **EMI/EMC Test** |  | 2019-06-05 | 2019-07-30 |  |  |  |  |
|  | 01 | **EMI/EMC Testing** |  | 2019-06-05 | 2019-07-11 |  |  |  |  |
| JUICE-UVS 5604 |  | Grounding/Bonding Isolation Test | 1d | 2019-06-05 | 2019-06-05 | JUICE-UVS 15661 |  | 1d |  |
| JUICE-UVS 5601 |  | FM EMI/EMC Testing | 10d | 2019-06-06 | 2019-06-19 | JUICE-UVS 11661, JUICE-UVS 5604 |  | 1d |  |
| JUICE-UVS 5610 |  | EMI/EMC Test Report | 15d | 2019-06-20 | 2019-07-11 | JUICE-UVS 5601 |  | 35d |  |
|  | 02 | **Magnetics Susceptibility Testing** |  | 2019-06-20 | 2019-07-30 |  |  |  |  |
| JUICE-UVS 5616 |  | Conduct FM UVS Magnetics Susceptibility & Cleanliness Tests | 7d | 2019-06-20 | 2019-06-28 | JUICE-UVS 11646, JUICE-UVS 5601 |  | 1d |  |
| JUICE-UVS 5625 |  | Collect Mag Test Data | 1d | 2019-07-01 | 2019-07-01 | JUICE-UVS 5616 |  | 22d |  |
| JUICE-UVS 5622 |  | Closeout As-Run Mag Test Proc/Report | 20d | 2019-07-02 | 2019-07-30 | JUICE-UVS 5625 |  | 22d |  |
|  | 03 | **Post EMI Functional Testing** |  | 2019-07-01 | 2019-07-02 |  |  |  |  |
| JUICE-UVS 15646 |  | Functional & Radiometric Bench Test | 2d | 2019-07-01 | 2019-07-02 | JUICE-UVS 5616 |  | 1d |  |
|  | 02 | **Vibe Test** |  | 2019-07-03 | 2019-07-22 |  |  |  |  |
| JUICE-UVS 593259 |  | Package & Move FM & GSE to Vibe Facility | 0.5d | 2019-07-03 | 2019-07-03 | JUICE-UVS 15646 |  | 1d |  |
| JUICE-UVS 6006 |  | Sensor Protoflight Vibe | 1d | 2019-07-03 | 2019-07-05 | JUICE-UVS 11619, JUICE-UVS 593259, JUICE-UVS 11649 |  | 1d |  |
| JUICE-UVS 15655 |  | UVS full functional test (post-vibe test) | 0.5d | 2019-07-05 | 2019-07-05 | JUICE-UVS 6006 |  | 1d |  |
| JUICE-UVS 6012 |  | UVS Ambient Actuator test (Full test A&B side, all actuators) | 0.5d | 2019-07-08 | 2019-07-08 | JUICE-UVS 15655 |  | 1d |  |
| JUICE-UVS 16021 |  | Post-Vibe optics alignment check | 2d | 2019-07-08 | 2019-07-10 | JUICE-UVS 6012 |  | 1d |  |
| JUICE-UVS 16009 |  | Detector Pumpdown (overnight pump) | 0d | 2019-07-10 | 2019-07-11 | JUICE-UVS 16021 |  | 1d |  |
| JUICE-UVS 15676 |  | End-to-End/Radiometric Test | 2d | 2019-07-11 | 2019-07-15 | JUICE-UVS 16009 |  | 1d |  |
| JUICE-UVS 15667 |  | Inspection & Physical Properties | 0.5d | 2019-07-15 | 2019-07-15 | JUICE-UVS 15676 |  | 1d |  |
| JUICE-UVS 15670 |  | Vibe Test Report | 5d | 2019-07-16 | 2019-07-22 | JUICE-UVS 15667 |  | 28d |  |

| ID | WBS | Task | Duration | Start | Finish | Predecessors | Complete | Total float | Constraint |
| --- | --- | --- | --- | --- | --- | --- | --- | --- | --- |
|  | 03 | **Thermal Test** |  | 2019-07-17 | 2019-08-06 |  |  |  |  |
| JUICE-UVS 592551 |  | Install Blankets | 1d | 2019-07-17 | 2019-07-17 | JUICE-UVS 592548, JUICE-UVS 15667 |  | 0d |  |
| JUICE-UVS 15685 |  | Thermal Vacuum Chamber Certification | 0d | 2019-07-17 | 2019-07-17 | JUICE-UVS 4352 |  | 0d | as late as possible |
| JUICE-UVS 6042 |  | Perform Safe-to-mate w/GSE cables | 0.5d | 2019-07-17 | 2019-07-17 | JUICE-UVS 11502, JUICE-UVS 15685 |  | 0d | as late as possible |
| JUICE-UVS 15679 |  | FM TVAC Instrument testing | 20d | 2019-07-17 | 2019-07-24 | JUICE-UVS 11652, JUICE-UVS 592533, JUICE-UVS 592551, JUICE-UVS 6042, JUICE-UVS593949, JUICE-UVS 592578 |  | 0d |  |
| JUICE-UVS 15682 |  | TVAC Test Report | 10d | 2019-07-24 | 2019-08-06 | JUICE-UVS 15679 |  | 17d |  |
| JUICE-UVS 16048 |  | Thermal Balance analysis & test correlation | 2d | 2019-07-24 | 2019-07-25 | JUICE-UVS 15679 |  | 25d |  |
| JUICE-UVS 16051 |  | Remove Blankets | 1d | 2019-07-24 | 2019-07-24 | JUICE-UVS 15679 |  | 0d |  |
|  | 04 | **FM Calibration & Pre-Delivery Testing** |  | 2019-07-25 | 2019-09-03 |  |  |  |  |
| JUICE-UVS 5577 |  | FM Sensor UV Calibration | 20d | 2019-07-25 | 2019-08-21 | JUICE-UVS 16051, JUICE-UVS 2178, JUICE-UVS 9159 |  | 0d |  |
| JUICE-UVS 5580 |  | Perform Radiometric_End-to-End Test | 2d | 2019-08-22 | 2019-08-23 | JUICE-UVS 5577 |  | 0d |  |
| JUICE-UVS 5586 |  | UVS Sensor NVRR test | 0.5d | 2019-08-26 | 2019-08-26 | JUICE-UVS 5580 |  | 0d |  |
| JUICE-UVS 5592 |  | Full Func Test | 1d | 2019-08-26 | 2019-08-27 | JUICE-UVS 5586 |  | 0d |  |
| JUICE-UVS 15583 |  | UVS final Visual Inspection, Black light | 0.5d | 2019-08-27 | 2019-08-27 | JUICE-UVS 5592 |  | 0d |  |
| JUICE-UVS 15595 |  | Cal Test Report | 2d | 2019-08-28 | 2019-08-29 | JUICE-UVS 15583 |  | 0d |  |
| JUICE-UVS 6036 |  | Photograph Instrument | 0.5d | 2019-08-28 | 2019-08-28 | JUICE-UVS 15583 |  | 1d |  |
| JUICE-UVS 16030 |  | Install final Red tag items | 0.5d | 2019-08-28 | 2019-08-28 | JUICE-UVS 6036 |  | 1d |  |
| JUICE-UVS 15589 |  | Test Results Closeout Review | 0d | 2019-09-03 | 2019-09-03 | JUICE-UVS 16048, JUICE-UVS 592503, JUICE-UVS 5622, JUICE-UVS 5610, JUICE-UVS 15670, JUICE-UVS 15682, JUICE-UVS 15595 |  | 0d |  |
| JUICE-UVS 16036 |  | Package, Ship preparations, TSA inspection prior to boxing up | 1d | 2019-09-03 | 2019-09-03 | JUICE-UVS 593261, JUICE-UVS594213, JUICE-UVS594165, JUICE-UVS 16030, JUICE-UVS 593379, JUICE-UVS 15589, JUICE-UVS 11664, JUICE-UVS 593472 |  | 0d |  |
|  | 05 | **FM Delivery** |  | 2019-09-04 | 2019-10-02 |  |  |  |  |
| JUICE-UVS 5607 |  | FM Schedule Margin | 20d | 2019-09-04 | 2019-10-01 | JUICE-UVS594018, JUICE-UVS 592749, JUICE-UVS 16036 |  | 0d |  |
| JUICE-UVS 5598 |  | FM JUICE-UVS Delivery | 0d | 2019-10-02 | 2019-10-02 | JUICE-UVS594810, JUICE-UVS594807, JUICE-UVS594804, JUICE-UVS594801, JUICE-UVS 593322 FF, JUICE-UVS 5607, JUICE-UVS 2469, JUICE-UVS 3495 |  | 0d |  |
|  | 03 | **E/MGSE AI&T** |  | 2016-11-16 | 2019-07-03 |  |  |  |  |
|  | 01 | **Electrical GSE** |  | 2016-11-16 | 2019-01-02 |  |  |  |  |
|  | 01 | **S/C Emulator & Power** |  | 2016-11-16 | 2016-11-17 |  |  |  |  |
| JUICE-UVS 11496 |  | S/C Emulator & Power | 2d | 2016-11-16 A | 2016-11-17 A | JUICE-UVS 0011 | 100% |  |  |
|  | 02 | **Cables** |  | 2017-06-07 | 2019-01-02 |  |  |  |  |
| JUICE-UVS 11499 |  | Rack GSE Cables | 20d | 2017-06-07 A | 2017-07-05 A | JUICE-UVS 3030b6 | 100% |  |  |
| JUICE-UVS 11502 |  | TVAC GSE Cables | 193d | 2018-02-26 A | 2019-01-02 A | JUICE-UVS 592475 | 100% |  |  |
|  | 02 | **Mechanical GSE** |  | 2018-02-05 | 2019-07-03 |  |  |  |  |
| JUICE-UVS 593178 |  | Lifting Handles Design | 2d | 2018-02-05 A | 2018-02-07 A | JUICE-UVS 2581 | 100% |  |  |
| JUICE-UVS 593172 |  | Vacuum Test Fixture Design | 2d | 2018-08-20 A | 2018-08-21 A | JUICE-UVS 2030 | 100% |  |  |
| JUICE-UVS 11652 |  | Vacuum Test Fixture Fab | 63d | 2018-08-24 A | 2019-05-31 | JUICE-UVS 593172 |  | 32d |  |
| JUICE-UVS 11619 |  | Lifting Handles Fab | 10d | 2019-01-14 A | 2019-01-25 A | JUICE-UVS 593178 | 100% |  |  |
| JUICE-UVS 593169 |  | Vibe Test Fixture Design | 7.2d | 2019-06-10 | 2019-06-19 | JUICE-UVS 2030 |  | 1d | as late as possible |
| JUICE-UVS 11649 |  | Vibe Test Fixture Fab | 10d | 2019-06-19 | 2019-07-03 | JUICE-UVS 593169 |  | 1d | as late as possible |
|  | 04 | **AI&T Procurements** |  | 2016-10-03 | 2019-05-21 |  |  |  |  |
| JUICE-UVS593868 |  | AI&T Procurements | 0d | 2016-10-03 A | 2016-10-03 A | JUICE-UVS 0023 | 100% |  |  |
| JUICE-UVS593871 |  | SVT Procure Heaters Lead Time | 543d | 2016-10-03 A | 2019-04-26 A | JUICE-UVS593868 | 100% |  |  |
| JUICE-UVS593874 |  | SVT Procure EGSE Lab Equipment Lead Time | 543d | 2016-10-03 A | 2019-04-12 A | JUICE-UVS593868 | 100% |  |  |
| JUICE-UVS593877 |  | SVT Shipping Cases Lead Time | 584d | 2016-10-03 A | 2019-04-26 A | JUICE-UVS593868 | 100% |  |  |
| JUICE-UVS 11517 |  | EGSE Lab Equipment Delivery | 1d | 2019-04-15 A | 2019-04-15 A | JUICE-UVS593874 | 100% |  |  |
| JUICE-UVS 11661 |  | EGSE Material Task Receipt | 0d | 2019-04-15 A | 2019-04-15 A | JUICE-UVS 11517 | 100% |  |  |
| JUICE-UVS 592467 |  | Heaters Delivery | 19d | 2019-05-01 A | 2019-05-21 A | JUICE-UVS593871 | 100% |  |  |
| JUICE-UVS11514 |  | Shipping Cases Delivery | 1d | 2019-05-01 A | 2019-05-01 A | JUICE-UVS593877 | 100% |  |  |
| JUICE-UVS 11664 |  | Shipping Cases Material Task Receipt | 0d | 2019-05-01 A | 2019-05-01 A | JUICE-UVS11514 | 100% |  |  |
| JUICE-UVS 11655 |  | Heater Material Task Receipt | 0d | 2019-05-21 A | 2019-05-21 A | JUICE-UVS 592467 | 100% |  |  |
|  | 07 | **Instrument Operations** |  | 2020-11-17 | 2022-09-21 |  |  |  |  |
|  | 01 | **Instrument Operations-1** |  | 2020-11-17 | 2022-09-21 |  |  |  |  |
|  | 01 | **Instrument Operations** |  | 2020-11-17 | 2022-09-21 |  |  |  |  |
| JUICE-UVS 592324 |  | Instruments Ops FY 21 | 217d | 2020-11-17 | 2021-09-30 | JUICE-UVS 0026 |  | 1d |  |
| JUICE-UVS 592599 |  | Instruments Ops FY 22 | 242d | 2021-10-01 | 2022-09-20 | JUICE-UVS 592324 |  | 1d |  |
| JUICE-UVS 5646 |  | JUICE-UVS Cruise/Interplanetary Transfer Sppt 2022 End of Phase D | 126d | 2022-03-22 | 2022-09-21 | JUICE-UVS 0057 |  | 0d |  |
| JUICE-UVS 5709 |  | JUICE-UVS Pre Launch | 52d | 2022-03-22 | 2022-06-03 | JUICE-UVS 0057 |  | 0d |  |
|  | 02 | **Delete Per BCR 38** |  |  |  |  |  |  |  |
|  | 01 | **Delete Per BCR 38** |  |  |  |  |  |  |  |
|  | 03 | **Delete Per BCR 38-1** |  |  |  |  |  |  |  |
|  | 01 | **Delete Per BCR 38** |  |  |  |  |  |  |  |
|  | 09 | **Ground Data System (SOC)** |  | 2016-10-03 | 2022-09-21 |  |  |  |  |
|  | 01 | **GDS Management** |  | 2016-10-03 | 2022-09-21 |  |  |  |  |
|  | 01 | **GDS Mgmt Phase C/D** |  | 2016-10-03 | 2018-05-25 |  |  |  |  |
| JUICE-UVS 11179 |  | SOC Support - FY 17 | 250d | 2016-10-03 A | 2017-09-29 A | JUICE-UVS 0011 | 100% |  |  |
| JUICE-UVS 11182 |  | SOC Support - FY 18 | 250d | 2017-10-02 A | 2018-05-25 A | JUICE-UVS 11179 | 100% |  |  |
| JUICE-UVS 11185 |  | SOC Support - FY 19 | 1d | 2018-05-24 A | 2018-05-24 A | JUICE-UVS 11182 | 100% |  |  |
| JUICE-UVS 11188 |  | SOC Support - FY 20 | 1d | 2018-05-24 A | 2018-05-24 A | JUICE-UVS 11185 | 100% |  |  |
| JUICE-UVS 11191 |  | SOC Support - FY 21 Start of Phase D | 1d | 2018-05-24 A | 2018-05-24 A | JUICE-UVS 11233 | 100% |  |  |
| JUICE-UVS 11233 |  | SOC Support - FY 21 End of Phase C | 1d | 2018-05-24 A | 2018-05-24 A | JUICE-UVS 11188 | 100% |  |  |
| JUICE-UVS 11236 |  | SOC Support - FY 22 End of Phase D | 1d | 2018-05-24 A | 2018-05-24 A | JUICE-UVS 11191 | 100% |  |  |
| JUICE-UVS 7980 |  | Data Management FY 18 | 1d | 2018-05-24 A | 2018-05-24 A | JUICE-UVS 11188, JUICE-UVS 0029 | 100% |  |  |
| JUICE-UVS 7983 |  | Data Management FY 18 | 1d | 2018-05-24 A | 2018-05-24 A | JUICE-UVS 7980 | 100% |  |  |

| ID | WBS | Task | Duration | Start | Finish | Predecessors | Complete | Total float | Constraint |
| --- | --- | --- | --- | --- | --- | --- | --- | --- | --- |
|  | 02 | **GDS Mgmt PP** |  | 2019-05-28 | 2022-09-21 |  |  |  |  |
| JUICE-UVS 594231 |  | SOC Support FY 19 -22 | 832d | 2019-05-28 | 2022-09-21 | JUICE-UVS 0011 |  | 0d | start on or after 2019-05-28 |
| JUICE-UVS 594240 |  | Data Management FY 21 - 22 | 419d | 2020-10-01 | 2022-06-03 | JUICE-UVS 0011 |  | 74d | start on or after 2020-10-01 |
|  | 02 | **GDS Development PP** |  | 2020-02-03 | 2021-10-29 |  |  |  |  |
| JUICE-UVS 593880 |  | GDS Purchase Request | 0d | 2020-02-03 | 2020-02-03 | JUICE-UVS 592908 |  | 289d | start on or after 2020-02-03 |
| JUICE-UVS 593883 |  | SVT GDS Procurement Lead Time | 54d | 2020-02-03 | 2020-04-16 | JUICE-UVS 593880 SS |  | 289d |  |
| JUICE-UVS 7990 |  | GDS Procurement Delivery | 5d | 2020-04-17 | 2020-04-23 | JUICE-UVS 593883 |  | 289d |  |
| JUICE-UVS 7993 |  | GDS Material Task Receipt | 0d | 2020-04-23 | 2020-04-23 | JUICE-UVS 7990 |  | 289d |  |
| JUICE-UVS 10600 |  | GDS Training, Integration & Test | 362d | 2020-11-16 | 2021-10-29 | JUICE-UVS 0014, JUICE-UVS 7993 |  | 148d |  |
| JUICE-UVS 593661 |  | GDS Software Development | 362d | 2020-11-16 | 2021-10-29 | JUICE-UVS 0014 |  | 148d |  |
|  | 03 | **Delete Per BCR 37** |  |  |  |  |  |  |  |
|  | 04 | **Delete Per BCR 37-1** |  |  |  |  |  |  |  |
|  | 10 | **System Integration & Test** |  | 2018-11-02 | 2022-09-21 |  |  |  |  |
|  | 01 | **Oversight, Planning/Procedures** |  | 2018-11-02 | 2022-09-21 |  |  |  |  |
| JUICE-UVS 5688 |  | EM Support @ ESTEC | 45d | 2018-11-02 A | 2019-07-01 | JUICE-UVS594138 | 60% | 453d | start on or after 2018-11-02 |
| JUICE-UVS 5685 |  | FM I&T Support @ ESTEC FY 19 | 145d | 2019-07-02 | 2020-01-30 | JUICE-UVS 5688 |  | 453d |  |
| JUICE-UVS 5700 |  | FM I&T Support @ ESTEC FY 20 | 169d | 2020-01-31 | 2020-09-30 | JUICE-UVS 5685 |  | 453d |  |
| JUICE-UVS 5703 |  | FM I&T Support @ ESTEC Complete | 0d | 2020-09-30 | 2020-09-30 | JUICE-UVS 5700 |  | 453d | finish on or after 2020-06-02 |
| JUICE-UVS 5691 |  | I&T Support @ Launch Site | 40d | 2022-07-26 | 2022-09-21 | JUICE-UVS 5703 |  | 0d | as late as possible |
| JUICE-UVS 5694 |  | STM Support @ ESTEC | 10d | 2022-09-08 | 2022-09-21 | JUICE-UVS 51067 |  | 0d | as late as possible |
|  | 02 | **AI&T Support** |  | 2019-10-02 | 2022-02-18 |  |  |  |  |
| JUICE-UVS 5010 |  | Spacecraft Functional Test Support | 250d | 2019-10-02 | 2020-09-29 | JUICE-UVS 089 |  | 147d |  |
| JUICE-UVS 5030 |  | Spacecraft Environmental Test Support | 247d | 2020-09-30 | 2021-09-24 | JUICE-UVS 5010 |  | 147d |  |
| JUICE-UVS 592563 |  | Additional Support FY 21 | 101d | 2020-09-30 | 2021-02-24 | JUICE-UVS 0029 |  | 293d |  |
| JUICE-UVS 592566 |  | Additional Support FY 21 | 100d | 2021-09-27 | 2022-02-18 | JUICE-UVS 592563, JUICE-UVS 5030 |  | 147d |  |
|  | 03 | **Ground Support Equipment** |  | 2021-08-02 | 2021-10-26 |  |  |  |  |
| JUICE-UVS 5050 |  | Launch Site I&T Spt | 20d | 2021-08-02 | 2021-08-27 | JUICE-UVS 0023 |  | 99d | as late as possible |
| JUICE-UVS 5060 |  | Prep for Commissioning & Post-Launch Checkout | 40d | 2021-08-30 | 2021-10-26 | JUICE-UVS 5050 |  | 99d | as late as possible |
| JUICE-UVS 5063 |  | Post-Launch Checkout Complete | 0d | 2021-10-26 | 2021-10-26 | JUICE-UVS 5060 |  | 99d | finish on or after 2021-10-26 |

## Version 2 (data date 2019-07-06, saved 2019-07-12, file JUICE UVS IMS DD 20190705 NC.xer)

Last finish stays 2022-09-21. Complete tasks 855 → 867.

Changed:

| ID | Task | Start | Finish | Complete | Total float | Predecessors | Other |
| --- | --- | --- | --- | --- | --- | --- | --- |
| 01 | **H/W Deliverables** |  | 2019-12-02 → 2020-01-21 (+50d) |  |  |  |  |
| JUICE-UVS 089 | JUICE UVS FM Delivery Target LOE | 2019-10-01 → 2019-10-31 (+30d) | 2019-10-01 → 2019-10-31 (+30d) |  |  |  | constraint mandatory finish 2019-10-01 → mandatory finish 2019-10-31 |
| JUICE-UVS 594213 | JUICE UVS FM Delivery Target Discrete | 2019-10-01 → 2019-10-31 (+30d) | 2019-10-01 → 2019-10-31 (+30d) |  |  |  | constraint mandatory finish 2019-10-01 → mandatory finish 2019-10-31 |
| JUICE-UVS 092 | JUICE-UVS STM Delivery to ESA | 2019-12-02 → 2020-01-21 (+50d) | 2019-12-02 → 2020-01-21 (+50d) |  |  |  | constraint mandatory finish 2019-12-02 → mandatory finish 2020-01-21 |
| 02 | **Instrument Level Reviews** |  | 2019-09-18 → 2019-09-25 (+7d) |  |  |  |  |
| JUICE-UVS 592770 | NASA PSR | 2019-09-18 → 2019-09-25 (+7d) | 2019-09-18 → 2019-09-25 (+7d) |  |  | JUICE-UVS 2380 → JUICE-UVS 593472, JUICE-UVS 2380 | constraint mandatory finish 2019-09-18 → mandatory finish 2019-09-25 |
| JUICE-UVS 594216 | ESA QR | 2019-09-18 → 2019-09-25 (+7d) | 2019-09-18 → 2019-09-25 (+7d) |  |  |  | constraint mandatory finish 2019-09-18 → mandatory finish 2019-09-25 |
| JUICE-UVS 1519 | Program Management Oversight FY 19 |  |  | 65% → 76% |  |  |  |
| JUICE-UVS 592492 | Additional ESA Support FY 19 |  |  | 65% → 76% |  |  |  |
| 02 | **Project Control** |  | 2019-10-01 → 2019-10-31 (+30d) |  |  |  |  |
| JUICE-UVS 0978 | Planning / EVM FY 2019 |  | 2019-10-01 → 2019-10-31 (+30d) | 53% → 57% |  |  |  |
| JUICE-UVS 1068 | Financial FY 2019 |  |  | 65% → 76% |  |  |  |
| 04 | **CAM Support** |  | 2019-07-01 → 2019-10-01 (+92d) |  |  |  |  |
| 01 | **CAM Support Labor** |  | 2019-07-01 → 2019-10-01 (+92d) |  |  |  |  |
| JUICE-UVS 592245 | CAM FY 19 |  | 2019-07-01 → 2019-10-01 (+92d) | 76% → 43% | 63d → 22d |  |  |
| 02 | **CAM Support Non-Labor** |  | 2019-07-01 → 2019-10-01 (+92d) |  |  |  |  |
| JUICE-UVS 593673 | CAM FY 19 |  | 2019-07-01 → 2019-10-01 (+92d) | 76% → 43% | 63d → 22d |  |  |
| JUICE-UVS 592333 | FM Delivery Travel | 2019-07-01 → 2019-07-08 (+7d) | 2019-07-01 → 2019-07-08 (+7d) |  | 63d → 81d |  |  |
| JUICE-UVS 592339 | S/C End to End Testing (x2) | 2019-06-17 → 2019-07-08 (+21d) | 2019-06-21 → 2019-07-12 (+21d) |  | 813d → 799d |  |  |
| JUICE-UVS 592224 | Project Support FY 19 |  |  | 65% → 76% |  |  |  |
| 07 | **Review Support** |  | 2019-09-30 → 2019-10-07 (+7d) |  |  |  |  |
| 01 | **ESA QR** |  | 2019-09-30 → 2019-10-07 (+7d) |  |  |  |  |
| JUICE-UVS594174 | ESA QR Preparation Part 2 | 2019-09-04 → 2019-09-11 (+7d) | 2019-09-17 → 2019-09-24 (+7d) |  |  |  |  |
| JUICE-UVS 593316 | ESA QR Submit | 2019-09-17 → 2019-09-24 (+7d) | 2019-09-17 → 2019-09-24 (+7d) |  |  |  |  |
| JUICE-UVS 593319 | ESA QR Conduct | 2019-09-18 → 2019-09-25 (+7d) | 2019-09-18 → 2019-09-25 (+7d) |  |  |  | constraint start on or after 2019-09-18 → start on or after 2019-09-25 |
| JUICE-UVS 593322 | ESA QR RFA Closeout | 2019-09-19 → 2019-09-26 (+7d) | 2019-09-30 → 2019-10-07 (+7d) |  | 1d → 18d |  |  |
| 04 | **NASA Pre-Environmental Review (I-PER)** |  | 2019-07-02 → 2019-07-17 (+15d) |  |  |  |  |
| JUICE-UVS 593310 | NASA PER RFA Closeout |  | 2019-07-02 → 2019-07-17 (+15d) |  | 22d → 35d |  |  |
| 05 | **NASA Pre-Ship Review (I-PSR)** |  | 2019-09-30 → 2019-10-07 (+7d) |  |  |  |  |
| JUICE-UVS 2590 | Submit NASA I-PSR Package | 2019-09-17 → 2019-09-24 (+7d) | 2019-09-17 → 2019-09-24 (+7d) |  |  |  |  |
| JUICE-UVS 2380 | Conduct NASA I-PSR | 2019-09-18 → 2019-09-25 (+7d) | 2019-09-18 → 2019-09-25 (+7d) |  |  |  | constraint start on or after 2019-09-18 → start on or after 2019-09-25 |
| JUICE-UVS 2390 | NASA I-PSR RFA Closeout | 2019-09-19 → 2019-09-26 (+7d) | 2019-09-30 → 2019-10-07 (+7d) |  | 1d → 18d |  |  |
| 08 | **Configuration Management/Document Control** |  | 2019-07-01 → 2019-10-01 (+92d) |  |  |  |  |
| 01 | **Configuration Management** |  | 2019-07-01 → 2019-10-01 (+92d) |  |  |  |  |
| JUICE-UVS 591486 | CM FY 19 |  | 2019-07-01 → 2019-10-01 (+92d) | 76% → 43% | 63d → 22d |  |  |
| 02 | **Document Control** |  | 2019-07-01 → 2019-10-01 (+92d) |  |  |  |  |
| JUICE-UVS 591516 | Document Control FY 19 |  | 2019-07-01 → 2019-10-01 (+92d) | 76% → 43% | 63d → 22d |  |  |
| 09 | **Control Stores** |  | 2019-07-01 → 2019-10-01 (+92d) |  |  |  |  |
| JUICE-UVS 591546 | Controlled Stores FY 19 |  | 2019-07-01 → 2019-10-01 (+92d) | 76% → 43% | 63d → 22d |  |  |
| JUICE-UVS 592269 | Customs Broker FY 19 |  |  | 65% → 76% |  |  |  |
| JUICE-UVS 591666 | SE FY 19 |  |  | 65% → 76% |  |  |  |
| JUICE-UVS 592507 | Additional ESA Support FY 19 |  |  | 65% → 76% |  |  |  |
| 08 | **Revised Thermal Analysis** |  | 2019-06-06 → 2019-07-08 (+32d) |  |  |  |  |
| JUICE-UVS 594813 | Revised Thermal Analysis |  | 2019-06-06 → 2019-07-08 (+32d) |  | 70d → 55d |  |  |
| 04 | **Verification** |  | 2019-11-25 → 2020-01-21 (+57d) |  |  |  |  |
| 02 | **Acceptance Data Package** |  | 2019-11-25 → 2020-01-21 (+57d) |  |  |  |  |
| JUICE-UVS 2185 | UVS FM End Item Data Package | 2019-07-03 → 2019-07-17 (+14d) | 2019-08-28 → 2019-09-12 (+15d) |  | 22d → 35d |  |  |
| JUICE-UVS 3094 | UVS STM End Item Data Package | 2019-10-28 → 2019-12-19 (+52d) | 2019-11-25 → 2020-01-21 (+57d) |  | 3.5d → 0.5d |  |  |
| 03 | **Plans/Procedures** |  | 2019-05-28 → 2019-07-16 (+49d) |  |  |  |  |
| 03 | **Acceptance Test Proc** |  | 2019-05-28 → 2019-07-16 (+49d) |  |  |  |  |
| JUICE-UVS 4352 | UVS TVAC Test Procedure - Final |  | 2019-05-28 → 2019-07-16 (+49d) |  | 22d → 13d |  |  |
| 06 | **Contamination Control FY 18-19** |  | 2019-07-01 → 2019-10-01 (+92d) |  |  |  |  |
| JUICE-UVS 591576 | Contamination Control FY 19 |  | 2019-07-01 → 2019-10-01 (+92d) | 76% → 43% | 63d → 22d |  |  |
| 07 | **SE SDRLs** |  | 2019-06-20 → 2019-07-26 (+36d) |  |  |  |  |
| JUICE-UVS 593472 | Instrument User Manual SE - 26 | 2019-06-20 → 2019-07-26 (+36d) | 2019-06-20 → 2019-07-26 (+36d) |  | 49d → 41d |  |  |
| 03 | **Safety & Performance Assurance** |  | 2019-07-01 → 2019-10-01 (+92d) |  |  |  |  |
| 01 | **PA Support** |  | 2019-07-01 → 2019-10-01 (+92d) |  |  |  |  |
| 01 | **PA Sustaining Support** |  | 2019-07-01 → 2019-10-01 (+92d) |  |  |  |  |
| JUICE-UVS 592332 | PA FY 19 |  | 2019-07-01 → 2019-10-01 (+92d) | 76% → 43% | 63d → 22d |  |  |
| 02 | **Safety** |  | 2019-07-01 → 2019-10-01 (+92d) |  |  |  |  |
| 01 | **Safety Engineering** |  | 2019-07-01 → 2019-10-01 (+92d) |  |  |  |  |
| JUICE-UVS 591636 | Safety Engineering FY 19 |  | 2019-07-01 → 2019-10-01 (+92d) | 76% → 43% | 63d → 22d |  |  |
| 03 | **Parts Engineering** |  | 2019-07-01 → 2019-10-01 (+92d) |  |  |  |  |
| 01 | **Sustained Parts Eng.** |  | 2019-07-01 → 2019-10-01 (+92d) |  |  |  |  |
| JUICE-UVS 591606 | Parts Engineering FY 19 |  | 2019-07-01 → 2019-10-01 (+92d) | 76% → 43% | 63d → 22d |  |  |
| 04 | **Materials & Process** |  | 2019-07-01 → 2019-10-01 (+92d) |  |  |  |  |
| JUICE-UVS 592296 | Materials & Process Support FY 19 |  | 2019-07-01 → 2019-10-01 (+92d) | 76% → 43% | 63d → 22d |  |  |
| 05 | **Hardware QA Support** |  | 2019-07-01 → 2019-10-01 (+92d) |  |  |  |  |
| JUICE-UVS 2225 | QA FY 19 |  | 2019-07-01 → 2019-10-01 (+92d) | 76% → 43% | 63d → 22d |  |  |
| 06 | **Software QA Support** |  | 2019-07-01 → 2019-10-01 (+92d) |  |  |  |  |

| ID | Task | Start | Finish | Complete | Total float | Other |
| --- | --- | --- | --- | --- | --- | --- |
| 01 | **Sustained SQA** |  | 2019-07-01 → 2019-10-01 (+92d) |  |  |  |
| JUICE-UVS 592344 | QA FY 19 |  | 2019-07-01 → 2019-10-01 (+92d) | 76% → 43% | 63d → 22d |  |
| JUICE-UVS 11449 | PI/DPI Oversight - FY 19 |  |  | 65% → 76% |  |  |
| JUICE-UVS 593683 | PI/DPI Oversight - FY 19 |  |  | 65% → 76% |  |  |
| JUICE-UVS 10852 | PS Support - FY 19 |  |  | 65% → 76% |  |  |
| JUICE-UVS 8173 | Co-I Support - FY 19 |  |  | 65% → 76% |  |  |
| JUICE-UVS594291 | University of Colorado Support - Jun FY 19 | 2019-07-03 A | 2019-07-03 A | 0% → 100% | 766d → none |  |
| JUICE-UVS594471 | Johns Hopkins Support - Jun FY 19 | 2019-07-03 A | 2019-07-03 A | 0% → 100% | 766d → none |  |
| JUICE-UVS594651 | SETI Support - Jun FY 19 | 2019-07-03 A | 2019-07-03 A | 0% → 100% | 766d → none |  |
| 05 | **UVS Instrument Development** |  | 2019-12-02 → 2020-01-21 (+50d) |  |  |  |
| 01 | **Mechanical** |  | 2019-12-02 → 2020-01-21 (+50d) |  |  |  |
| 01 | **Structure/Housing** |  | 2019-12-02 → 2020-01-21 (+50d) |  |  |  |
| 04 | **Structure/Thermal Model (STM)** | 2019-06-17 → 2019-08-07 (+51d) | 2019-12-02 → 2020-01-21 (+50d) |  |  |  |
| 01 | **STM Design** | 2019-06-17 → 2019-08-07 (+51d) | 2019-07-15 → 2019-09-05 (+52d) |  |  |  |
| JUICE-UVS 593160 | STM Instrument Elec Bd Design | 2019-06-17 → 2019-08-07 (+51d) | 2019-06-28 → 2019-08-20 (+53d) |  | 3.5d → 0.5d | constraint start on or after 2019-06-17 → start on or after 2019-08-07 |
| JUICE-UVS 51112 | STM Housing & Plates Design | 2019-06-17 → 2019-08-14 (+58d) | 2019-06-21 → 2019-08-20 (+60d) |  | 8.5d → 0.5d | constraint start on or after 2019-06-17 → start on or after 2019-08-14 |
| JUICE-UVS 593154 | STM Detector Elec Bd Design | 2019-06-17 → 2019-08-14 (+58d) | 2019-06-21 → 2019-08-20 (+60d) |  | 8.5d → 0.5d | constraint start on or after 2019-06-17 → start on or after 2019-08-14 |
| JUICE-UVS 593157 | STM Optics & Detector Design | 2019-06-17 → 2019-08-14 (+58d) | 2019-06-21 → 2019-08-20 (+60d) |  | 8.5d → 0.5d | constraint start on or after 2019-06-17 → start on or after 2019-08-14 |
| JUICE-UVS 591282 | STM Housing, Parts & Assy Drwgs | 2019-07-01 → 2019-08-21 (+51d) | 2019-07-15 → 2019-09-05 (+52d) |  | 3.5d → 0.5d |  |
| 02 | **STM Board Mass Models** | 2019-07-16 → 2019-09-06 (+52d) | 2019-07-22 → 2019-09-12 (+52d) |  |  |  |
| 01 | **STM Mass Model Elec Bds** | 2019-07-16 → 2019-09-06 (+52d) | 2019-07-22 → 2019-09-12 (+52d) |  |  |  |
| JUICE-UVS 51001 | STM Elec Bds Assy | 2019-07-16 → 2019-09-06 (+52d) | 2019-07-22 → 2019-09-12 (+52d) |  | 13.5d → 10.5d |  |
| 02 | **STM Mass Model Detector Electronic Boards** | 2019-07-16 → 2019-09-06 (+52d) | 2019-07-16 → 2019-09-06 (+52d) |  |  |  |
| JUICE-UVS 51109 | STM Detector Electronic Bd Fab | 2019-07-16 → 2019-09-06 (+52d) | 2019-07-16 → 2019-09-06 (+52d) |  | 18.5d → 15.5d |  |
| 03 | **STM Optics & Detector Mass Models** | 2019-07-16 → 2019-09-06 (+52d) | 2019-08-05 → 2019-09-26 (+52d) |  |  |  |
| 01 | **STM Mass Model Grating** | 2019-07-16 → 2019-09-06 (+52d) | 2019-07-22 → 2019-09-12 (+52d) |  |  |  |
| JUICE-UVS 591291 | STM MM Grating Fab | 2019-07-16 → 2019-09-06 (+52d) | 2019-07-22 → 2019-09-12 (+52d) |  | 3.5d → 0.5d |  |
| 02 | **STM Mass Model Mirror** | 2019-07-23 → 2019-09-13 (+52d) | 2019-07-29 → 2019-09-19 (+52d) |  |  |  |
| JUICE-UVS 591297 | STM Mirror Fab | 2019-07-23 → 2019-09-13 (+52d) | 2019-07-29 → 2019-09-19 (+52d) |  | 3.5d → 0.5d |  |
| 03 | **STM Mass Model Detector** | 2019-07-30 → 2019-09-20 (+52d) | 2019-08-05 → 2019-09-26 (+52d) |  |  |  |
| JUICE-UVS 591303 | STM Detector Fab | 2019-07-30 → 2019-09-20 (+52d) | 2019-08-05 → 2019-09-26 (+52d) |  | 3.5d → 0.5d |  |
| 04 | **STM Mass Model Housing** | 2019-07-16 → 2019-09-06 (+52d) | 2019-07-29 → 2019-09-19 (+52d) |  |  |  |
| JUICE-UVS 51115 | STM Housing Fab | 2019-07-16 → 2019-09-06 (+52d) | 2019-07-29 → 2019-09-19 (+52d) |  | 8.5d → 5.5d |  |
| JUICE-UVS 51118 | STM Plate Fab | 2019-07-16 → 2019-09-06 (+52d) | 2019-07-29 → 2019-09-19 (+52d) |  | 8.5d → 5.5d |  |
| 05 | **STM Mass Model Assembly** | 2019-08-06 → 2019-09-27 (+52d) | 2019-08-26 → 2019-10-17 (+52d) |  |  |  |
| JUICE-UVS 591285 | STM Assy | 2019-08-06 → 2019-09-27 (+52d) | 2019-08-26 → 2019-10-17 (+52d) |  | 3.5d → 0.5d |  |
| 06 | **STM Mass Model Bench-Checkout/Test** | 2019-08-27 → 2019-10-18 (+52d) | 2019-09-09 → 2019-10-29 (+50d) |  |  |  |
| JUICE-UVS 51049 | STM Bench Check-Out | 2019-08-27 → 2019-10-18 (+52d) | 2019-09-04 → 2019-10-24 (+50d) |  | 3.5d → 0.5d |  |
| JUICE-UVS 51052 | Dis-assemble Test Config and Ready JUICE-UVS & GSE for Move to Vibe TF | 2019-09-05 → 2019-10-25 (+50d) | 2019-09-09 → 2019-10-29 (+50d) |  | 3.5d → 0.5d |  |
| 07 | **STM Mass Model Testing** | 2019-09-10 → 2019-10-30 (+50d) | 2019-10-28 → 2019-12-19 (+52d) |  |  |  |
| 01 | **STM Mass Model Vibration Testing** | 2019-09-10 → 2019-10-30 (+50d) | 2019-10-09 → 2019-12-02 (+54d) |  |  |  |
| JUICE-UVS 4618 | STM Vibration Test Procedure | 2019-09-10 → 2019-10-30 (+50d) | 2019-09-23 → 2019-11-12 (+50d) |  | 3.5d → 0.5d |  |
| JUICE-UVS 4624 | Move STM & GSE over to Vibration Test Facility & Setup | 2019-09-10 → 2019-10-30 (+50d) | 2019-09-10 → 2019-10-30 (+50d) |  | 13d → 10d |  |
| JUICE-UVS 4620 | STM Vibration TRR | 2019-09-24 → 2019-11-13 (+50d) | 2019-09-24 → 2019-11-13 (+50d) |  | 3.5d → 0.5d |  |
| JUICE-UVS 4626 | Conduct STM Vibration Tests | 2019-09-24 → 2019-11-13 (+50d) | 2019-09-30 → 2019-11-19 (+50d) |  | 3.5d → 0.5d |  |
| JUICE-UVS 4628 | Closeout STM Vibration "As-Run" TP/Report | 2019-09-30 → 2019-11-19 (+50d) | 2019-10-07 → 2019-11-26 (+50d) |  | 3.5d → 0.5d |  |
| JUICE-UVS 4632 | Dis-assemble Vibration Test Configuration | 2019-10-07 → 2019-11-26 (+50d) | 2019-10-08 → 2019-11-27 (+50d) |  | 3.5d → 0.5d |  |
| JUICE-UVS 592437 | Reassemble Vibration Test Configuration | 2019-10-08 → 2019-11-27 (+50d) | 2019-10-09 → 2019-12-02 (+54d) |  | 3.5d → 0.5d |  |
| 02 | **STM Mass Model Thermal Balance Testing** | 2019-09-10 → 2019-10-30 (+50d) | 2019-10-28 → 2019-12-19 (+52d) |  |  |  |
| JUICE-UVS 4650 | STM Thermal Test Procedure | 2019-09-10 → 2019-10-30 (+50d) | 2019-09-23 → 2019-11-12 (+50d) |  | 25d → 22d |  |
| JUICE-UVS 4656 | Move STM & GSE over to TB Test Facility | 2019-10-09 → 2019-12-02 (+54d) | 2019-10-09 → 2019-12-02 (+54d) |  | 3.5d → 0.5d |  |
| JUICE-UVS 4652 | STM TB TRR | 2019-10-10 → 2019-12-03 (+54d) | 2019-10-10 → 2019-12-03 (+54d) |  | 3.5d → 0.5d |  |
| JUICE-UVS 4658 | Clean STM for TB & Install into Chamber | 2019-10-10 → 2019-12-03 (+54d) | 2019-10-11 → 2019-12-04 (+54d) |  | 3.5d → 0.5d |  |
| JUICE-UVS 51073 | Conduct STM TB Tests (1-cycle) | 2019-10-11 → 2019-12-04 (+54d) | 2019-10-18 → 2019-12-11 (+54d) |  | 3.5d → 0.5d |  |
| JUICE-UVS 4670 | Remove STM fm Chamber & Dbl Bag | 2019-10-18 → 2019-12-11 (+54d) | 2019-10-21 → 2019-12-12 (+52d) |  | 3.5d → 0.5d |  |
| JUICE-UVS 51076 | Closeout STM TB "As-Run" TP/Report | 2019-10-21 → 2019-12-12 (+52d) | 2019-10-28 → 2019-12-19 (+52d) |  | 3.5d → 0.5d |  |
| 03 | **STM Mass Model Properties Measurements** | 2019-10-21 → 2019-12-12 (+52d) | 2019-10-23 → 2019-12-16 (+54d) |  |  |  |
| JUICE-UVS 4678 | Move STM over to Mass Prop Test Stand | 2019-10-21 → 2019-12-12 (+52d) | 2019-10-21 → 2019-12-12 (+52d) |  | 8.5d → 5.5d |  |
| JUICE-UVS 4680 | STM Mass Prop Test Preparation | 2019-10-22 → 2019-12-13 (+52d) | 2019-10-22 → 2019-12-13 (+52d) |  | 8.5d → 5.5d |  |
| JUICE-UVS 4682 | Conduct STM Mass Prop Measurements | 2019-10-22 → 2019-12-13 (+52d) | 2019-10-22 → 2019-12-13 (+52d) |  | 8.5d → 5.5d |  |
| JUICE-UVS 4684 | Closeout STM Mass Prop "As-Run" Proc/Report | 2019-10-23 → 2019-12-16 (+54d) | 2019-10-23 → 2019-12-16 (+54d) |  | 8.5d → 5.5d |  |
| 08 | **STM Mass Model Final Closeout & Delivery to ESA** | 2019-10-23 → 2019-12-16 (+54d) | 2019-12-02 → 2020-01-21 (+50d) |  |  |  |
| JUICE-UVS 51055 | Move Clean/Bag'd STM into Hi-Bay Clean Cabin | 2019-10-23 → 2019-12-16 (+54d) | 2019-10-23 → 2019-12-16 (+54d) |  | 8.5d → 5.5d |  |
| JUICE-UVS 51058 | Inspect & Photograph STM | 2019-10-24 → 2019-12-17 (+54d) | 2019-10-24 → 2019-12-17 (+54d) |  | 8.5d → 5.5d |  |
| JUICE-UVS 51064 | STM Schedule Margin | 2019-10-24 → 2019-12-17 (+54d) | 2019-11-14 → 2020-01-10 (+57d) |  | 8.5d → 5.5d |  |
| JUICE-UVS 51067 | Deliver STM JUICE-UVS Ready for Delivery | 2019-11-27 → 2020-01-20 (+54d) | 2019-12-02 → 2020-01-21 (+50d) |  |  |  |
| 03 | **Mechanical Procurements** |  | 2019-07-17 → 2019-07-25 (+8d) |  |  |  |
| JUICE-UVS 592542 | SVT MLI Design & Procure June 17 Lead Time |  | 2019-05-28 → 2019-07-08 (+41d) |  | 35d → 23d |  |
| JUICE-UVS593808 | SVT FM & STM Mechanical Materials Procurement Oct 17 Lead Time |  | 2019-05-28 → 2019-07-08 (+41d) |  | 2d → 12d |  |
| JUICE-UVS 11646 | FM Shipping Cases Procurement Delivery | 2019-05-28 → 2019-07-08 (+41d) | 2019-05-28 → 2019-07-08 (+41d) |  | 17d → 12d |  |

| ID | Task | Start | Finish | Duration | Complete | Total float | Predecessors | Other |
| --- | --- | --- | --- | --- | --- | --- | --- | --- |
| JUICE-UVS 592533 | MLI Design MLI - Final Dec 17 Delivery | 2019-05-28 → 2019-07-08 (+41d) | 2019-07-16 → 2019-07-24 (+8d) | 35d → 13d |  | 0d → 10d |  |  |
| JUICE-UVS593829 | FM & STM Mechanical Materials Procurement Oct 17 Delivery | 2019-05-28 → 2019-07-08 (+41d) | 2019-05-28 → 2019-07-08 (+41d) |  |  | 2d → 12d |  |  |
| JUICE-UVS593913 | FM & STM Mechanical Materials Oct 17 Material Task Receipt | 2019-05-28 → 2019-07-08 (+41d) | 2019-05-28 → 2019-07-08 (+41d) |  |  | 2d → 12d |  |  |
| JUICE-UVS 592539 | MLI Design & Procure Delivery | 2019-07-17 → 2019-07-25 (+8d) | 2019-07-17 → 2019-07-25 (+8d) |  |  | 0d → 10d |  |  |
| JUICE-UVS593949 | MLI Design & Procure Material Task Receipt | 2019-07-17 → 2019-07-25 (+8d) | 2019-07-17 → 2019-07-25 (+8d) |  |  | 0d → 10d |  |  |
| 02 | **Electrical** |  | 2019-05-28 → 2019-07-08 (+41d) |  |  |  |  |  |
| 06 | **Electrical Procurements** |  | 2019-05-28 → 2019-07-08 (+41d) |  |  |  |  |  |
| 05 | **Harness Procurement** |  | 2019-05-28 → 2019-07-08 (+41d) |  |  |  |  |  |
| JUICE-UVS593856 | SVT Procure Long Lead FM Harness Parts Nov 17 Lead Time |  | 2019-05-28 → 2019-07-08 (+41d) |  |  | 2d → 57d |  |  |
| JUICE-UVS 593340 | Long Lead FM Harness Parts Nov 17 Delivery | 2019-05-28 → 2019-07-08 (+41d) | 2019-05-28 → 2019-07-08 (+41d) |  |  | 66d → 60d |  |  |
| JUICE-UVS 593261 | Long Lead FM Harness Parts Nov 17 Material Task Receipt | 2019-05-28 → 2019-07-08 (+41d) | 2019-05-28 → 2019-07-08 (+41d) |  |  | 66d → 60d |  |  |
| JUICE-UVS 9015 | Detector Oversight & Spt Phase FY 18 |  |  |  | 70% → 78% |  |  |  |
| 04 | **Flight Software** |  | 2019-08-06 → 2019-10-01 (+56d) |  |  |  |  |  |
| 01 | **FSW Mgmt** |  | 2019-07-01 → 2019-10-01 (+92d) |  |  |  |  |  |
| JUICE-UVS 3417 | S/W Configuration Mgmt Phase C/D FY 19 |  | 2019-07-01 → 2019-10-01 (+92d) |  | 76% → 43% | 63d → 22d |  |  |
| JUICE-UVS 3464 | SW Project Management & Team Meetings Phase C/D FY 19 |  | 2019-07-01 → 2019-10-01 (+92d) |  | 80% → 43% | 63d → 22d |  |  |
| JUICE-UVS 592839 | SW Support/Clerical/Misc. Phase C/D FY 19 |  | 2019-07-01 → 2019-10-01 (+92d) |  | 76% → 43% | 63d → 22d |  |  |
| 02 | **FSW SE** |  | 2019-06-28 → 2019-10-01 (+95d) |  |  |  |  |  |
| JUICE-UVS 3427 | S/W Project Review Meetings (PDR, CDR, etc.) FY 19 |  | 2019-06-28 → 2019-10-01 (+95d) |  | 77% → 43% | 64d → 22d |  |  |
| 05 | **FSW Build 3 (EM)** |  | 2019-07-26 → 2019-08-23 (+28d) |  |  |  |  |  |
| JUICE-UVS 3437 | FSW Design Document (As Build) Phase 1 |  | 2019-06-27 → 2019-07-08 (+11d) |  |  | 24d → 41d |  |  |
| JUICE-UVS 3493 | Build 3 Version Description Document (VDD) | 2019-05-31 → 2019-07-08 (+38d) | 2019-05-31 → 2019-07-08 (+38d) |  |  | 29d → 26d |  |  |
| JUICE-UVS 592503 | FSW Design Document (As Build) Phase 2 | 2019-06-28 → 2019-07-08 (+10d) | 2019-07-26 → 2019-08-02 (+7d) |  |  | 24d → 41d |  |  |
| JUICE-UVS11520 | SW User Manual Phase 1 | 2019-05-31 → 2019-07-08 (+38d) | 2019-06-20 → 2019-07-26 (+36d) |  |  | 29d → 26d |  |  |
| JUICE-UVS 593379 | SW User Manual Phase 2 | 2019-06-21 → 2019-07-29 (+38d) | 2019-07-19 → 2019-08-23 (+35d) |  |  | 29d → 26d |  |  |
| 06 | **FSW Build 4 (FM)** | 2019-05-31 → 2019-07-08 (+38d) | 2019-08-06 → 2019-09-12 (+37d) |  |  |  |  |  |
| JUICE-UVS 3426 | S/W Build 4 Code (FM I&T PROMs) | 2019-05-31 → 2019-07-08 (+38d) | 2019-07-01 → 2019-08-06 (+36d) |  |  | 19d → 16d |  |  |
| JUICE-UVS 3435 | S/W Build 4 Test (FM I&T PROMs) | 2019-07-02 → 2019-08-07 (+36d) | 2019-07-23 → 2019-08-27 (+35d) |  |  | 19d → 16d |  |  |
| JUICE-UVS 592398 | ATP Dry Run on EM & FM | 2019-07-24 → 2019-08-28 (+35d) | 2019-07-30 → 2019-09-05 (+37d) |  |  | 19d → 16d |  |  |
| JUICE-UVS 592401 | ATP Run for Score on FM + Test Report | 2019-08-01 → 2019-09-09 (+39d) | 2019-08-05 → 2019-09-11 (+37d) |  |  | 19d → 16d |  |  |
| JUICE-UVS 3495 | Build 4 Version Description Document (VDD) | 2019-08-06 → 2019-09-12 (+37d) | 2019-08-06 → 2019-09-12 (+37d) |  |  | 38d → 35d |  |  |
| JUICE-UVS 592749 | Build 4 SW Delivery | 2019-08-06 → 2019-09-12 (+37d) | 2019-08-06 → 2019-09-12 (+37d) |  |  | 19d → 16d |  |  |
| 08 | **TM/TC Database Definitions: SIS Usage & SC Operations** |  | 2019-07-30 → 2019-08-02 (+3d) |  |  |  |  |  |
| JUICE-UVS594009 | Test DB & Update database with FM Calibration Parameters |  | 2019-07-01 → 2019-07-08 (+7d) |  |  | 23d → 42d |  |  |
| JUICE-UVS594012 | DB release for ESA/Airbus Review | 2019-07-01 → 2019-07-08 (+7d) | 2019-07-01 → 2019-07-08 (+7d) |  |  | 23d → 42d |  |  |
| JUICE-UVS594015 | SVT Airbus Review | 2019-07-02 → 2019-07-08 (+6d) | 2019-07-16 → 2019-07-19 (+3d) |  |  | 23d → 42d |  |  |
| JUICE-UVS594018 | Incorporate feedback from Airbus/ESA | 2019-07-17 → 2019-07-22 (+5d) | 2019-07-30 → 2019-08-02 (+3d) |  |  | 23d → 42d |  |  |
| 11 | **SW Bug Fixes** |  | 2019-05-31 → 2019-07-08 (+38d) |  |  |  |  |  |
| JUICE-UVS594216 | SW Bug Fixes |  | 2019-05-31 → 2019-07-08 (+38d) |  | 98% → 100% | 63d → 22d |  |  |
| 05 | **I&T** |  | 2019-10-02 → 2019-11-01 (+30d) |  |  |  |  |  |
| 02 | **EM1 Environmental Test** |  | 2019-07-01 → 2019-07-08 (+7d) |  |  |  |  |  |
| 05 | **EM/FM I&T Anomaly Resolution** |  | 2019-07-01 → 2019-07-08 (+7d) |  |  |  |  |  |
| JUICE-UVS594213 | EM/FM I&T Anomaly Resolution |  | 2019-07-01 → 2019-07-08 (+7d) |  | 90% → 100% | 42d → 61d |  |  |
| 02 | **FM AI&T** |  | 2019-10-02 → 2019-11-01 (+30d) |  |  |  |  |  |
| 02 | **Integrate Electronics** |  | 2019-05-29 → 2019-07-08 (+40d) |  |  |  |  |  |
| JUICE-UVS 15712 | S/W Build 4 ATP (Run for Score on FM) | 2019-05-29 → 2019-07-08 (+40d) | 2019-05-29 → 2019-07-08 (+40d) | 1d → 0.5d |  | 1d → 57d |  | constraint start on or after 2019-05-29 → none |
| 03 | **FM Test** |  | 2019-06-04 → 2019-06-03 (-1d) |  |  |  |  |  |
| JUICE-UVS 5850 | Baseline Func Test | 2019-05-30 → 2019-05-24 A (-6d) | 2019-05-30 → 2019-05-29 A (-1d) |  | 0% → 100% | 1d → none | JUICE-UVS 15712, JUICE-UVS 5802, JUICE-UVS 2030, JUICE-UVS 593258, JUICE-UVS 593264 → JUICE-UVS 5802, JUICE-UVS 2030, JUICE-UVS 593258, JUICE-UVS 593264 |  |
| JUICE-UVS 5853 | Flight Ambient Actuator Test | 2019-05-31 → 2019-05-30 A (-1d) | 2019-05-31 → 2019-05-30 A (-1d) |  | 0% → 100% | 1d → none |  | constraint none → start on or after 2019-05-28 |
| JUICE-UVS 15661 | Light Leak & Radiometric Alignment Test | 2019-06-03 → 2019-05-31 A (-3d) | 2019-06-04 → 2019-06-03 A (-1d) |  | 0% → 100% | 1d → none |  |  |
| 04 | **FM Environmental Test** | 2019-06-05 → 2019-05-24 (-12d) | 2019-09-03 → 2019-09-19 (+16d) |  |  |  |  |  |
| 01 | **EMI/EMC Test** | 2019-06-05 → 2019-05-24 (-12d) | 2019-07-30 → 2019-08-12 (+13d) |  |  |  |  |  |
| 01 | **EMI/EMC Testing** | 2019-06-05 → 2019-05-24 (-12d) | 2019-07-11 → 2019-08-02 (+22d) |  |  |  |  |  |
| JUICE-UVS 5601 | FM EMI/EMC Testing | 2019-06-06 → 2019-05-24 A (-13d) | 2019-06-19 → 2019-06-04 A (-15d) |  | 0% → 100% | 1d → none |  |  |
| JUICE-UVS 5604 | Grounding/Bonding Isolation Test | 2019-06-05 → 2019-06-04 A (-1d) | 2019-06-05 → 2019-06-04 A (-1d) |  | 0% → 100% | 1d → none |  |  |
| JUICE-UVS 5610 | EMI/EMC Test Report | 2019-06-20 → 2019-07-15 (+25d) | 2019-07-11 → 2019-08-02 (+22d) |  |  | 35d → 41d |  | constraint none → start on or after 2019-07-15 |
| 02 | **Magnetics Susceptibility Testing** | 2019-06-20 → 2019-05-29 (-22d) | 2019-07-30 → 2019-08-12 (+13d) |  |  |  |  |  |
| JUICE-UVS 5616 | Conduct FM UVS Magnetics Susceptibility & Cleanliness Tests | 2019-06-20 → 2019-05-29 A (-22d) | 2019-06-28 → 2019-06-06 A (-22d) |  | 0% → 100% | 1d → none |  |  |
| JUICE-UVS 5625 | Collect Mag Test Data | 2019-07-01 → 2019-07-15 (+14d) | 2019-07-01 → 2019-07-15 (+14d) |  |  | 22d → 35d |  | constraint none → start on or after 2019-07-15 |
| JUICE-UVS 5622 | Closeout As-Run Mag Test Proc/Report | 2019-07-02 → 2019-07-16 (+14d) | 2019-07-30 → 2019-08-12 (+13d) |  |  | 22d → 35d |  |  |
| 03 | **Post EMI Functional Testing** | 2019-07-01 → 2019-07-11 (+10d) | 2019-07-02 → 2019-07-12 (+10d) |  |  |  |  |  |
| JUICE-UVS 15646 | Functional & Radiometric Bench Test | 2019-07-01 → 2019-07-11 (+10d) | 2019-07-02 → 2019-07-12 (+10d) |  |  | 1d → 10d |  | constraint none → start on or after 2019-07-11 |
| 02 | **Vibe Test** | 2019-07-03 → 2019-07-15 (+12d) | 2019-07-22 → 2019-07-31 (+9d) |  |  |  |  |  |
| JUICE-UVS 593259 | Package & Move FM & GSE to Vibe Facility | 2019-07-03 → 2019-07-15 (+12d) | 2019-07-03 → 2019-07-15 (+12d) |  |  | 1d → 10d |  |  |
| JUICE-UVS 6006 | Sensor Protoflight Vibe | 2019-07-03 → 2019-07-15 (+12d) | 2019-07-05 → 2019-07-16 (+11d) |  |  | 1d → 10d |  |  |
| JUICE-UVS 15655 | UVS full functional test (post-vibe test) | 2019-07-05 → 2019-07-16 (+11d) | 2019-07-05 → 2019-07-16 (+11d) |  |  | 1d → 10d |  |  |
| JUICE-UVS 6012 | UVS Ambient Actuator test (Full test A&B side, all actuators) | 2019-07-08 → 2019-07-17 (+9d) | 2019-07-08 → 2019-07-17 (+9d) |  |  | 1d → 10d |  |  |
| JUICE-UVS 16021 | Post-Vibe optics alignment check | 2019-07-08 → 2019-07-17 (+9d) | 2019-07-10 → 2019-07-19 (+9d) |  |  | 1d → 10d |  |  |
| JUICE-UVS 16009 | Detector Pumpdown (overnight pump) | 2019-07-10 → 2019-07-19 (+9d) | 2019-07-11 → 2019-07-22 (+11d) |  |  | 1d → 10d |  |  |
| JUICE-UVS 15676 | End-to-End/Radiometric Test | 2019-07-11 → 2019-07-22 (+11d) | 2019-07-15 → 2019-07-24 (+9d) |  |  | 1d → 10d |  |  |

| ID | Task | Start | Finish | Duration | Complete | Total float | Predecessors | Other |
| --- | --- | --- | --- | --- | --- | --- | --- | --- |
| JUICE-UVS 15667 | Inspection & Physical Properties | 2019-07-15 → 2019-07-24 (+9d) | 2019-07-15 → 2019-07-24 (+9d) |  |  | 1d → 10d |  |  |
| JUICE-UVS 15670 | Vibe Test Report | 2019-07-16 → 2019-07-25 (+9d) | 2019-07-22 → 2019-07-31 (+9d) |  |  | 28d → 43d |  |  |
| 03 | **Thermal Test** | 2019-07-17 → 2019-07-25 (+8d) | 2019-08-06 → 2019-08-22 (+16d) |  |  |  |  |  |
| JUICE-UVS 592551 | Install Blankets | 2019-07-17 → 2019-07-25 (+8d) | 2019-07-17 → 2019-07-25 (+8d) |  |  | 0d → 10d |  |  |
| JUICE-UVS 15685 | Thermal Vacuum Chamber Certification | 2019-07-17 → 2019-07-25 (+8d) | 2019-07-17 → 2019-07-25 (+8d) |  |  | 0d → 10d |  |  |
| JUICE-UVS 6042 | Perform Safe-to-mate w/GSE cables | 2019-07-17 → 2019-07-25 (+8d) | 2019-07-17 → 2019-07-25 (+8d) |  |  | 0d → 10d |  |  |
| JUICE-UVS 15679 | FM TVAC Instrument testing | 2019-07-17 → 2019-07-26 (+9d) | 2019-07-24 → 2019-08-08 (+15d) | 20d → 10d |  | 0d → 10d |  |  |
| JUICE-UVS 15682 | TVAC Test Report | 2019-07-24 → 2019-08-09 (+16d) | 2019-08-06 → 2019-08-22 (+16d) |  |  | 17d → 27d |  |  |
| JUICE-UVS 16048 | Thermal Balance analysis & test correlation | 2019-07-24 → 2019-08-09 (+16d) | 2019-07-25 → 2019-08-12 (+18d) |  |  | 25d → 35d |  |  |
| JUICE-UVS 16051 | Remove Blankets | 2019-07-24 → 2019-08-09 (+16d) | 2019-07-24 → 2019-08-09 (+16d) |  |  | 0d → 10d |  |  |
| 04 | **FM Calibration & Pre-Delivery Testing** | 2019-07-25 → 2019-08-12 (+18d) | 2019-09-03 → 2019-09-19 (+16d) |  |  |  |  |  |
| JUICE-UVS 5577 | FM Sensor UV Calibration | 2019-07-25 → 2019-08-12 (+18d) | 2019-08-21 → 2019-09-10 (+20d) |  |  | 0d → 10d |  |  |
| JUICE-UVS 5580 | Perform Radiometric_End-to-End Test | 2019-08-22 → 2019-09-11 (+20d) | 2019-08-23 → 2019-09-12 (+20d) |  |  | 0d → 10d |  |  |
| JUICE-UVS 5586 | UVS Sensor NVRR test | 2019-08-26 → 2019-09-13 (+18d) | 2019-08-26 → 2019-09-13 (+18d) |  |  | 0d → 10d |  |  |
| JUICE-UVS 5592 | Full Func Test | 2019-08-26 → 2019-09-13 (+18d) | 2019-08-27 → 2019-09-16 (+20d) |  |  | 0d → 10d | JUICE-UVS 5586 → JUICE-UVS 15712, JUICE-UVS 5586 |  |
| JUICE-UVS 15583 | UVS final Visual Inspection, Black light | 2019-08-27 → 2019-09-16 (+20d) | 2019-08-27 → 2019-09-16 (+20d) |  |  | 0d → 10d |  |  |
| JUICE-UVS 15595 | Cal Test Report | 2019-08-28 → 2019-09-17 (+20d) | 2019-08-29 → 2019-09-18 (+20d) |  |  | 0d → 10d |  |  |
| JUICE-UVS 6036 | Photograph Instrument | 2019-08-28 → 2019-09-17 (+20d) | 2019-08-28 → 2019-09-17 (+20d) |  |  | 1d → 11d |  |  |
| JUICE-UVS 16030 | Install final Red tag items | 2019-08-28 → 2019-09-17 (+20d) | 2019-08-28 → 2019-09-17 (+20d) |  |  | 1d → 11d |  |  |
| JUICE-UVS 15589 | Test Results Closeout Review | 2019-09-03 → 2019-09-19 (+16d) | 2019-09-03 → 2019-09-19 (+16d) |  |  | 0d → 10d |  |  |
| JUICE-UVS 16036 | Package, Ship preparations, TSA inspection prior to boxing up | 2019-09-03 → 2019-09-19 (+16d) | 2019-09-03 → 2019-09-19 (+16d) |  |  | 0d → 10d | JUICE-UVS 593261, JUICE-UVS594213, JUICE-UVS594165, JUICE-UVS 16030, JUICE-UVS 593379, JUICE-UVS 15589, JUICE-UVS 11664, JUICE-UVS 593472 → JUICE-UVS 593261, JUICE-UVS594213, JUICE-UVS594165, JUICE-UVS 16030, JUICE-UVS 593379, JUICE-UVS 15589, JUICE-UVS 11664 |  |
| 05 | **FM Delivery** | 2019-09-04 → 2019-09-20 (+16d) | 2019-10-02 → 2019-11-01 (+30d) |  |  |  |  |  |
| JUICE-UVS 5607 | FM Schedule Margin | 2019-09-04 → 2019-09-20 (+16d) | 2019-10-01 → 2019-10-17 (+16d) |  |  | 0d → 10d |  |  |
| JUICE-UVS 5598 | FM JUICE-UVS Delivery | 2019-10-02 → 2019-11-01 (+30d) | 2019-10-02 → 2019-11-01 (+30d) |  |  |  |  | constraint none → as late as possible |
| 03 | **E/MGSE AI&T** |  | 2019-07-03 → 2019-07-08 (+5d) |  |  |  |  |  |
| 02 | **Mechanical GSE** |  | 2019-07-03 → 2019-07-08 (+5d) |  |  |  |  |  |
| JUICE-UVS 11652 | Vacuum Test Fixture Fab |  | 2019-05-31 → 2019-07-08 (+38d) |  |  | 32d → 24d |  |  |
| JUICE-UVS 593169 | Vibe Test Fixture Design | 2019-06-10 → 2019-06-26 A (+16d) | 2019-06-19 → 2019-07-05 A (+16d) |  | 0% → 100% | 1d → none |  | constraint as late as possible → none |
| JUICE-UVS 11649 | Vibe Test Fixture Fab | 2019-06-19 → 2019-07-08 (+19d) | 2019-07-03 → 2019-07-08 (+5d) | 10d → 5.5d |  | 1d → 15.5d |  | constraint as late as possible → none |
| 09 | **Ground Data System (SOC)** |  | 2022-09-21 → 2022-06-03 (-110d) |  |  |  |  |  |
| 01 | **GDS Management** |  | 2022-09-21 → 2022-06-03 (-110d) |  |  |  |  |  |
| 02 | **GDS Mgmt PP** | 2019-05-28 → 2019-07-08 (+41d) | 2022-09-21 → 2022-06-03 (-110d) |  |  |  |  |  |
| JUICE-UVS 594231 | SOC Support FY 19 -22 | 2019-05-28 → 2019-07-08 (+41d) | 2022-09-21 → 2022-06-03 (-110d) | 832d → 811d |  | 0d → 74d |  |  |
| JUICE-UVS 5688 | EM Support @ ESTEC |  | 2019-07-01 → 2019-07-08 (+7d) |  |  | 453d → 450d |  |  |
| JUICE-UVS 5685 | FM I&T Support @ ESTEC FY 19 | 2019-07-02 → 2019-07-08 (+6d) | 2020-01-30 → 2020-02-04 (+5d) |  |  | 453d → 450d |  |  |
| JUICE-UVS 5700 | FM I&T Support @ ESTEC FY 20 | 2020-01-31 → 2020-02-05 (+5d) | 2020-09-30 → 2020-10-05 (+5d) |  |  | 453d → 450d |  |  |
| JUICE-UVS 5703 | FM I&T Support @ ESTEC Complete | 2020-09-30 → 2020-10-05 (+5d) | 2020-09-30 → 2020-10-05 (+5d) |  |  | 453d → 450d |  |  |
| 02 | **AI&T Support** | 2019-10-02 → 2019-11-01 (+30d) | 2022-02-18 → 2022-03-22 (+32d) |  |  |  |  |  |
| JUICE-UVS 5010 | Spacecraft Functional Test Support | 2019-10-02 → 2019-11-01 (+30d) | 2020-09-29 → 2020-10-29 (+30d) |  |  | 147d → 125d |  |  |
| JUICE-UVS 5030 | Spacecraft Environmental Test Support | 2020-09-30 → 2020-10-30 (+30d) | 2021-09-24 → 2021-10-26 (+32d) |  |  | 147d → 125d |  |  |
| JUICE-UVS 592566 | Additional Support FY 21 | 2021-09-27 → 2021-10-27 (+30d) | 2022-02-18 → 2022-03-22 (+32d) |  |  | 147d → 125d |  |  |

## Version 3 (data date 2019-08-03, saved 2019-08-12, file JUICE UVS IMS DD 20190802 NC.xer)

Last finish stays 2022-09-21. Complete tasks 867 → 885.

Changed:

| ID | Task | Start | Finish | Duration | Complete | Total float | Predecessors | Other |
| --- | --- | --- | --- | --- | --- | --- | --- | --- |
| JUICE-UVS 0038 | ESA QR - Target Milestone Date | 2019-07-18 → 2019-09-25 (+69d) | 2019-07-18 → 2019-09-25 (+69d) |  |  |  |  | constraint mandatory finish 2019-07-18 → mandatory finish 2019-09-25 |
| JUICE-UVS 592531 | NASA PSR/ESA AR - Target Milestone Date | 2019-07-18 → 2019-09-25 (+69d) | 2019-07-18 → 2019-09-25 (+69d) |  |  |  |  | constraint mandatory finish 2019-07-18 → mandatory finish 2019-09-25 |
| JUICE-UVS3081 | EM 2 Delivery SwRI | 2019-07-31 → 2019-10-31 (+92d) | 2019-07-31 → 2019-10-31 (+92d) |  |  |  | none → JUICE-UVS594165 | constraint mandatory finish 2019-07-31 → mandatory finish 2019-10-31 |
| 02 | **Instrument Level Reviews** |  | 2019-09-25 → 2019-10-16 (+21d) |  |  |  |  |  |
| JUICE-UVS 592770 | NASA PSR | 2019-09-25 → 2019-10-16 (+21d) | 2019-09-25 → 2019-10-16 (+21d) |  |  |  |  | constraint mandatory finish 2019-09-25 → mandatory finish 2019-10-16 |
| JUICE-UVS 594216 | ESA QR | 2019-09-25 → 2019-10-16 (+21d) | 2019-09-25 → 2019-10-16 (+21d) |  |  |  |  | constraint mandatory finish 2019-09-25 → mandatory finish 2019-10-16 |
| JUICE-UVS 1519 | Program Management Oversight FY 19 |  |  |  | 76% → 84% |  |  |  |
| JUICE-UVS 592492 | Additional ESA Support FY 19 |  |  |  | 76% → 84% |  |  |  |
| JUICE-UVS 0978 | Planning / EVM FY 2019 |  |  |  | 57% → 67% |  |  |  |
| JUICE-UVS 1068 | Financial FY 2019 |  |  |  | 76% → 84% |  |  |  |
| JUICE-UVS 592245 | CAM FY 19 |  |  |  | 43% → 62% |  |  |  |
| JUICE-UVS 593673 | CAM FY 19 |  |  |  | 43% → 62% |  |  |  |
| JUICE-UVS 592339 | S/C End to End Testing (x2) | 2019-07-08 A | 2019-07-12 A |  | 0% → 100% | 799d → none |  |  |
| JUICE-UVS 592333 | FM Delivery Travel | 2019-07-08 → 2019-10-31 (+115d) | 2019-07-08 → 2019-10-31 (+115d) |  |  | 81d → 1d |  | constraint start on or after 2019-07-01 → start on or after 2019-10-31 |
| JUICE-UVS 592224 | Project Support FY 19 |  |  |  | 76% → 84% |  |  |  |
| 07 | **Review Support** |  | 2019-10-07 → 2019-10-28 (+21d) |  |  |  |  |  |
| 01 | **ESA QR** |  | 2019-10-07 → 2019-10-28 (+21d) |  |  |  |  |  |
| JUICE-UVS594174 | ESA QR Preparation Part 2 | 2019-09-11 → 2019-09-12 (+1d) | 2019-09-24 → 2019-09-25 (+1d) |  |  |  |  |  |
| JUICE-UVS 593316 | ESA QR Submit | 2019-09-24 → 2019-09-25 (+1d) | 2019-09-24 → 2019-09-25 (+1d) |  |  |  |  | constraint as late as possible → finish on 2019-09-25 |
| JUICE-UVS 593319 | ESA QR Conduct | 2019-09-25 → 2019-10-16 (+21d) | 2019-09-25 → 2019-10-16 (+21d) |  |  |  |  | constraint start on or after 2019-09-25 → start on or after 2019-10-16 |
| JUICE-UVS 593322 | ESA QR RFA Closeout | 2019-09-26 → 2019-10-17 (+21d) | 2019-10-07 → 2019-10-28 (+21d) |  |  | 18d → 3d |  |  |
| JUICE-UVS 592477 | NASA CDR RFA Closeout | 2017-09-28 A → 2017-09-08 A (-20d) |  |  |  |  |  |  |
| 04 | **NASA Pre-Environmental Review (I-PER)** |  | 2019-07-17 → 2019-08-05 (+19d) |  |  |  |  |  |
| JUICE-UVS 593310 | NASA PER RFA Closeout |  | 2019-07-17 → 2019-08-05 (+19d) |  |  | 35d → 21d |  |  |
| 05 | **NASA Pre-Ship Review (I-PSR)** | 2019-07-22 → 2019-09-05 (+45d) | 2019-10-07 → 2019-10-28 (+21d) |  |  |  |  |  |
| JUICE-UVS 2370 | NASA I-PSR Preparation | 2019-07-22 → 2019-09-05 (+45d) | 2019-09-10 → 2019-09-25 (+15d) | 35d → 15d |  | 10d → 0d |  | constraint start on or after 2019-07-15 → as late as possible |
| JUICE-UVS 2590 | Submit NASA I-PSR Package | 2019-09-24 → 2019-09-25 (+1d) | 2019-09-24 → 2019-09-25 (+1d) |  |  |  |  | constraint as late as possible → finish on 2019-09-25 |
| JUICE-UVS 2380 | Conduct NASA I-PSR | 2019-09-25 → 2019-10-16 (+21d) | 2019-09-25 → 2019-10-16 (+21d) |  |  |  |  | constraint start on or after 2019-09-25 → start on or after 2019-10-16 |
| JUICE-UVS 2390 | NASA I-PSR RFA Closeout | 2019-09-26 → 2019-10-17 (+21d) | 2019-10-07 → 2019-10-28 (+21d) |  |  | 18d → 3d |  |  |
| JUICE-UVS 591486 | CM FY 19 |  |  |  | 43% → 62% |  |  |  |
| JUICE-UVS 591516 | Document Control FY 19 |  |  |  | 43% → 62% |  |  |  |
| JUICE-UVS 591546 | Controlled Stores FY 19 |  |  |  | 43% → 62% |  |  |  |
| JUICE-UVS 592269 | Customs Broker FY 19 |  |  |  | 76% → 84% |  |  |  |
| JUICE-UVS 591666 | SE FY 19 |  |  |  | 76% → 84% |  |  |  |
| JUICE-UVS 592507 | Additional ESA Support FY 19 |  |  |  | 76% → 84% |  |  |  |
| 03 | **Analyses** |  | 2019-07-19 → 2019-08-23 (+35d) |  |  |  |  |  |
| 05 | **Thermal Analyses** |  | 2019-07-19 → 2019-08-23 (+35d) |  |  |  |  |  |
| JUICE-UVS 592522 | Additional Thermal Interface Analysis FY 18 |  | 2019-07-19 → 2019-08-23 (+35d) |  |  | 10d → 6d |  |  |
| 06 | **Structural Analyses** |  | 2019-07-19 → 2019-08-23 (+35d) |  |  |  |  |  |
| JUICE-UVS 592526 | Additional Structural Interface Analysis FY 18 |  | 2019-07-19 → 2019-08-23 (+35d) |  |  | 10d → 6d |  |  |
| 08 | **Revised Thermal Analysis** |  | 2019-07-08 → 2019-08-23 (+46d) |  |  |  |  |  |
| JUICE-UVS 594813 | Revised Thermal Analysis |  | 2019-07-08 → 2019-08-23 (+46d) |  |  | 55d → 35d |  |  |
| JUICE-UVS 2185 | UVS FM End Item Data Package | 2019-07-17 → 2019-08-06 (+20d) | 2019-09-12 → 2019-10-02 (+20d) |  |  | 35d → 21d |  |  |
| JUICE-UVS 4352 | UVS TVAC Test Procedure - Final |  | 2019-07-16 A |  | 50% → 100% | 13d → none |  |  |
| JUICE-UVS 591576 | Contamination Control FY 19 |  |  |  | 43% → 62% |  |  |  |
| 07 | **SE SDRLs** |  | 2019-07-26 → 2019-10-16 (+82d) |  |  |  |  |  |
| JUICE-UVS 593472 | Instrument User Manual SE - 26 | 2019-07-26 → 2019-10-16 (+82d) | 2019-07-26 → 2019-10-16 (+82d) |  |  | 41d → 0d |  | constraint none → as late as possible |
| JUICE-UVS 592332 | PA FY 19 |  |  |  | 43% → 62% |  |  |  |
| JUICE-UVS 591636 | Safety Engineering FY 19 |  |  |  | 43% → 62% |  |  |  |
| JUICE-UVS 591606 | Parts Engineering FY 19 |  |  |  | 43% → 62% |  |  |  |
| JUICE-UVS 592296 | Materials & Process Support FY 19 |  |  |  | 43% → 62% |  |  |  |
| JUICE-UVS 2225 | QA FY 19 |  |  |  | 43% → 62% |  |  |  |
| JUICE-UVS 592344 | QA FY 19 |  |  |  | 43% → 62% |  |  |  |
| JUICE-UVS 11449 | PI/DPI Oversight - FY 19 |  |  |  | 76% → 84% |  |  |  |
| JUICE-UVS 593683 | PI/DPI Oversight - FY 19 |  |  |  | 76% → 84% |  |  |  |
| JUICE-UVS 10852 | PS Support - FY 19 |  |  |  | 76% → 84% |  |  |  |
| JUICE-UVS 8173 | Co-I Support - FY 19 |  |  |  | 76% → 84% |  |  |  |
| JUICE-UVS594294 | University of Colorado Support - Jul FY 19 | 2019-08-01 → 2019-08-05 (+4d) | 2019-08-01 → 2019-08-05 (+4d) |  |  | 747d → 745d |  |  |
| JUICE-UVS594474 | Johns Hopkins Support - Jul FY 19 | 2019-08-01 → 2019-08-05 (+4d) | 2019-08-01 → 2019-08-05 (+4d) |  |  | 747d → 745d |  |  |
| JUICE-UVS594654 | SETI Support - Jul FY 19 | 2019-08-01 → 2019-08-05 (+4d) | 2019-08-01 → 2019-08-05 (+4d) |  |  | 747d → 745d |  |  |
| 03 | **Mechanical Procurements** |  | 2019-07-25 → 2019-08-19 (+25d) |  |  |  |  |  |
| JUICE-UVS 592542 | SVT MLI Design & Procure June 17 Lead Time |  | 2019-07-08 → 2019-08-05 (+28d) |  |  | 23d → 12d |  |  |
| JUICE-UVS593808 | SVT FM & STM Mechanical Materials Procurement Oct 17 Lead Time |  | 2019-07-08 → 2019-08-05 (+28d) |  |  | 12d → 5d |  |  |
| JUICE-UVS 11646 | FM Shipping Cases Procurement Delivery | 2019-07-08 → 2019-08-05 (+28d) | 2019-07-08 → 2019-08-05 (+28d) |  |  | 12d → 5d |  |  |
| JUICE-UVS 592533 | MLI Design MLI - Final Dec 17 Delivery | 2019-07-08 → 2019-08-05 (+28d) | 2019-07-24 → 2019-08-16 (+23d) |  |  | 10d → 2d |  |  |
| JUICE-UVS593829 | FM & STM Mechanical Materials Procurement Oct 17 Delivery | 2019-07-08 → 2019-08-05 (+28d) | 2019-07-08 → 2019-08-05 (+28d) |  |  | 12d → 5d |  |  |
| JUICE-UVS593913 | FM & STM Mechanical Materials Oct 17 Material Task Receipt | 2019-07-08 → 2019-08-05 (+28d) | 2019-07-08 → 2019-08-05 (+28d) |  |  | 12d → 5d |  |  |
| JUICE-UVS 592539 | MLI Design & Procure Delivery | 2019-07-25 → 2019-08-19 (+25d) | 2019-07-25 → 2019-08-19 (+25d) |  |  | 10d → 2d |  | constraint none → start on or after 2019-08-19 |
| JUICE-UVS593949 | MLI Design & Procure Material Task Receipt | 2019-07-25 → 2019-08-19 (+25d) | 2019-07-25 → 2019-08-19 (+25d) |  |  | 10d → 2d |  |  |
| 02 | **Electrical** |  | 2019-07-08 → 2019-08-05 (+28d) |  |  |  |  |  |

| ID | Task | Start | Finish | Duration | Complete | Total float | Predecessors | Other |
| --- | --- | --- | --- | --- | --- | --- | --- | --- |
| 06 | **Electrical Procurements** |  | 2019-07-08 → 2019-08-05 (+28d) |  |  |  |  |  |
| 05 | **Harness Procurement** |  | 2019-07-08 → 2019-08-05 (+28d) |  |  |  |  |  |
| JUICE-UVS593856 | SVT Procure Long Lead FM Harness Parts Nov 17 Lead Time |  | 2019-07-08 → 2019-08-05 (+28d) |  |  | 57d → 27.5d |  |  |
| JUICE-UVS 593340 | Long Lead FM Harness Parts Nov 17 Delivery | 2019-07-08 → 2019-08-05 (+28d) | 2019-07-08 → 2019-08-05 (+28d) |  |  | 60d → 45d |  |  |
| JUICE-UVS 593261 | Long Lead FM Harness Parts Nov 17 Material Task Receipt | 2019-07-08 → 2019-08-05 (+28d) | 2019-07-08 → 2019-08-05 (+28d) |  |  | 60d → 45d |  |  |
| 03 | **Detector/Optics** |  | 2019-10-25 → 2019-07-08 (-109d) |  |  |  |  |  |
| 01 | **Detector** |  | 2019-10-25 → 2019-07-08 (-109d) |  |  |  |  |  |
| 01 | **Detector SubC Mgmt** |  | 2019-10-25 → 2019-07-08 (-109d) |  |  |  |  |  |
| 01 | **Detector SubC Mgmt** |  | 2019-10-25 → 2019-07-08 (-109d) |  |  |  |  |  |
| JUICE-UVS 9015 | Detector Oversight & Spt Phase FY 18 |  | 2019-10-25 → 2019-07-08 A (-109d) |  | 78% → 100% | 726d → none |  |  |
| JUICE-UVS 3417 | S/W Configuration Mgmt Phase C/D FY 19 |  |  |  | 43% → 62% |  |  |  |
| JUICE-UVS 3464 | SW Project Management & Team Meetings Phase C/D FY 19 |  |  |  | 43% → 62% |  |  |  |
| JUICE-UVS 592839 | SW Support/Clerical/Misc. Phase C/D FY 19 |  |  |  | 43% → 62% |  |  |  |
| JUICE-UVS 3427 | S/W Project Review Meetings (PDR, CDR, etc.) FY 19 |  |  |  | 43% → 62% |  |  |  |
| 05 | **FSW Build 3 (EM)** |  | 2019-08-23 → 2019-09-24 (+32d) |  |  |  |  |  |
| JUICE-UVS 3437 | FSW Design Document (As Build) Phase 1 |  | 2019-07-08 A |  | 50% → 100% | 41d → none |  |  |
| JUICE-UVS 3493 | Build 3 Version Description Document (VDD) | 2019-07-08 → 2019-08-05 (+28d) | 2019-07-08 → 2019-08-05 (+28d) |  |  | 26d → 11d |  | constraint start on or after 2019-05-31 → start on or after 2019-08-05 |
| JUICE-UVS11520 | SW User Manual Phase 1 | 2019-07-08 → 2019-08-05 (+28d) | 2019-07-26 → 2019-08-23 (+28d) |  |  | 26d → 11d | JUICE-UVS 592746, JUICE-UVS 3496 → JUICE-UVS 3493, JUICE-UVS 592746, JUICE-UVS 3496 |  |
| JUICE-UVS 592503 | FSW Design Document (As Build) Phase 2 | 2019-07-08 → 2019-08-19 (+42d) | 2019-08-02 → 2019-09-17 (+46d) |  |  | 41d → 16d |  | constraint none → start on or after 2019-08-19 |
| JUICE-UVS 593379 | SW User Manual Phase 2 | 2019-07-29 → 2019-08-26 (+28d) | 2019-08-23 → 2019-09-24 (+32d) |  |  | 26d → 11d |  |  |
| 06 | **FSW Build 4 (FM)** | 2019-07-08 → 2019-08-05 (+28d) | 2019-09-12 → 2019-09-03 (-9d) |  |  |  |  |  |
| JUICE-UVS 3426 | S/W Build 4 Code (FM I&T PROMs) | 2019-07-08 → 2019-08-05 (+28d) | 2019-08-06 → 2019-08-09 (+3d) | 22d → 5d |  | 16d → 28d |  | constraint start on or after 2019-05-31 → start on or after 2019-08-05 |
| JUICE-UVS 3435 | S/W Build 4 Test (FM I&T PROMs) | 2019-08-07 → 2019-08-12 (+5d) | 2019-08-27 → 2019-08-16 (-11d) | 15d → 5d |  | 16d → 28d |  |  |
| JUICE-UVS 592398 | ATP Dry Run on EM & FM | 2019-08-28 → 2019-08-19 (-9d) | 2019-09-05 → 2019-08-23 (-13d) |  |  | 16d → 28d |  |  |
| JUICE-UVS 592401 | ATP Run for Score on FM + Test Report | 2019-09-09 → 2019-08-27 (-13d) | 2019-09-11 → 2019-08-29 (-13d) |  |  | 16d → 28d |  |  |
| JUICE-UVS 3495 | Build 4 Version Description Document (VDD) | 2019-09-12 → 2019-09-03 (-9d) | 2019-09-12 → 2019-09-03 (-9d) |  |  | 35d → 42d |  |  |
| JUICE-UVS 592749 | Build 4 SW Delivery | 2019-09-12 → 2019-09-03 (-9d) | 2019-09-12 → 2019-09-03 (-9d) |  |  | 16d → 28d |  |  |
| JUICE-UVS 3496 | Update Test Scripts (ATP on FM) |  |  |  |  |  | JUICE-UVS 592473, JUICE-UVS 3493 → JUICE-UVS 592473 |  |
| 08 | **TM/TC Database Definitions: SIS Usage & SC Operations** |  | 2019-08-02 → 2019-08-14 (+12d) |  |  |  |  |  |
| JUICE-UVS594009 | Test DB & Update database with FM Calibration Parameters |  | 2019-07-08 A |  | 0% → 100% | 42d → none |  |  |
| JUICE-UVS594012 | DB release for ESA/Airbus Review | 2019-07-08 A | 2019-07-08 A |  | 0% → 100% | 42d → none |  |  |
| JUICE-UVS594015 | SVT Airbus Review | 2019-07-08 A | 2019-07-19 → 2019-07-08 A (-11d) |  | 0% → 100% | 42d → none |  |  |
| JUICE-UVS594018 | Incorporate feedback from Airbus/ESA | 2019-07-22 A | 2019-08-02 → 2019-08-14 (+12d) |  |  | 42d → 39d |  |  |
| 11 | **SW Bug Fixes** |  | 2019-07-08 → 2019-08-05 (+28d) |  |  |  |  |  |
| JUICE-UVS594216 | SW Bug Fixes |  | 2019-07-08 → 2019-08-05 (+28d) |  |  |  |  |  |
| 05 | **I&T** |  | 2019-11-01 → 2019-10-30 (-2d) |  |  |  |  |  |
| 01 | **EM AI&T** |  | 2019-08-14 → 2019-08-29 (+15d) |  |  |  |  |  |
| 04 | **EM Environmental Test** |  | 2019-08-14 → 2019-08-29 (+15d) |  |  |  |  |  |
| 02 | **EM1 Environmental Test** |  | 2019-07-08 → 2019-08-29 (+52d) |  |  |  |  |  |
| 05 | **EM/FM I&T Anomaly Resolution** |  | 2019-07-08 → 2019-08-29 (+52d) |  |  |  |  |  |
| JUICE-UVS594213 | EM/FM I&T Anomaly Resolution |  | 2019-07-08 → 2019-08-29 (+52d) |  | 100% → 92% | 61d → 27d |  |  |
| 03 | **EM2 Final Integration** |  | 2019-08-14 → 2019-08-19 (+5d) |  |  |  |  |  |
| 01 | **EM2 Final Assembly/Testing** |  | 2019-08-13 → 2019-08-16 (+3d) |  |  |  |  |  |
| JUICE-UVS594162 | End-to-End Bench Test | 2019-07-31 → 2019-08-05 (+5d) | 2019-08-06 → 2019-08-09 (+3d) |  |  | 38d → 56d |  | constraint start on or after 2019-07-31 → start on or after 2019-08-05 |
| JUICE-UVS594177 | CAL & Test Report | 2019-07-31 → 2019-08-05 (+5d) | 2019-08-13 → 2019-08-16 (+3d) |  |  | 33d → 51d |  | constraint start on or after 2019-07-31 → start on or after 2019-08-05 |
| 02 | **EM2 Delivery to FSW** | 2019-08-14 → 2019-08-19 (+5d) | 2019-08-14 → 2019-08-19 (+5d) |  |  |  |  |  |
| JUICE-UVS594165 | EM2 Delivery to FSW | 2019-08-14 → 2019-08-19 (+5d) | 2019-08-14 → 2019-08-19 (+5d) |  |  | 33d → 51d |  |  |
| 02 | **FM AI&T** |  | 2019-11-01 → 2019-10-30 (-2d) |  |  |  |  |  |
| 02 | **Integrate Electronics** |  | 2019-07-08 → 2019-08-23 (+46d) |  |  |  |  |  |
| JUICE-UVS 15712 | S/W Build 4 ATP (Run for Score on FM) | 2019-07-08 → 2019-06-24 A (-14d) | 2019-07-08 → 2019-08-23 (+46d) | 0.5d → 20d | 0% → 50% | 57d → 27.5d |  |  |
| 04 | **FM Environmental Test** |  | 2019-09-19 → 2019-10-08 (+19d) |  |  |  |  |  |
| 01 | **EMI/EMC Test** |  | 2019-08-12 → 2019-09-05 (+24d) |  |  |  |  |  |
| 01 | **EMI/EMC Testing** |  | 2019-08-02 → 2019-08-16 (+14d) |  |  |  |  |  |
| JUICE-UVS 5610 | EMI/EMC Test Report | 2019-07-15 → 2019-07-29 A (+14d) | 2019-08-02 → 2019-08-16 (+14d) |  | 0% → 50% | 41d → 36d |  | constraint start on or after 2019-07-15 → start on or after 2019-07-29 |
| 02 | **Magnetics Susceptibility Testing** |  | 2019-08-12 → 2019-09-05 (+24d) |  |  |  |  |  |
| JUICE-UVS 5625 | Collect Mag Test Data | 2019-07-15 → 2019-08-06 (+22d) | 2019-07-15 → 2019-08-06 (+22d) |  |  | 35d → 24d |  | constraint start on or after 2019-07-15 → start on or after 2019-08-05 |
| JUICE-UVS 5622 | Closeout As-Run Mag Test Proc/Report | 2019-07-16 → 2019-08-07 (+22d) | 2019-08-12 → 2019-09-05 (+24d) |  |  | 35d → 24d |  |  |
| JUICE-UVS 15646 | Functional & Radiometric Bench Test | 2019-07-11 A | 2019-07-12 A |  | 0% → 100% | 10d → none |  |  |
| 02 | **Vibe Test** | 2019-07-15 → 2019-07-22 (+7d) | 2019-07-31 → 2019-08-29 (+29d) |  |  |  |  |  |
| JUICE-UVS 593259 | Package & Move FM & GSE to Vibe Facility | 2019-07-15 → 2019-07-22 A (+7d) | 2019-07-15 → 2019-07-22 A (+7d) |  | 0% → 100% | 10d → none |  | constraint none → start on or after 2019-07-22 |
| JUICE-UVS 6006 | Sensor Protoflight Vibe | 2019-07-15 → 2019-07-24 A (+9d) | 2019-07-16 → 2019-07-24 A (+8d) |  | 0% → 100% | 10d → none | JUICE-UVS 11619, JUICE-UVS 593259, JUICE-UVS 11649 → JUICE-UVS 11619, JUICE-UVS 593259 | constraint none → start on or after 2019-07-24 |
| JUICE-UVS 15655 | UVS full functional test (post-vibe test) | 2019-07-16 → 2019-07-25 A (+9d) | 2019-07-16 → 2019-07-25 A (+9d) |  | 0% → 100% | 10d → none |  |  |
| JUICE-UVS 6012 | UVS Ambient Actuator test (Full test A&B side, all actuators) | 2019-07-17 → 2019-07-25 A (+8d) | 2019-07-17 → 2019-07-25 A (+8d) |  | 0% → 100% | 10d → none |  |  |
| JUICE-UVS 16021 | Post-Vibe optics alignment check | 2019-07-17 → 2019-07-26 A (+9d) | 2019-07-19 → 2019-07-29 A (+10d) |  | 0% → 100% | 10d → none |  |  |
| JUICE-UVS 16009 | Detector Pumpdown (overnight pump) | 2019-07-19 → 2019-07-30 A (+11d) | 2019-07-22 → 2019-07-30 A (+8d) |  | 0% → 100% | 10d → none |  |  |
| JUICE-UVS 15676 | End-to-End/Radiometric Test | 2019-07-22 → 2019-07-31 A (+9d) | 2019-07-24 → 2019-08-01 A (+8d) |  | 0% → 100% | 10d → none |  |  |
| JUICE-UVS 15670 | Vibe Test Report | 2019-07-25 → 2019-08-06 (+12d) | 2019-07-31 → 2019-08-12 (+12d) |  |  | 43d → 40d | JUICE-UVS 15667 → JUICE-UVS 6006 | constraint none → start on or after 2019-08-05 |
| JUICE-UVS 15667 | Inspection & Physical Properties | 2019-07-24 → 2019-08-29 (+36d) | 2019-07-24 → 2019-08-29 (+36d) |  |  | 10d → 2d | JUICE-UVS 15676 → JUICE-UVS 16051 |  |
| 03 | **Thermal Test** | 2019-07-25 → 2019-07-17 (-8d) | 2019-08-22 → 2019-08-28 (+6d) |  |  |  |  |  |
| JUICE-UVS 15685 | Thermal Vacuum Chamber Certification | 2019-07-25 → 2019-07-17 A (-8d) | 2019-07-25 → 2019-07-17 A (-8d) |  | 0% → 100% | 10d → none |  |  |

| ID | Task | Start | Finish | Duration | Complete | Total float | Predecessors | Other |
| --- | --- | --- | --- | --- | --- | --- | --- | --- |
| JUICE-UVS 6042 | Perform Safe-to-mate w/GSE cables | 2019-07-25 → 2019-07-17 A (-8d) | 2019-07-25 → 2019-07-17 A (-8d) |  | 0% → 100% | 10d → none |  |  |
| JUICE-UVS 15679 | FM TVAC Instrument testing | 2019-07-26 → 2019-08-01 A (+6d) | 2019-08-08 → 2019-08-14 (+6d) |  | 0% → 50% | 10d → 5d | JUICE-UVS 11652, JUICE-UVS 592533, JUICE-UVS 592551, JUICE-UVS 6042, JUICE-UVS593949, JUICE-UVS 592578 → JUICE-UVS 15676, JUICE-UVS 11652, JUICE-UVS 6042, JUICE-UVS 592578 | constraint none → start on or after 2019-08-01 |
| JUICE-UVS 15682 | TVAC Test Report | 2019-08-09 → 2019-08-15 (+6d) | 2019-08-22 → 2019-08-28 (+6d) |  |  | 27d → 28d |  |  |
| JUICE-UVS 592551 | Install Blankets | 2019-07-25 → 2019-08-20 (+26d) | 2019-07-25 → 2019-08-20 (+26d) |  |  | 10d → 2d | JUICE-UVS 592548, JUICE-UVS 15667 → JUICE-UVS593949, JUICE-UVS 592533, JUICE-UVS 15679, JUICE-UVS 592548 |  |
| JUICE-UVS 16048 | Thermal Balance test, analysis & test correlation | 2019-08-09 → 2019-08-21 (+12d) | 2019-08-12 → 2019-08-27 (+15d) | 2d → 5d |  | 35d → 2d | JUICE-UVS 15679 → JUICE-UVS 592551 | was named Thermal Balance analysis & test correlation |
| JUICE-UVS 16051 | Remove Blankets | 2019-08-09 → 2019-08-28 (+19d) | 2019-08-09 → 2019-08-28 (+19d) |  |  | 10d → 2d | JUICE-UVS 15679 → JUICE-UVS 16048 |  |
| 04 | **FM Calibration & Pre-Delivery Testing** | 2019-08-12 → 2019-08-29 (+17d) | 2019-09-19 → 2019-10-08 (+19d) |  |  |  |  |  |
| JUICE-UVS 5577 | FM Sensor UV Calibration | 2019-08-12 → 2019-08-29 (+17d) | 2019-09-10 → 2019-09-30 (+20d) |  |  | 10d → 2d | JUICE-UVS 16051, JUICE-UVS 2178, JUICE-UVS 9159 → JUICE-UVS 15667, JUICE-UVS 2178, JUICE-UVS 9159 |  |
| JUICE-UVS 5580 | Perform Radiometric_End-to-End Test | 2019-09-11 → 2019-09-30 (+19d) | 2019-09-12 → 2019-10-02 (+20d) |  |  | 10d → 2d |  |  |
| JUICE-UVS 5586 | UVS Sensor NVRR test | 2019-09-13 → 2019-10-02 (+19d) | 2019-09-13 → 2019-10-02 (+19d) | 0.5d → 0d |  | 10d → 2d |  |  |
| JUICE-UVS 5592 | Full Func Test | 2019-09-13 → 2019-10-02 (+19d) | 2019-09-16 → 2019-10-03 (+17d) |  |  | 10d → 2d |  |  |
| JUICE-UVS 15583 | UVS final Visual Inspection, Black light | 2019-09-16 → 2019-10-03 (+17d) | 2019-09-16 → 2019-10-03 (+17d) |  |  | 10d → 2d |  |  |
| JUICE-UVS 15595 | Cal Test Report | 2019-09-17 → 2019-10-04 (+17d) | 2019-09-18 → 2019-10-07 (+19d) |  |  | 10d → 2d |  |  |
| JUICE-UVS 6036 | Photograph Instrument | 2019-09-17 → 2019-10-04 (+17d) | 2019-09-17 → 2019-10-04 (+17d) |  |  | 11d → 3.5d |  |  |
| JUICE-UVS 16030 | Install final Red tag items | 2019-09-17 → 2019-10-04 (+17d) | 2019-09-17 → 2019-10-04 (+17d) | 0.5d → 0d |  | 11d → 3.5d |  |  |
| JUICE-UVS 15589 | Test Results Closeout Review | 2019-09-19 → 2019-10-08 (+19d) | 2019-09-19 → 2019-10-08 (+19d) |  |  | 10d → 2d | JUICE-UVS 16048, JUICE-UVS 592503, JUICE-UVS 5622, JUICE-UVS 5610, JUICE-UVS 15670, JUICE-UVS 15682, JUICE-UVS 15595 → JUICE-UVS 592503, JUICE-UVS 5622, JUICE-UVS 5610, JUICE-UVS 15670, JUICE-UVS 15682, JUICE-UVS 15595 |  |
| JUICE-UVS 16036 | Package, Ship preparations, TSA inspection prior to boxing up | 2019-09-19 → 2019-10-08 (+19d) | 2019-09-19 → 2019-10-08 (+19d) |  |  | 10d → 2d | JUICE-UVS 593261, JUICE-UVS594213, JUICE-UVS594165, JUICE-UVS 16030, JUICE-UVS 593379, JUICE-UVS 15589, JUICE-UVS 11664 → JUICE-UVS 593261, JUICE-UVS594213, JUICE-UVS 16030, JUICE-UVS 593379, JUICE-UVS 15589, JUICE-UVS 11664 |  |
| 05 | **FM Delivery** | 2019-09-20 → 2019-10-09 (+19d) | 2019-11-01 → 2019-10-30 (-2d) |  |  |  |  |  |
| JUICE-UVS 5607 | FM Schedule Margin | 2019-09-20 → 2019-10-09 (+19d) | 2019-10-17 → 2019-10-29 (+12d) | 20d → 15d |  | 10d → 2d |  |  |
| JUICE-UVS 5598 | FM JUICE-UVS Delivery | 2019-11-01 → 2019-10-30 (-2d) | 2019-11-01 → 2019-10-30 (-2d) |  |  | 0d → 2d | JUICE-UVS594810, JUICE-UVS594807, JUICE-UVS594804, JUICE-UVS594801, JUICE-UVS 593322 FF, JUICE-UVS 5607, JUICE-UVS 2469, JUICE-UVS 3495 → JUICE-UVS 11649, JUICE-UVS594810, JUICE-UVS594807, JUICE-UVS594804, JUICE-UVS594801, JUICE-UVS 593322 FF, JUICE-UVS 5607, JUICE-UVS 2469, JUICE-UVS 3495 | constraint as late as possible → none |
| 03 | **E/MGSE AI&T** |  | 2019-07-08 → 2019-08-29 (+52d) |  |  |  |  |  |
| 02 | **Mechanical GSE** |  | 2019-07-08 → 2019-08-29 (+52d) |  |  |  |  |  |
| JUICE-UVS 11652 | Vacuum Test Fixture Fab |  | 2019-07-08 A |  | 0% → 100% | 24d → none |  |  |
| JUICE-UVS 11649 | Vibe Test Fixture & OGSE Fab | 2019-07-08 A | 2019-07-08 → 2019-08-29 (+52d) |  | 0% → 50% | 15.5d → 43d |  | was named Vibe Test Fixture Fab |
| 09 | **Ground Data System (SOC)** |  | 2022-06-03 → 2022-08-26 (+84d) |  |  |  |  |  |
| 01 | **GDS Management** |  | 2022-06-03 → 2022-08-26 (+84d) |  |  |  |  |  |
| 02 | **GDS Mgmt PP** | 2019-07-08 → 2019-09-30 (+84d) | 2022-06-03 → 2022-08-26 (+84d) |  |  |  |  |  |
| JUICE-UVS 594231 | SOC Support FY 19 -22 | 2019-07-08 → 2019-09-30 (+84d) | 2022-06-03 → 2022-08-26 (+84d) |  |  | 74d → 16d |  | constraint start on or after 2019-05-28 → start on or after 2019-09-30 |
| JUICE-UVS 5688 | EM Support @ ESTEC |  | 2019-07-08 A |  | 60% → 100% | 450d → none |  |  |
| JUICE-UVS 5685 | EM & FM I&T Support @ ESTEC FY 19 | 2019-07-08 → 2019-10-07 (+91d) | 2020-02-04 → 2020-05-01 (+87d) |  |  | 450d → 387d |  | was named FM I&T Support @ ESTEC FY 19; constraint none → start on or after 2019-10-07 |
| JUICE-UVS 5700 | FM I&T Support @ ESTEC FY 20 | 2020-02-05 → 2020-05-04 (+89d) | 2020-10-05 → 2021-01-07 (+94d) |  |  | 450d → 387d |  |  |
| JUICE-UVS 5703 | FM I&T Support @ ESTEC Complete | 2020-10-05 → 2021-01-07 (+94d) | 2020-10-05 → 2021-01-07 (+94d) |  |  | 450d → 387d |  |  |

## Version 4 (data date 2019-09-27, saved 2019-10-10, file JUICE UVS IMS DD 20190927 NC.xer)

Last finish stays 2022-09-21. Complete tasks 885 → 910.

Changed:

| ID | Task | Start | Finish | Duration | Complete | Total float | Predecessors | Other |
| --- | --- | --- | --- | --- | --- | --- | --- | --- |
| JUICE-UVS 0038 | ESA QR - Target Milestone Date | 2019-09-25 A | 2019-09-25 A |  | 0% → 100% | 0d → none |  |  |
| JUICE-UVS 592531 | NASA PSR/ESA AR - Target Milestone Date | 2019-09-25 A | 2019-09-25 A |  | 0% → 100% | 0d → none |  |  |
| JUICE-UVS 594213 | JUICE UVS FM Delivery Target Discrete |  |  |  |  |  | JUICE-UVS 594216, JUICE-UVS 592770, JUICE-UVS 2185, JUICE-UVS 5598, JUICE-UVS 0023, JUICE-UVS 592333, JUICE-UVS 592477, JUICE-UVS 592881, JUICE-UVS 592884, JUICE-UVS 592887, JUICE-UVS 592890, JUICE-UVS 592893, JUICE-UVS 592896, JUICE-UVS 592899, JUICE-UVS 592935, JUICE-UVS 592941, JUICE-UVS 592944, JUICE-UVS 592947, JUICE-UVS 592950, JUICE-UVS 592971, JUICE-UVS 592974, JUICE-UVS 592977, JUICE-UVS 592980, JUICE-UVS 592983, JUICE-UVS 592986, JUICE-UVS 593001, JUICE-UVS 593004, JUICE-UVS 593325, JUICE-UVS 593328, JUICE-UVS 593334, JUICE-UVS 593337, JUICE-UVS 593343, JUICE-UVS 593346, JUICE-UVS 593349, JUICE-UVS 593352, JUICE-UVS 593355, JUICE-UVS 593358, JUICE-UVS 593361, JUICE-UVS 8043 → JUICE-UVS 593379, JUICE-UVS 8043, JUICE-UVS 593361, JUICE-UVS 593358, JUICE-UVS 593355, JUICE-UVS 593352, JUICE-UVS 593349, JUICE-UVS 593346, JUICE-UVS 593343, JUICE-UVS 593337, JUICE-UVS 593334, JUICE-UVS 593328, JUICE-UVS 593325, JUICE-UVS 593004, JUICE-UVS 593001, JUICE-UVS 592986, JUICE-UVS 592983, JUICE-UVS 592980, JUICE-UVS 592977, JUICE-UVS 592974, JUICE-UVS 592971, JUICE-UVS 592950, JUICE-UVS 592947, JUICE-UVS 592944, JUICE-UVS 592941, JUICE-UVS 592935, JUICE-UVS 592899, JUICE-UVS 592896, JUICE-UVS 592893, JUICE-UVS 592890, JUICE-UVS 592887, JUICE-UVS 592884, JUICE-UVS 592881, JUICE-UVS 592477, JUICE-UVS 592333, JUICE-UVS 0023, JUICE-UVS 5598, JUICE-UVS 2185, JUICE-UVS 592770, JUICE-UVS 594216 |  |
| JUICE-UVS3081 | EM 2 Delivery SwRI | 2019-10-31 → 2019-12-31 (+61d) | 2019-10-31 → 2019-12-31 (+61d) |  |  |  |  | constraint mandatory finish 2019-10-31 → mandatory finish 2019-12-31 |
| JUICE-UVS 1519 | Program Management Oversight FY 19 |  |  |  | 84% → 99% |  |  |  |
| JUICE-UVS 592492 | Additional ESA Support FY 19 |  |  |  | 84% → 99% |  |  |  |
| JUICE-UVS 0978 | Planning / EVM FY 2019 |  |  |  | 67% → 87% |  |  |  |
| JUICE-UVS 1068 | Financial FY 2019 |  |  |  | 84% → 99% |  |  |  |
| 04 | **CAM Support** |  | 2019-10-01 → 2019-09-30 (-1d) |  |  |  |  |  |
| 01 | **CAM Support Labor** |  | 2019-10-01 → 2019-09-30 (-1d) |  |  |  |  |  |
| JUICE-UVS 592245 | CAM FY 19 |  | 2019-10-01 → 2019-09-30 (-1d) |  | 62% → 98% | 22d → 23d |  |  |
| 02 | **CAM Support Non-Labor** |  | 2019-10-01 → 2019-09-30 (-1d) |  |  |  |  |  |
| JUICE-UVS 593673 | CAM FY 19 |  | 2019-10-01 → 2019-09-30 (-1d) |  | 62% → 98% | 22d → 23d |  |  |
| JUICE-UVS 592905 | PI Day | 2019-09-09 A | 2019-09-13 A |  | 0% → 100% | 756d → none |  |  |
| JUICE-UVS 592224 | Project Support FY 19 |  |  |  | 84% → 99% |  |  |  |
| JUICE-UVS594174 | ESA QR Preparation Part 2 | 2019-09-12 A | 2019-09-25 → 2019-10-15 (+20d) |  |  | 0d → 1d |  | constraint as late as possible → none |
| JUICE-UVS 593316 | ESA QR Submit | 2019-09-25 → 2019-10-15 (+20d) | 2019-09-25 → 2019-10-15 (+20d) |  |  | 0d → 1d |  | constraint finish on 2019-09-25 → none |
| JUICE-UVS 593319 | ESA QR Conduct |  |  |  |  |  | JUICE-UVS 593316 → JUICE-UVS 593316 FF |  |
| JUICE-UVS 593310 | NASA PER RFA Closeout |  | 2019-08-05 A |  | 0% → 100% | 21d → none |  |  |
| 05 | **NASA Pre-Ship Review (I-PSR)** | 2019-09-05 → 2019-09-03 (-2d) |  |  |  |  |  |  |
| JUICE-UVS 2370 | NASA I-PSR Preparation | 2019-09-05 → 2019-09-03 A (-2d) | 2019-09-25 → 2019-10-15 (+20d) |  |  | 0d → 1d | JUICE-UVS 593307, JUICE-UVS 592526, JUICE-UVS 592522 → JUICE-UVS 3493 FF, JUICE-UVS 592503 FF, JUICE-UVS11520 FF, JUICE-UVS 593307 | constraint as late as possible → none |
| JUICE-UVS 2590 | Submit NASA I-PSR Package | 2019-09-25 → 2019-10-15 (+20d) | 2019-09-25 → 2019-10-15 (+20d) |  |  | 0d → 1d |  | constraint finish on 2019-09-25 → none |
| JUICE-UVS 2380 | Conduct NASA I-PSR |  |  |  |  |  | JUICE-UVS 594813, JUICE-UVS594141, JUICE-UVS 2590, JUICE-UVS 593310 → JUICE-UVS 593310, JUICE-UVS 2590 FF, JUICE-UVS594141 |  |
| JUICE-UVS 591486 | CM FY 19 |  |  |  | 62% → 97% |  |  |  |
| JUICE-UVS 591516 | Document Control FY 19 |  |  |  | 62% → 97% |  |  |  |
| JUICE-UVS 591546 | Controlled Stores FY 19 |  |  |  | 62% → 97% |  |  |  |
| JUICE-UVS 592269 | Customs Broker FY 19 |  |  |  | 84% → 99% |  |  |  |
| JUICE-UVS 591666 | SE FY 19 |  |  |  | 84% → 99% |  |  |  |
| JUICE-UVS 592507 | Additional ESA Support FY 19 |  |  |  | 84% → 99% |  |  |  |
| 03 | **Analyses** |  | 2019-08-23 → 2019-10-15 (+53d) |  |  |  |  |  |
| 05 | **Thermal Analyses** |  | 2019-08-23 → 2019-10-15 (+53d) |  |  |  |  |  |
| JUICE-UVS 592522 | Additional Thermal Interface Analysis FY 18 |  | 2019-08-23 → 2019-10-15 (+53d) |  | 92% → 96% | 6d → 12d |  |  |
| 06 | **Structural Analyses** |  | 2019-08-23 → 2019-10-15 (+53d) |  |  |  |  |  |
| JUICE-UVS 592526 | Additional Structural Interface Analysis FY 18 |  | 2019-08-23 → 2019-10-15 (+53d) |  |  | 6d → 12d |  |  |
| 08 | **Revised Thermal Analysis** |  | 2019-08-23 → 2019-10-15 (+53d) |  |  |  |  |  |
| JUICE-UVS 594813 | Revised Thermal Analysis |  | 2019-08-23 → 2019-10-15 (+53d) |  | 0% → 50% | 35d → 12d |  |  |
| 04 | **Verification** |  | 2020-01-21 → 2020-01-07 (-14d) |  |  |  |  |  |
| 02 | **Acceptance Data Package** |  | 2020-01-21 → 2020-01-07 (-14d) |  |  |  |  |  |
| JUICE-UVS 2185 | UVS FM End Item Data Package | 2019-08-06 A | 2019-10-02 → 2019-10-24 (+22d) |  | 0% → 50% | 21d → 5d | JUICE-UVS 593310 → JUICE-UVS 592526 FF, JUICE-UVS 592522 FF, JUICE-UVS 594813 FF, JUICE-UVS 593310 |  |
| JUICE-UVS 3094 | UVS STM End Item Data Package | 2019-12-19 → 2019-12-06 (-13d) | 2020-01-21 → 2020-01-07 (-14d) |  |  | 0.5d → 10d |  |  |
| JUICE-UVS 591576 | Contamination Control FY 19 |  |  |  | 62% → 97% |  |  |  |
| JUICE-UVS 592332 | PA FY 19 |  |  |  | 62% → 97% |  |  |  |
| JUICE-UVS 591636 | Safety Engineering FY 19 |  |  |  | 62% → 97% |  |  |  |
| JUICE-UVS 591606 | Parts Engineering FY 19 |  |  |  | 62% → 97% |  |  |  |
| JUICE-UVS 592296 | Materials & Process Support FY 19 |  |  |  | 62% → 97% |  |  |  |
| JUICE-UVS 2225 | QA FY 19 |  |  |  | 62% → 97% |  |  |  |
| JUICE-UVS 592344 | QA FY 19 |  |  |  | 62% → 97% |  |  |  |
| JUICE-UVS 11449 | PI/DPI Oversight - FY 19 |  |  |  | 84% → 99% |  |  |  |
| JUICE-UVS 593683 | PI/DPI Oversight - FY 19 |  |  |  | 84% → 99% |  |  |  |
| JUICE-UVS 10852 | PS Support - FY 19 |  |  |  | 84% → 99% |  |  |  |
| JUICE-UVS 8173 | Co-I Support - FY 19 |  |  |  | 84% → 99% |  |  |  |
| JUICE-UVS594294 | University of Colorado Support - Jul FY 19 | 2019-08-05 → 2019-08-01 A (-4d) | 2019-08-05 → 2019-08-01 A (-4d) |  | 0% → 100% | 745d → none |  |  |
| JUICE-UVS594297 | University of Colorado Support - Aug FY 19 | 2019-08-29 A | 2019-08-29 A |  | 0% → 100% | 728d → none |  |  |
| JUICE-UVS594300 | University of Colorado Support - Sep FY 19 | 2019-09-26 A | 2019-09-26 A |  | 0% → 100% | 711d → none |  |  |
| JUICE-UVS594474 | Johns Hopkins Support - Jul FY 19 | 2019-08-05 → 2019-08-01 A (-4d) | 2019-08-05 → 2019-08-01 A (-4d) |  | 0% → 100% | 745d → none |  |  |
| JUICE-UVS594477 | Johns Hopkins Support - Aug FY 19 | 2019-08-29 A | 2019-08-29 A |  | 0% → 100% | 728d → none |  |  |
| JUICE-UVS594480 | Johns Hopkins Support - Sep FY 19 | 2019-09-26 A | 2019-09-26 A |  | 0% → 100% | 711d → none |  |  |
| JUICE-UVS594654 | SETI Support - Jul FY 19 | 2019-08-05 → 2019-08-01 A (-4d) | 2019-08-05 → 2019-08-01 A (-4d) |  | 0% → 100% | 745d → none |  |  |
| JUICE-UVS594657 | SETI Support - Aug FY 19 | 2019-08-29 A | 2019-08-29 A |  | 0% → 100% | 728d → none |  |  |
| JUICE-UVS594660 | SETI Support - Sep FY 19 | 2019-09-26 A | 2019-09-26 A |  | 0% → 100% | 711d → none |  |  |
| 04 | **Structure/Thermal Model (STM)** | 2019-08-07 → 2019-10-01 (+55d) |  |  |  |  |  |  |
| 01 | **STM Design** | 2019-08-07 → 2019-10-01 (+55d) | 2019-09-05 → 2019-10-14 (+39d) |  |  |  |  |  |
| JUICE-UVS 51112 | STM Housing & Plates Design | 2019-08-14 → 2019-10-01 (+48d) | 2019-08-20 → 2019-10-07 (+48d) |  |  | 0.5d → 10d |  | constraint start on or after 2019-08-14 → start on or after 2019-10-01 |
| JUICE-UVS 593154 | STM Detector Elec Bd Design | 2019-08-14 → 2019-10-01 (+48d) | 2019-08-20 → 2019-10-07 (+48d) |  |  | 0.5d → 10d |  | constraint start on or after 2019-08-14 → start on or after 2019-10-01 |
| JUICE-UVS 593157 | STM Optics & Detector Design | 2019-08-14 → 2019-10-01 (+48d) | 2019-08-20 → 2019-10-07 (+48d) |  |  | 0.5d → 10d |  | constraint start on or after 2019-08-14 → start on or after 2019-10-01 |
| JUICE-UVS 593160 | STM Instrument Elec Bd Design | 2019-08-07 → 2019-10-01 (+55d) | 2019-08-20 → 2019-10-07 (+48d) | 10d → 5d |  | 0.5d → 10d |  | constraint start on or after 2019-08-07 → start on or after 2019-10-01 |
| JUICE-UVS 591282 | STM Housing, Parts & Assy Drwgs | 2019-08-21 → 2019-10-08 (+48d) | 2019-09-05 → 2019-10-14 (+39d) | 10d → 5d |  | 0.5d → 10d |  |  |
| 02 | **STM Board Mass Models** | 2019-09-06 → 2019-10-15 (+39d) | 2019-09-12 → 2019-10-15 (+33d) |  |  |  |  |  |
| 01 | **STM Mass Model Elec Bds** | 2019-09-06 → 2019-10-15 (+39d) | 2019-09-12 → 2019-10-15 (+33d) |  |  |  |  |  |
| JUICE-UVS 51001 | STM Elec Bds Assy | 2019-09-06 → 2019-10-15 (+39d) | 2019-09-12 → 2019-10-15 (+33d) | 5d → 0d |  | 10.5d → 25d |  |  |

| ID | Task | Start | Finish | Duration | Complete | Total float | Predecessors | Other |
| --- | --- | --- | --- | --- | --- | --- | --- | --- |
| 02 | **STM Mass Model Detector Electronic Boards** | 2019-09-06 → 2019-10-15 (+39d) | 2019-09-06 → 2019-10-15 (+39d) |  |  |  |  |  |
| JUICE-UVS 51109 | STM Detector Electronic Bd Fab | 2019-09-06 → 2019-10-15 (+39d) | 2019-09-06 → 2019-10-15 (+39d) |  |  | 15.5d → 25d |  |  |
| 03 | **STM Optics & Detector Mass Models** | 2019-09-06 → 2019-10-15 (+39d) | 2019-09-26 → 2019-11-04 (+39d) |  |  |  |  |  |
| 01 | **STM Mass Model Grating** | 2019-09-06 → 2019-10-15 (+39d) | 2019-09-12 → 2019-10-21 (+39d) |  |  |  |  |  |
| JUICE-UVS 591291 | STM MM Grating Fab | 2019-09-06 → 2019-10-15 (+39d) | 2019-09-12 → 2019-10-21 (+39d) |  |  | 0.5d → 10d |  |  |
| 02 | **STM Mass Model Mirror** | 2019-09-13 → 2019-10-22 (+39d) | 2019-09-19 → 2019-10-28 (+39d) |  |  |  |  |  |
| JUICE-UVS 591297 | STM Mirror Fab | 2019-09-13 → 2019-10-22 (+39d) | 2019-09-19 → 2019-10-28 (+39d) |  |  | 0.5d → 10d |  |  |
| 03 | **STM Mass Model Detector** | 2019-09-20 → 2019-10-29 (+39d) | 2019-09-26 → 2019-11-04 (+39d) |  |  |  |  |  |
| JUICE-UVS 591303 | STM Detector Fab | 2019-09-20 → 2019-10-29 (+39d) | 2019-09-26 → 2019-11-04 (+39d) |  |  | 0.5d → 10d |  |  |
| 04 | **STM Mass Model Housing** | 2019-09-06 → 2019-10-15 (+39d) | 2019-09-19 → 2019-10-28 (+39d) |  |  |  |  |  |
| JUICE-UVS 51115 | STM Housing Fab | 2019-09-06 → 2019-10-15 (+39d) | 2019-09-19 → 2019-10-16 (+27d) | 10d → 2d |  | 5.5d → 23d |  |  |
| JUICE-UVS 51118 | STM Plate Fab | 2019-09-06 → 2019-10-15 (+39d) | 2019-09-19 → 2019-10-28 (+39d) |  |  | 5.5d → 15d |  |  |
| 05 | **STM Mass Model Assembly** | 2019-09-27 → 2019-11-05 (+39d) | 2019-10-17 → 2019-11-11 (+25d) |  |  |  |  |  |
| JUICE-UVS 591285 | STM Assy | 2019-09-27 → 2019-11-05 (+39d) | 2019-10-17 → 2019-11-11 (+25d) | 15d → 5d |  | 0.5d → 10d | JUICE-UVS 11658, JUICE-UVS 51118, JUICE-UVS 51001, JUICE-UVS 51109, JUICE-UVS 51115, JUICE-UVS 591303, JUICE-UVS 591297, JUICE-UVS 591291, JUICE-UVS 591282 → JUICE-UVS593913, JUICE-UVS 591282, JUICE-UVS 591291, JUICE-UVS 591297, JUICE-UVS 591303, JUICE-UVS 51115, JUICE-UVS 51109, JUICE-UVS 51001, JUICE-UVS 51118, JUICE-UVS 11658 |  |
| 06 | **STM Mass Model Bench-Checkout/Test** | 2019-10-18 → 2019-11-12 (+25d) | 2019-10-29 → 2019-11-13 (+15d) |  |  |  |  |  |
| JUICE-UVS 51049 | STM Bench Check-Out | 2019-10-18 → 2019-11-12 (+25d) | 2019-10-24 → 2019-11-12 (+19d) | 5d → 1d |  | 0.5d → 10d |  |  |
| JUICE-UVS 51052 | Dis-assemble Test Config and Ready JUICE-UVS & GSE for Move to Vibe TF | 2019-10-25 → 2019-11-13 (+19d) | 2019-10-29 → 2019-11-13 (+15d) | 3d → 1d |  | 0.5d → 10d |  |  |
| 07 | **STM Mass Model Testing** | 2019-10-30 → 2019-11-14 (+15d) | 2019-12-19 → 2019-12-06 (-13d) |  |  |  |  |  |
| 01 | **STM Mass Model Vibration Testing** | 2019-10-30 → 2019-11-14 (+15d) | 2019-12-02 → 2019-11-21 (-11d) |  |  |  |  |  |
| JUICE-UVS 4618 | STM Vibration Test Procedure | 2019-10-30 → 2019-11-14 (+15d) | 2019-11-12 → 2019-11-15 (+3d) | 10d → 2d |  | 0.5d → 10d |  |  |
| JUICE-UVS 4624 | Move STM & GSE over to Vibration Test Facility & Setup | 2019-10-30 → 2019-11-14 (+15d) | 2019-10-30 → 2019-11-14 (+15d) | 0.5d → 0d |  | 10d → 12d |  |  |
| JUICE-UVS 4620 | STM Vibration TRR | 2019-11-13 → 2019-11-18 (+5d) | 2019-11-13 → 2019-11-18 (+5d) | 0.5d → 0d |  | 0.5d → 10d |  |  |
| JUICE-UVS 4626 | Conduct STM Vibration Tests | 2019-11-13 → 2019-11-18 (+5d) | 2019-11-19 → 2019-11-18 (-1d) | 4d → 1d |  | 0.5d → 10d |  |  |
| JUICE-UVS 4628 | Closeout STM Vibration "As-Run" TP/Report |  | 2019-11-26 → 2019-11-19 (-7d) | 5d → 1d |  | 0.5d → 10d |  |  |
| JUICE-UVS 4632 | Dis-assemble Vibration Test Configuration | 2019-11-26 → 2019-11-20 (-6d) | 2019-11-27 → 2019-11-20 (-7d) |  |  | 0.5d → 10d |  |  |
| JUICE-UVS 592437 | Reassemble Vibration Test Configuration | 2019-11-27 → 2019-11-21 (-6d) | 2019-12-02 → 2019-11-21 (-11d) |  |  | 0.5d → 10d |  |  |
| 02 | **STM Mass Model Thermal Balance Testing** | 2019-10-30 → 2019-11-14 (+15d) | 2019-12-19 → 2019-12-05 (-14d) |  |  |  |  |  |
| JUICE-UVS 4650 | STM Thermal Test Procedure | 2019-10-30 → 2019-11-14 (+15d) | 2019-11-12 → 2019-11-15 (+3d) | 10d → 2d |  | 22d → 16d |  |  |
| JUICE-UVS 4652 | STM TB TRR | 2019-12-03 → 2019-11-22 (-11d) | 2019-12-03 → 2019-11-22 (-11d) | 0.5d → 0d |  | 0.5d → 10d |  |  |
| JUICE-UVS 4656 | Move STM & GSE over to TB Test Facility | 2019-12-02 → 2019-11-22 (-10d) | 2019-12-02 → 2019-11-22 (-10d) | 0.5d → 0d |  | 0.5d → 10d |  |  |
| JUICE-UVS 4658 | Clean STM for TB & Install into Chamber | 2019-12-03 → 2019-11-22 (-11d) | 2019-12-04 → 2019-11-22 (-12d) |  |  | 0.5d → 10d |  |  |
| JUICE-UVS 51073 | Conduct STM TB Tests (1-cycle) | 2019-12-04 → 2019-11-25 (-9d) | 2019-12-11 → 2019-12-03 (-8d) |  |  | 0.5d → 10d |  |  |
| JUICE-UVS 4670 | Remove STM fm Chamber & Dbl Bag | 2019-12-11 → 2019-12-04 (-7d) | 2019-12-12 → 2019-12-04 (-8d) |  |  | 0.5d → 10d |  |  |
| JUICE-UVS 51076 | Closeout STM TB "As-Run" TP/Report | 2019-12-12 → 2019-12-05 (-7d) | 2019-12-19 → 2019-12-05 (-14d) | 5d → 1d |  | 0.5d → 10d |  |  |
| 03 | **STM Mass Model Properties Measurements** | 2019-12-12 → 2019-12-05 (-7d) | 2019-12-16 → 2019-12-06 (-10d) |  |  |  |  |  |
| JUICE-UVS 4678 | Move STM over to Mass Prop Test Stand | 2019-12-12 → 2019-12-05 (-7d) | 2019-12-12 → 2019-12-05 (-7d) | 0.5d → 0d |  | 5.5d → 12d |  |  |
| JUICE-UVS 4680 | STM Mass Prop Test Preparation | 2019-12-13 → 2019-12-05 (-8d) | 2019-12-13 → 2019-12-05 (-8d) | 0.5d → 0d |  | 5.5d → 12d |  |  |
| JUICE-UVS 4682 | Conduct STM Mass Prop Measurements | 2019-12-13 → 2019-12-05 (-8d) | 2019-12-13 → 2019-12-05 (-8d) | 0.5d → 1d |  | 5.5d → 12d |  |  |
| JUICE-UVS 4684 | Closeout STM Mass Prop "As-Run" Proc/Report | 2019-12-16 → 2019-12-06 (-10d) | 2019-12-16 → 2019-12-06 (-10d) | 0.5d → 0d |  | 5.5d → 12d |  |  |
| 08 | **STM Mass Model Final Closeout & Delivery to ESA** | 2019-12-16 → 2019-12-06 (-10d) |  |  |  |  |  |  |
| JUICE-UVS 51055 | Move Clean/Bag'd STM into Hi-Bay Clean Cabin | 2019-12-16 → 2019-12-06 (-10d) | 2019-12-16 → 2019-12-06 (-10d) |  |  | 5.5d → 12d |  |  |
| JUICE-UVS 51058 | Inspect & Photograph STM | 2019-12-17 → 2019-12-06 (-11d) | 2019-12-17 → 2019-12-06 (-11d) |  |  | 5.5d → 12d |  |  |
| JUICE-UVS 51064 | STM Schedule Margin | 2019-12-17 → 2019-12-09 (-8d) | 2020-01-10 → 2019-12-31 (-10d) |  |  | 5.5d → 12d |  |  |
| 03 | **Mechanical Procurements** |  | 2019-08-19 → 2019-10-01 (+43d) |  |  |  |  |  |
| JUICE-UVS 592542 | SVT MLI Design & Procure June 17 Lead Time |  | 2019-08-05 A |  |  | 12d → none |  |  |
| JUICE-UVS593808 | SVT FM & STM Mechanical Materials Procurement Oct 17 Lead Time |  | 2019-08-05 → 2019-09-25 A (+51d) |  |  | 5d → none |  |  |
| JUICE-UVS 11646 | FM Shipping Cases Procurement Delivery | 2019-08-05 A | 2019-08-05 A |  | 0% → 100% | 5d → none |  |  |
| JUICE-UVS 592533 | MLI Design MLI - Final Dec 17 Delivery | 2019-08-05 A | 2019-08-16 A |  | 0% → 100% | 2d → none |  |  |
| JUICE-UVS 592539 | MLI Design & Procure Delivery | 2019-08-19 → 2019-09-30 (+42d) | 2019-08-19 → 2019-10-01 (+43d) |  |  | 2d → 21d |  | constraint start on or after 2019-08-19 → start on or after 2019-09-30 |
| JUICE-UVS593829 | FM & STM Mechanical Materials Procurement Oct 17 Delivery | 2019-08-05 → 2019-09-30 (+56d) | 2019-08-05 → 2019-09-30 (+56d) | 1d → 0.5d |  | 5d → 1.5d |  | constraint none → start on or after 2019-09-30 |
| JUICE-UVS593913 | FM & STM Mechanical Materials Oct 17 Material Task Receipt | 2019-08-05 → 2019-09-30 (+56d) | 2019-08-05 → 2019-09-30 (+56d) |  |  | 5d → 1.5d |  |  |
| JUICE-UVS593949 | MLI Design & Procure Material Task Receipt | 2019-08-19 → 2019-10-01 (+43d) | 2019-08-19 → 2019-10-01 (+43d) |  |  | 2d → 21d |  |  |
| 02 | **Electrical** |  | 2019-08-05 → 2019-09-27 (+53d) |  |  |  |  |  |
| 06 | **Electrical Procurements** |  | 2019-08-05 → 2019-09-27 (+53d) |  |  |  |  |  |
| 05 | **Harness Procurement** |  | 2019-08-05 → 2019-09-27 (+53d) |  |  |  |  |  |
| JUICE-UVS593856 | SVT Procure Long Lead FM Harness Parts Nov 17 Lead Time |  | 2019-08-05 → 2019-09-27 (+53d) |  |  | 27.5d → 22d |  |  |
| JUICE-UVS 593340 | Long Lead FM Harness Parts Nov 17 Delivery | 2019-08-05 → 2019-09-27 (+53d) | 2019-08-05 → 2019-09-27 (+53d) |  |  | 45d → 22d |  |  |
| JUICE-UVS 593261 | Long Lead FM Harness Parts Nov 17 Material Task Receipt | 2019-08-05 → 2019-09-27 (+53d) | 2019-08-05 → 2019-09-27 (+53d) |  |  | 45d → 22d |  |  |
| 04 | **Flight Software** |  | 2019-10-01 → 2019-10-17 (+16d) |  |  |  |  |  |
| JUICE-UVS 3417 | S/W Configuration Mgmt Phase C/D FY 19 |  |  |  | 62% → 97% |  |  |  |
| JUICE-UVS 3464 | SW Project Management & Team Meetings Phase C/D FY 19 |  |  |  | 62% → 99% |  |  |  |
| JUICE-UVS 592839 | SW Support/Clerical/Misc. Phase C/D FY 19 |  |  |  | 62% → 97% |  |  |  |
| JUICE-UVS 3427 | S/W Project Review Meetings (PDR, CDR, etc.) FY 19 |  |  |  | 62% → 97% |  |  |  |
| 05 | **FSW Build 3 (EM)** |  | 2019-09-24 → 2019-09-30 (+6d) |  |  |  |  |  |
| JUICE-UVS 3493 | Build 3 Version Description Document (VDD) | 2019-08-05 → 2019-09-03 A (+29d) | 2019-08-05 → 2019-09-03 A (+29d) |  | 0% → 100% | 11d → none |  | constraint start on or after 2019-08-05 → start on or after 2019-09-03 |
| JUICE-UVS 592503 | FSW Design Document (As Build) Phase 2 | 2019-08-19 → 2019-09-03 A (+15d) | 2019-09-17 → 2019-09-16 A (-1d) | 20d → 10d | 0% → 100% | 16d → none |  | constraint start on or after 2019-08-19 → start on or after 2019-09-03 |
| JUICE-UVS11520 | SW User Manual Phase 1 | 2019-08-05 → 2019-09-03 A (+29d) | 2019-08-23 → 2019-09-16 A (+24d) | 15d → 10d | 0% → 100% | 11d → none | JUICE-UVS 3493, JUICE-UVS 592746, JUICE-UVS 3496 → JUICE-UVS 3496, JUICE-UVS 592746 | constraint start on or after 2019-02-04 → start on or after 2019-09-03 |
| JUICE-UVS 593379 | SW User Manual Phase 2 | 2019-08-26 → 2019-09-30 (+35d) | 2019-09-24 → 2019-09-30 (+6d) | 20d → 1d |  | 11d → 23d | JUICE-UVS11520 → JUICE-UVS 2370 SS | constraint none → start on or after 2019-09-30 |
| 06 | **FSW Build 4 (FM)** | 2019-08-05 → 2019-09-30 (+56d) | 2019-09-03 → 2019-10-17 (+44d) |  |  |  |  |  |
| JUICE-UVS 3426 | S/W Build 4 Code (FM I&T PROMs) | 2019-08-05 → 2019-09-30 (+56d) | 2019-08-09 → 2019-10-02 (+54d) | 5d → 3d |  | 28d → 9d |  | constraint start on or after 2019-08-05 → start on or after 2019-09-30 |

| ID | Task | Start | Finish | Duration | Complete | Total float | Predecessors | Other |
| --- | --- | --- | --- | --- | --- | --- | --- | --- |
| JUICE-UVS 3435 | S/W Build 4 Test (FM I&T PROMs) | 2019-08-12 → 2019-10-03 (+52d) | 2019-08-16 → 2019-10-07 (+52d) | 5d → 3d |  | 28d → 9d |  |  |
| JUICE-UVS 592398 | ATP Dry Run on EM & FM | 2019-08-19 → 2019-10-08 (+50d) | 2019-08-23 → 2019-10-10 (+48d) | 5d → 3d |  | 28d → 9d |  |  |
| JUICE-UVS 592401 | ATP Run for Score on FM + Test Report | 2019-08-27 → 2019-10-14 (+48d) | 2019-08-29 → 2019-10-16 (+48d) |  |  | 28d → 9d |  |  |
| JUICE-UVS 3495 | Build 4 Version Description Document (VDD) | 2019-09-03 → 2019-10-17 (+44d) | 2019-09-03 → 2019-10-17 (+44d) |  |  | 42d → 9d |  |  |
| JUICE-UVS 592749 | Build 4 SW Delivery | 2019-09-03 → 2019-10-17 (+44d) | 2019-09-03 → 2019-10-17 (+44d) |  |  | 28d → 10d |  |  |
| 08 | **TM/TC Database Definitions: SIS Usage & SC Operations** |  | 2019-08-14 → 2019-09-30 (+47d) |  |  |  |  |  |
| JUICE-UVS594018 | Incorporate feedback from Airbus/ESA |  | 2019-08-14 → 2019-09-30 (+47d) |  |  | 39d → 22d |  |  |
| 11 | **SW Bug Fixes** |  | 2019-08-05 → 2019-09-30 (+56d) |  |  |  |  |  |
| JUICE-UVS594216 | SW Bug Fixes |  | 2019-08-05 → 2019-09-30 (+56d) |  | 100% → 99% |  |  |  |
| 05 | **I&T** |  | 2019-10-30 → 2019-11-15 (+16d) |  |  |  |  |  |
| 01 | **EM AI&T** |  | 2019-08-29 → 2019-11-15 (+78d) |  |  |  |  |  |
| 04 | **EM Environmental Test** |  | 2019-08-29 → 2019-11-15 (+78d) |  |  |  |  |  |
| 02 | **EM1 Environmental Test** |  | 2019-08-29 → 2019-10-18 (+50d) |  |  |  |  |  |
| 05 | **EM/FM I&T Anomaly Resolution** |  | 2019-08-29 → 2019-10-18 (+50d) |  |  |  |  |  |
| JUICE-UVS594213 | EM/FM I&T Anomaly Resolution |  | 2019-08-29 → 2019-10-18 (+50d) |  | 92% → 94% | 27d → 7d |  |  |
| 03 | **EM2 Final Integration** |  | 2019-08-19 → 2019-11-15 (+88d) |  |  |  |  |  |
| 01 | **EM2 Final Assembly/Testing** |  | 2019-08-16 → 2019-11-14 (+90d) |  |  |  |  |  |
| JUICE-UVS594162 | End-to-End Bench Test | 2019-08-05 → 2019-11-01 (+88d) | 2019-08-09 → 2019-11-07 (+90d) |  |  | 56d → 33d |  | constraint start on or after 2019-08-05 → start on or after 2019-11-01 |
| JUICE-UVS594177 | CAL & Test Report | 2019-08-05 → 2019-11-01 (+88d) | 2019-08-16 → 2019-11-14 (+90d) |  |  | 51d → 28d |  | constraint start on or after 2019-08-05 → start on or after 2019-11-01 |
| 02 | **EM2 Delivery to FSW** | 2019-08-19 → 2019-11-15 (+88d) | 2019-08-19 → 2019-11-15 (+88d) |  |  |  |  |  |
| JUICE-UVS594165 | EM2 Delivery to FSW | 2019-08-19 → 2019-11-15 (+88d) | 2019-08-19 → 2019-11-15 (+88d) |  |  | 51d → 28d |  |  |
| 02 | **FM AI&T** |  | 2019-10-30 → 2019-10-31 (+1d) |  |  |  |  |  |
| 02 | **Integrate Electronics** |  | 2019-08-23 → 2019-09-30 (+38d) |  |  |  |  |  |
| JUICE-UVS 15712 | S/W Build 4 ATP (Run for Score on FM) |  | 2019-08-23 → 2019-09-30 (+38d) |  |  | 27.5d → 22d |  |  |
| 04 | **FM Environmental Test** |  | 2019-10-08 → 2019-10-29 (+21d) |  |  |  |  |  |
| 01 | **EMI/EMC Test** |  | 2019-09-05 → 2019-09-04 (-1d) |  |  |  |  |  |
| 01 | **EMI/EMC Testing** |  | 2019-08-16 → 2019-09-03 (+18d) |  |  |  |  |  |
| JUICE-UVS 5610 | EMI/EMC Test Report |  | 2019-08-16 → 2019-09-03 A (+18d) |  | 50% → 100% | 36d → none |  |  |
| 02 | **Magnetics Susceptibility Testing** |  | 2019-09-05 → 2019-09-04 (-1d) |  |  |  |  |  |
| JUICE-UVS 5625 | Collect Mag Test Data | 2019-08-06 A | 2019-08-06 A |  | 0% → 100% | 24d → none |  |  |
| JUICE-UVS 5622 | Closeout As-Run Mag Test Proc/Report | 2019-08-07 A | 2019-09-05 → 2019-09-04 A (-1d) |  | 0% → 100% | 24d → none |  |  |
| 02 | **Vibe Test** |  | 2019-08-29 → 2019-10-01 (+33d) |  |  |  |  |  |
| JUICE-UVS 15670 | Vibe Test Report | 2019-08-06 A | 2019-08-12 A |  | 0% → 100% | 40d → none |  |  |
| JUICE-UVS 15667 | Inspection & Physical Properties | 2019-08-29 → 2019-10-01 (+33d) | 2019-08-29 → 2019-10-01 (+33d) |  |  | 2d → 19.5d |  |  |
| 03 | **Thermal Test** |  | 2019-08-28 → 2019-10-01 (+34d) |  |  |  |  |  |
| JUICE-UVS 15679 | FM TVAC Instrument testing |  | 2019-08-14 A |  | 50% → 100% | 5d → none |  |  |
| JUICE-UVS 15682 | TVAC Test Report | 2019-08-15 A | 2019-08-28 A |  | 0% → 100% | 28d → none |  |  |
| JUICE-UVS 592551 | Install Blankets | 2019-08-20 → 2019-09-04 A (+15d) | 2019-08-20 → 2019-09-04 A (+15d) |  | 0% → 100% | 2d → none | JUICE-UVS593949, JUICE-UVS 592533, JUICE-UVS 15679, JUICE-UVS 592548 → JUICE-UVS 592548, JUICE-UVS 15679, JUICE-UVS 592533 |  |
| JUICE-UVS 16048 | Thermal Balance test, analysis & test correlation | 2019-08-21 → 2019-09-05 A (+15d) | 2019-08-27 → 2019-09-27 A (+31d) |  | 0% → 100% | 2d → none |  |  |
| JUICE-UVS 16051 | Remove Blankets | 2019-08-28 → 2019-09-30 (+33d) | 2019-08-28 → 2019-10-01 (+34d) | 1d → 0.5d |  | 2d → 1.5d |  | constraint none → start on or after 2019-09-30 |
| 04 | **FM Calibration & Pre-Delivery Testing** | 2019-08-29 → 2019-10-01 (+33d) | 2019-10-08 → 2019-10-29 (+21d) |  |  |  |  |  |
| JUICE-UVS 5577 | FM Sensor UV Calibration | 2019-08-29 → 2019-10-01 (+33d) | 2019-09-30 → 2019-10-22 (+22d) | 20d → 15d |  | 2d → 1.5d | JUICE-UVS 15667, JUICE-UVS 2178, JUICE-UVS 9159 → JUICE-UVS 16051, JUICE-UVS 9159, JUICE-UVS 2178 |  |
| JUICE-UVS 15595 | Cal Test Report | 2019-10-04 → 2019-10-22 (+18d) | 2019-10-07 → 2019-10-24 (+17d) |  |  | 2d → 4.5d | JUICE-UVS 15583 → JUICE-UVS 5577 |  |
| JUICE-UVS 5580 | Perform Radiometric_End-to-End Test | 2019-09-30 → 2019-10-22 (+22d) | 2019-10-02 → 2019-10-24 (+22d) |  |  | 2d → 1.5d |  |  |
| JUICE-UVS 15589 | Test Results Closeout Review | 2019-10-08 → 2019-10-24 (+16d) | 2019-10-08 → 2019-10-24 (+16d) |  |  | 2d → 4.5d | JUICE-UVS 592503, JUICE-UVS 5622, JUICE-UVS 5610, JUICE-UVS 15670, JUICE-UVS 15682, JUICE-UVS 15595 → JUICE-UVS593949, JUICE-UVS 15595, JUICE-UVS 15682, JUICE-UVS 15670, JUICE-UVS 5610, JUICE-UVS 5622 |  |
| JUICE-UVS 5586 | UVS Sensor NVRR test | 2019-10-02 → 2019-10-24 (+22d) | 2019-10-02 → 2019-10-24 (+22d) |  |  | 2d → 1.5d |  |  |
| JUICE-UVS 5592 | Full Func Test | 2019-10-02 → 2019-10-24 (+22d) | 2019-10-03 → 2019-10-25 (+22d) |  |  | 2d → 1.5d | JUICE-UVS 15712, JUICE-UVS 5586 → JUICE-UVS 5586 |  |
| JUICE-UVS 15583 | UVS final Visual Inspection, Black light | 2019-10-03 → 2019-10-25 (+22d) | 2019-10-03 → 2019-10-25 (+22d) |  |  | 2d → 1.5d | JUICE-UVS 5592 → JUICE-UVS 15667 FF, JUICE-UVS 5592 |  |
| JUICE-UVS 6036 | Photograph Instrument | 2019-10-04 → 2019-10-28 (+24d) | 2019-10-04 → 2019-10-28 (+24d) |  |  | 3.5d → 1.5d |  |  |
| JUICE-UVS 16030 | Install final Red tag items | 2019-10-04 → 2019-10-28 (+24d) | 2019-10-04 → 2019-10-28 (+24d) |  |  | 3.5d → 1.5d |  |  |
| JUICE-UVS 16036 | Package, Ship preparations, TSA inspection prior to boxing up | 2019-10-08 → 2019-10-28 (+20d) | 2019-10-08 → 2019-10-29 (+21d) |  |  | 2d → 1.5d | JUICE-UVS 593261, JUICE-UVS594213, JUICE-UVS 16030, JUICE-UVS 593379, JUICE-UVS 15589, JUICE-UVS 11664 → JUICE-UVS 11664, JUICE-UVS 16030, JUICE-UVS594213, JUICE-UVS 593261 |  |
| 05 | **FM Delivery** | 2019-10-09 → 2019-10-29 (+20d) | 2019-10-30 → 2019-10-31 (+1d) |  |  |  |  |  |
| JUICE-UVS 5607 | FM Schedule Margin | 2019-10-09 → 2019-10-29 (+20d) |  | 15d → 0d |  | 2d → 1.5d | JUICE-UVS594018, JUICE-UVS 592749, JUICE-UVS 16036 → JUICE-UVS 16036, JUICE-UVS594018 |  |
| JUICE-UVS 5598 | FM JUICE-UVS Delivery | 2019-10-30 → 2019-10-31 (+1d) | 2019-10-30 → 2019-10-31 (+1d) |  |  | 2d → 0d | JUICE-UVS 11649, JUICE-UVS594810, JUICE-UVS594807, JUICE-UVS594804, JUICE-UVS594801, JUICE-UVS 593322 FF, JUICE-UVS 5607, JUICE-UVS 2469, JUICE-UVS 3495 → JUICE-UVS 15589, JUICE-UVS 15712, JUICE-UVS 592749, JUICE-UVS 3495, JUICE-UVS 2469, JUICE-UVS 5607, JUICE-UVS 593322 FF, JUICE-UVS594801, JUICE-UVS594804, JUICE-UVS594807, JUICE-UVS594810, JUICE-UVS 11649 FF | constraint none → mandatory finish 2019-10-31 |
| 03 | **E/MGSE AI&T** |  | 2019-08-29 → 2019-10-29 (+61d) |  |  |  |  |  |
| 02 | **Mechanical GSE** |  | 2019-08-29 → 2019-10-29 (+61d) |  |  |  |  |  |
| JUICE-UVS 11649 | Vibe Test Fixture & OGSE Fab |  | 2019-08-29 → 2019-10-29 (+61d) |  |  | 43d → 1d |  |  |

## Version 5 (data date 2019-11-22, saved 2019-12-12, file JUICE UVS IMS DD 20191122 NC.xer)

Last finish stays 2022-09-21. Complete tasks 910 → 962.

Changed:

| ID | Task | Start | Finish | Duration | Complete | Total float | Other |
| --- | --- | --- | --- | --- | --- | --- | --- |
| 01 | **H/W Deliverables** |  | 2020-01-21 → 2020-03-23 (+62d) |  |  |  |  |
| JUICE-UVS 089 | JUICE UVS FM Delivery Target LOE | 2019-10-31 → 2020-01-21 (+82d) | 2019-10-31 → 2020-01-21 (+82d) |  |  |  | constraint mandatory finish 2019-10-31 → mandatory finish 2020-01-21 |
| JUICE-UVS 594213 | JUICE UVS FM Delivery Target Discrete | 2019-10-31 → 2020-01-21 (+82d) | 2019-10-31 → 2020-01-21 (+82d) |  |  |  | constraint mandatory finish 2019-10-31 → mandatory finish 2020-01-21 |
| JUICE-UVS3081 | EM 2 Delivery SwRI | 2019-12-31 → 2020-01-21 (+21d) | 2019-12-31 → 2020-01-21 (+21d) |  |  |  | constraint mandatory finish 2019-12-31 → mandatory finish 2020-01-21 |
| JUICE-UVS 092 | JUICE-UVS STM Delivery to ESA | 2020-01-21 → 2020-03-23 (+62d) | 2020-01-21 → 2020-03-23 (+62d) |  |  |  | constraint mandatory finish 2020-01-21 → mandatory finish 2020-03-23 |
| JUICE-UVS 592770 | NASA PSR | 2019-10-16 A | 2019-10-16 A |  | 0% → 100% | 0d → none |  |
| JUICE-UVS 594216 | ESA QR | 2019-10-16 A | 2019-10-16 A |  | 0% → 100% | 0d → none |  |
| JUICE-UVS 1519 | Program Management Oversight FY 19 |  | 2019-09-30 A |  | 99% → 100% | 0d → none |  |
| JUICE-UVS 592492 | Additional ESA Support FY 19 |  | 2019-09-30 A |  | 99% → 100% | 0d → none |  |
| JUICE-UVS 1522 | Program Management Oversight FY 20 | 2019-10-01 A | 2020-09-30 → 2020-10-01 A (+1d) |  | 0% → 100% | 0d → none |  |
| JUICE-UVS 592495 | Additional ESA Support FY 20 | 2019-10-01 A | 2020-09-30 A |  | 0% → 100% | 0d → none |  |
| JUICE-UVS 1525 | Program Management Oversight FY 21 End of Phase C | 2020-10-01 A |  |  |  |  |  |
| 02 | **Project Control** |  | 2019-10-31 → 2020-01-21 (+82d) |  |  |  |  |
| JUICE-UVS 0978 | Planning / EVM FY 2019 |  | 2019-10-31 → 2020-01-21 (+82d) |  | 87% → 80% |  |  |
| JUICE-UVS 1068 | Financial FY 2019 |  | 2019-09-30 A |  | 99% → 100% | 0d → none |  |
| JUICE-UVS 1071 | Financial FY 2020 | 2019-10-01 A |  |  | 0% → 15% |  |  |
| 04 | **CAM Support** |  | 2019-09-30 → 2019-12-17 (+78d) |  |  |  |  |
| 01 | **CAM Support Labor** |  | 2019-09-30 → 2019-12-17 (+78d) |  |  |  |  |
| JUICE-UVS 592245 | CAM FY 19 |  | 2019-09-30 → 2019-12-17 (+78d) |  | 98% → 85% | 23d → 22d |  |
| 02 | **CAM Support Non-Labor** |  | 2019-09-30 → 2019-12-17 (+78d) |  |  |  |  |
| JUICE-UVS 593673 | CAM FY 19 |  | 2019-09-30 → 2019-12-17 (+78d) |  | 98% → 85% | 23d → 22d |  |
| 01 | **Travel Phase C** |  | 2020-12-01 → 2021-01-22 (+52d) |  |  |  |  |
| JUICE-UVS 592554 | Additional FY 21 ESA Travel (AI&T Support, x2 End to End) | 2019-10-01 A | 2020-09-25 A |  | 0% → 100% | 278d → none |  |
| JUICE-UVS 592953 | Science Team Meeting | 2019-10-07 A | 2019-10-09 A |  | 0% → 100% | 738d → none |  |
| JUICE-UVS 592333 | FM Delivery Travel | 2019-10-31 → 2019-12-17 (+47d) | 2019-10-31 → 2019-12-17 (+47d) |  |  | 1d → 23d | constraint start on or after 2019-10-31 → start on or after 2019-12-17 |
| JUICE-UVS 592328 | STM Delivery Travel | 2019-11-25 → 2020-01-20 (+56d) | 2019-11-27 → 2020-01-22 (+56d) |  |  | 451d → 416d | constraint start on or after 2019-11-25 → start on or after 2020-01-20 |
| JUICE-UVS 592336 | S/C End to End Testing (x2) | 2019-12-02 → 2020-01-23 (+52d) | 2020-12-01 → 2021-01-22 (+52d) |  |  | 451d → 416d |  |
| JUICE-UVS 592224 | Project Support FY 19 |  | 2019-09-30 → 2019-09-27 A (-3d) |  | 99% → 100% | 0d → none |  |
| JUICE-UVS 592227 | Project Support FY 20 | 2019-10-01 → 2019-09-30 A (-1d) |  | 252d → 253d | 0% → 15% |  |  |
| 07 | **Review Support** |  | 2019-10-28 → 2019-12-13 (+46d) |  |  |  |  |
| 01 | **ESA QR** |  | 2019-10-28 → 2019-12-13 (+46d) |  |  |  |  |
| JUICE-UVS594174 | ESA QR Preparation Part 2 |  | 2019-10-15 → 2019-09-27 A (-18d) |  | 0% → 100% | 1d → none |  |
| JUICE-UVS 593316 | ESA QR Submit | 2019-10-15 A | 2019-10-15 A |  | 0% → 100% | 1d → none |  |
| JUICE-UVS 593319 | ESA QR Conduct | 2019-10-16 A | 2019-10-16 A |  | 0% → 100% | 0d → none |  |
| JUICE-UVS 593322 | ESA QR RFA Closeout | 2019-10-17 A | 2019-10-28 → 2019-12-13 (+46d) |  |  | 2d → 24d |  |
| 05 | **NASA Pre-Ship Review (I-PSR)** |  | 2019-10-28 → 2019-12-13 (+46d) |  |  |  |  |
| JUICE-UVS 2370 | NASA I-PSR Preparation |  | 2019-10-15 A |  | 0% → 100% | 1d → none |  |
| JUICE-UVS 2590 | Submit NASA I-PSR Package | 2019-10-15 A | 2019-10-15 A |  | 0% → 100% | 1d → none |  |
| JUICE-UVS 2380 | Conduct NASA I-PSR | 2019-10-16 A | 2019-10-16 A |  | 0% → 100% | 0d → none |  |
| JUICE-UVS 2390 | NASA I-PSR RFA Closeout | 2019-10-17 A | 2019-10-28 → 2019-12-13 (+46d) |  |  | 3d → 24d |  |
| 08 | **Configuration Management/Document Control** |  | 2019-10-01 → 2019-12-17 (+77d) |  |  |  |  |
| 01 | **Configuration Management** |  | 2019-10-01 → 2019-12-17 (+77d) |  |  |  |  |
| JUICE-UVS 591486 | CM FY 19 |  | 2019-10-01 → 2019-12-17 (+77d) |  | 97% → 85% |  |  |
| JUICE-UVS 591516 | Document Control FY 19 |  | 2019-10-01 A |  | 97% → 100% | 22d → none |  |
| 09 | **Control Stores** |  | 2019-10-01 → 2019-12-17 (+77d) |  |  |  |  |
| JUICE-UVS 591546 | Controlled Stores FY 19 |  | 2019-10-01 → 2019-12-17 (+77d) |  | 97% → 85% |  |  |
| JUICE-UVS 592269 | Customs Broker FY 19 |  | 2019-09-30 A |  | 99% → 100% | 0d → none |  |
| JUICE-UVS 592275 | Customs Broker FY 20 | 2019-10-01 A |  |  | 0% → 15% |  | constraint none → start on or after 2019-10-01 |
| JUICE-UVS 591666 | SE FY 19 |  | 2019-09-30 A |  | 99% → 100% | 0d → none |  |
| JUICE-UVS 592507 | Additional ESA Support FY 19 |  | 2019-09-30 A |  | 99% → 100% | 0d → none |  |
| JUICE-UVS 591669 | SE FY 20 | 2019-10-01 → 2019-09-30 A (-1d) |  |  | 0% → 15% |  |  |
| JUICE-UVS592509 | Additional ESA Support FY 20 | 2019-10-01 → 2019-09-30 A (-1d) |  |  | 0% → 15% |  |  |
| 03 | **Analyses** |  | 2019-10-15 → 2019-12-13 (+59d) |  |  |  |  |
| 05 | **Thermal Analyses** |  | 2019-10-15 → 2019-12-13 (+59d) |  |  |  |  |
| JUICE-UVS 592522 | Additional Thermal Interface Analysis FY 18 |  | 2019-10-15 → 2019-12-13 (+59d) |  |  | 12d → 24d |  |
| 06 | **Structural Analyses** |  | 2019-10-15 → 2019-12-13 (+59d) |  |  |  |  |
| JUICE-UVS 592526 | Additional Structural Interface Analysis FY 18 |  | 2019-10-15 → 2019-12-13 (+59d) |  |  | 12d → 24d |  |
| 08 | **Revised Thermal Analysis** |  | 2019-10-15 → 2019-12-13 (+59d) |  |  |  |  |
| JUICE-UVS 594813 | Revised Thermal Analysis |  | 2019-10-15 → 2019-12-13 (+59d) |  |  | 12d → 24d |  |
| 04 | **Verification** |  | 2020-01-07 → 2020-03-11 (+64d) |  |  |  |  |
| 02 | **Acceptance Data Package** |  | 2020-01-07 → 2020-03-11 (+64d) |  |  |  |  |
| JUICE-UVS 2185 | UVS FM End Item Data Package |  | 2019-10-24 → 2019-12-31 (+68d) | 40d → 59d |  | 5d → 14d |  |
| JUICE-UVS 3094 | UVS STM End Item Data Package | 2019-12-06 → 2020-02-27 (+83d) | 2020-01-07 → 2020-03-11 (+64d) | 20d → 10d |  | 10d → 8d |  |
| 06 | **Contamination Control FY 18-19** |  | 2019-10-01 → 2019-12-17 (+77d) |  |  |  |  |
| JUICE-UVS 591576 | Contamination Control FY 19 |  | 2019-10-01 → 2019-12-17 (+77d) |  | 97% → 85% |  |  |
| JUICE-UVS 593472 | Instrument User Manual SE - 26 | 2019-10-16 A | 2019-10-16 A |  | 0% → 100% | 0d → none | constraint as late as possible → none |
| 03 | **Safety & Performance Assurance** |  | 2019-10-01 → 2019-12-17 (+77d) |  |  |  |  |
| 01 | **PA Support** |  | 2019-10-01 → 2019-12-17 (+77d) |  |  |  |  |
| 01 | **PA Sustaining Support** |  | 2019-10-01 → 2019-12-17 (+77d) |  |  |  |  |
| JUICE-UVS 592332 | PA FY 19 |  | 2019-10-01 → 2019-12-17 (+77d) |  | 97% → 85% |  |  |

| ID | Task | Start | Finish | Complete | Total float | Other |
| --- | --- | --- | --- | --- | --- | --- |
| 02 | **Safety** |  | 2019-10-01 → 2019-12-17 (+77d) |  |  |  |
| 01 | **Safety Engineering** |  | 2019-10-01 → 2019-12-17 (+77d) |  |  |  |
| JUICE-UVS 591636 | Safety Engineering FY 19 |  | 2019-10-01 → 2019-12-17 (+77d) | 97% → 85% |  |  |
| 03 | **Parts Engineering** |  | 2019-10-01 → 2019-12-17 (+77d) |  |  |  |
| 01 | **Sustained Parts Eng.** |  | 2019-10-01 → 2019-12-17 (+77d) |  |  |  |
| JUICE-UVS 591606 | Parts Engineering FY 19 |  | 2019-10-01 → 2019-12-17 (+77d) | 97% → 85% |  |  |
| 04 | **Materials & Process** |  | 2019-10-01 → 2019-12-17 (+77d) |  |  |  |
| JUICE-UVS 592296 | Materials & Process Support FY 19 |  | 2019-10-01 → 2019-12-17 (+77d) | 97% → 85% |  |  |
| 05 | **Hardware QA Support** |  | 2019-10-01 → 2019-12-17 (+77d) |  |  |  |
| JUICE-UVS 2225 | QA FY 19 |  | 2019-10-01 → 2019-12-17 (+77d) | 97% → 85% |  |  |
| 06 | **Software QA Support** |  | 2019-10-01 → 2019-12-17 (+77d) |  |  |  |
| 01 | **Sustained SQA** |  | 2019-10-01 → 2019-12-17 (+77d) |  |  |  |
| JUICE-UVS 592344 | QA FY 19 |  | 2019-10-01 → 2019-12-17 (+77d) | 97% → 85% |  |  |
| JUICE-UVS 11449 | PI/DPI Oversight - FY 19 |  | 2019-09-30 → 2019-09-27 A (-3d) | 99% → 100% | 0d → none |  |
| JUICE-UVS 11452 | PI/DPI Oversight - FY 20 | 2019-10-01 → 2019-09-30 A (-1d) |  | 0% → 15% |  |  |
| JUICE-UVS 593683 | PI/DPI Oversight - FY 19 |  | 2019-09-30 → 2019-09-27 A (-3d) | 99% → 100% | 0d → none |  |
| JUICE-UVS 593685 | PI/DPI Oversight - FY 20 | 2019-10-01 → 2019-09-30 A (-1d) |  | 0% → 15% |  |  |
| JUICE-UVS 10852 | PS Support - FY 19 |  | 2019-09-30 → 2019-09-27 A (-3d) | 99% → 100% | 0d → none |  |
| JUICE-UVS 8173 | Co-I Support - FY 19 |  | 2019-09-30 → 2019-09-27 A (-3d) | 99% → 100% | 0d → none |  |
| JUICE-UVS 10855 | PS Support - FY 20 | 2019-10-01 → 2019-09-30 A (-1d) |  | 0% → 15% |  |  |
| JUICE-UVS 8176 | Co-I Support - FY 20 | 2019-10-01 → 2019-09-30 A (-1d) |  | 0% → 15% |  |  |
| JUICE-UVS594303 | University of Colorado Support - Oct FY 20 | 2019-10-24 A | 2019-10-24 A | 0% → 100% | 692d → none |  |
| JUICE-UVS594306 | University of Colorado Support - Nov FY 20 | 2019-11-20 A | 2019-11-20 A | 0% → 100% | 674d → none |  |
| JUICE-UVS594483 | Johns Hopkins Support - Oct FY 20 | 2019-10-24 A | 2019-10-24 A | 0% → 100% | 692d → none |  |
| JUICE-UVS594486 | Johns Hopkins Support - Nov FY 20 | 2019-11-20 A | 2019-11-20 A | 0% → 100% | 674d → none |  |
| JUICE-UVS594663 | SETI Support - Oct FY 20 | 2019-10-24 A | 2019-10-24 A | 0% → 100% | 692d → none |  |
| JUICE-UVS594666 | SETI Support - Nov FY 20 | 2019-11-20 A | 2019-11-20 A | 0% → 100% | 674d → none |  |
| 05 | **UVS Instrument Development** |  | 2020-01-21 → 2020-03-23 (+62d) |  |  |  |
| 01 | **Mechanical** |  | 2020-01-21 → 2020-03-23 (+62d) |  |  |  |
| 01 | **Structure/Housing** |  | 2020-01-21 → 2020-03-23 (+62d) |  |  |  |
| 04 | **Structure/Thermal Model (STM)** |  | 2020-01-21 → 2020-03-23 (+62d) |  |  |  |
| JUICE-UVS 51112 | STM Housing & Plates Design | 2019-10-01 A | 2019-10-07 A | 0% → 100% | 10d → none |  |
| JUICE-UVS 593154 | STM Detector Elec Bd Design | 2019-10-01 A | 2019-10-07 A | 0% → 100% | 10d → none |  |
| JUICE-UVS 593157 | STM Optics & Detector Design | 2019-10-01 A | 2019-10-07 A | 0% → 100% | 10d → none |  |
| JUICE-UVS 593160 | STM Instrument Elec Bd Design | 2019-10-01 A | 2019-10-07 A | 0% → 100% | 10d → none |  |
| JUICE-UVS 591282 | STM Housing, Parts & Assy Drwgs | 2019-10-08 A | 2019-10-14 A | 0% → 100% | 10d → none |  |
| JUICE-UVS 51001 | STM Elec Bds Assy | 2019-10-15 A | 2019-10-15 A | 0% → 100% | 25d → none |  |
| JUICE-UVS 51109 | STM Detector Electronic Bd Fab | 2019-10-15 A | 2019-10-15 A | 0% → 100% | 25d → none |  |
| 03 | **STM Optics & Detector Mass Models** |  | 2019-11-04 → 2020-01-28 (+85d) |  |  |  |
| JUICE-UVS 591291 | STM MM Grating Fab | 2019-10-15 A | 2019-10-21 A | 0% → 100% | 10d → none |  |
| 02 | **STM Mass Model Mirror** |  | 2019-10-28 → 2019-10-25 (-3d) |  |  |  |
| JUICE-UVS 591297 | STM Mirror Fab | 2019-10-22 A | 2019-10-28 → 2019-10-25 A (-3d) | 0% → 100% | 10d → none |  |
| 03 | **STM Mass Model Detector** |  | 2019-11-04 → 2020-01-28 (+85d) |  |  |  |
| JUICE-UVS 591303 | STM Detector Fab | 2019-10-29 A | 2019-11-04 → 2020-01-28 (+85d) | 0% → 50% | 10d → 5d | constraint none → start on or after 2020-01-02 |
| 04 | **STM Mass Model Housing** |  | 2019-10-28 → 2020-01-02 (+66d) |  |  |  |
| JUICE-UVS 51115 | STM Housing Fab | 2019-10-15 A | 2019-10-16 → 2020-01-02 (+78d) |  |  |  |
| JUICE-UVS 51118 | STM Plate Fab | 2019-10-15 A | 2019-10-28 → 2020-01-02 (+66d) | 0% → 50% | 15d → 23d |  |
| 05 | **STM Mass Model Assembly** | 2019-11-05 → 2020-01-29 (+85d) | 2019-11-11 → 2020-02-04 (+85d) |  |  |  |
| JUICE-UVS 591285 | STM Assy | 2019-11-05 → 2020-01-29 (+85d) | 2019-11-11 → 2020-02-04 (+85d) |  | 10d → 5d |  |
| 06 | **STM Mass Model Bench-Checkout/Test** | 2019-11-12 → 2020-02-05 (+85d) | 2019-11-13 → 2020-02-06 (+85d) |  |  |  |
| JUICE-UVS 51049 | STM Bench Check-Out | 2019-11-12 → 2020-02-05 (+85d) | 2019-11-12 → 2020-02-05 (+85d) |  | 10d → 5d |  |
| JUICE-UVS 51052 | Dis-assemble Test Config and Ready JUICE-UVS & GSE for Move to Vibe TF | 2019-11-13 → 2020-02-06 (+85d) | 2019-11-13 → 2020-02-06 (+85d) |  | 10d → 5d |  |
| 07 | **STM Mass Model Testing** | 2019-11-14 → 2020-02-07 (+85d) | 2019-12-06 → 2020-02-27 (+83d) |  |  |  |
| 01 | **STM Mass Model Vibration Testing** | 2019-11-14 → 2020-02-07 (+85d) | 2019-11-21 → 2020-02-14 (+85d) |  |  |  |
| JUICE-UVS 4618 | STM Vibration Test Procedure | 2019-11-14 → 2020-02-07 (+85d) | 2019-11-15 → 2020-02-10 (+87d) |  | 10d → 5d |  |
| JUICE-UVS 4624 | Move STM & GSE over to Vibration Test Facility & Setup | 2019-11-14 → 2020-02-07 (+85d) | 2019-11-14 → 2020-02-07 (+85d) |  | 12d → 7d |  |
| JUICE-UVS 4620 | STM Vibration TRR | 2019-11-18 → 2020-02-11 (+85d) | 2019-11-18 → 2020-02-11 (+85d) |  | 10d → 5d |  |
| JUICE-UVS 4626 | Conduct STM Vibration Tests | 2019-11-18 → 2020-02-11 (+85d) | 2019-11-18 → 2020-02-11 (+85d) |  | 10d → 5d |  |
| JUICE-UVS 4628 | Closeout STM Vibration "As-Run" TP/Report | 2019-11-19 → 2020-02-12 (+85d) | 2019-11-19 → 2020-02-12 (+85d) |  | 10d → 5d |  |
| JUICE-UVS 4632 | Dis-assemble Vibration Test Configuration | 2019-11-20 → 2020-02-13 (+85d) | 2019-11-20 → 2020-02-13 (+85d) |  | 10d → 5d |  |
| JUICE-UVS 592437 | Reassemble Vibration Test Configuration | 2019-11-21 → 2020-02-14 (+85d) | 2019-11-21 → 2020-02-14 (+85d) |  | 10d → 5d |  |
| 02 | **STM Mass Model Thermal Balance Testing** | 2019-11-14 → 2020-02-07 (+85d) | 2019-12-05 → 2020-02-26 (+83d) |  |  |  |
| JUICE-UVS 4650 | STM Thermal Test Procedure | 2019-11-14 → 2020-02-07 (+85d) | 2019-11-15 → 2020-02-10 (+87d) |  | 16d → 11d |  |
| JUICE-UVS 4652 | STM TB TRR | 2019-11-22 → 2020-02-17 (+87d) | 2019-11-22 → 2020-02-17 (+87d) |  | 10d → 5d |  |
| JUICE-UVS 4656 | Move STM & GSE over to TB Test Facility | 2019-11-22 → 2020-02-17 (+87d) | 2019-11-22 → 2020-02-17 (+87d) |  | 10d → 5d |  |
| JUICE-UVS 4658 | Clean STM for TB & Install into Chamber | 2019-11-22 → 2020-02-17 (+87d) | 2019-11-22 → 2020-02-17 (+87d) |  | 10d → 5d |  |
| JUICE-UVS 51073 | Conduct STM TB Tests (1-cycle) | 2019-11-25 → 2020-02-18 (+85d) | 2019-12-03 → 2020-02-24 (+83d) |  | 10d → 5d |  |
| JUICE-UVS 4670 | Remove STM fm Chamber & Dbl Bag | 2019-12-04 → 2020-02-25 (+83d) | 2019-12-04 → 2020-02-25 (+83d) |  | 10d → 5d |  |
| JUICE-UVS 51076 | Closeout STM TB "As-Run" TP/Report | 2019-12-05 → 2020-02-26 (+83d) | 2019-12-05 → 2020-02-26 (+83d) |  | 10d → 8d |  |
| 03 | **STM Mass Model Properties Measurements** | 2019-12-05 → 2020-02-26 (+83d) | 2019-12-06 → 2020-02-27 (+83d) |  |  |  |

| ID | Task | Start | Finish | Duration | Complete | Total float | Predecessors | Other |
| --- | --- | --- | --- | --- | --- | --- | --- | --- |
| JUICE-UVS 4678 | Move STM over to Mass Prop Test Stand | 2019-12-05 → 2020-02-26 (+83d) | 2019-12-05 → 2020-02-26 (+83d) |  |  | 12d → 5d |  |  |
| JUICE-UVS 4680 | STM Mass Prop Test Preparation | 2019-12-05 → 2020-02-26 (+83d) | 2019-12-05 → 2020-02-26 (+83d) |  |  | 12d → 5d |  |  |
| JUICE-UVS 4682 | Conduct STM Mass Prop Measurements | 2019-12-05 → 2020-02-26 (+83d) | 2019-12-05 → 2020-02-26 (+83d) |  |  | 12d → 5d |  |  |
| JUICE-UVS 4684 | Closeout STM Mass Prop "As-Run" Proc/Report | 2019-12-06 → 2020-02-27 (+83d) | 2019-12-06 → 2020-02-27 (+83d) |  |  | 12d → 5d |  |  |
| 08 | **STM Mass Model Final Closeout & Delivery to ESA** | 2019-12-06 → 2020-02-27 (+83d) | 2020-01-21 → 2020-03-23 (+62d) |  |  |  |  |  |
| JUICE-UVS 51055 | Move Clean/Bag'd STM into Hi-Bay Clean Cabin | 2019-12-06 → 2020-02-27 (+83d) | 2019-12-06 → 2020-02-27 (+83d) |  |  | 12d → 5d |  |  |
| JUICE-UVS 51058 | Inspect & Photograph STM | 2019-12-06 → 2020-02-27 (+83d) | 2019-12-06 → 2020-02-27 (+83d) |  |  | 12d → 5d |  |  |
| JUICE-UVS 51064 | STM Schedule Margin | 2019-12-09 → 2020-02-28 (+81d) | 2019-12-31 → 2020-03-12 (+72d) | 15d → 10d |  | 12d → 5d |  |  |
| JUICE-UVS 51067 | Deliver STM JUICE-UVS Ready for Delivery | 2020-01-20 → 2020-03-20 (+60d) | 2020-01-21 → 2020-03-23 (+62d) |  |  |  |  |  |
| 03 | **Mechanical Procurements** |  | 2019-10-01 → 2019-11-25 (+55d) |  |  |  |  |  |
| JUICE-UVS 592539 | MLI Design & Procure Delivery | 2019-09-30 → 2019-11-22 (+53d) | 2019-10-01 → 2019-11-25 (+55d) |  |  | 21d → 36d |  |  |
| JUICE-UVS593829 | FM & STM Mechanical Materials Procurement Oct 17 Delivery | 2019-09-30 → 2019-11-22 (+53d) | 2019-09-30 → 2019-11-22 (+53d) |  |  | 1.5d → 31.5d |  |  |
| JUICE-UVS593913 | FM & STM Mechanical Materials Oct 17 Material Task Receipt | 2019-09-30 → 2019-11-22 (+53d) | 2019-09-30 → 2019-11-22 (+53d) |  |  | 1.5d → 31.5d |  |  |
| JUICE-UVS593949 | MLI Design & Procure Material Task Receipt | 2019-10-01 → 2019-11-25 (+55d) | 2019-10-01 → 2019-11-25 (+55d) |  |  | 21d → 36d |  |  |
| 02 | **Electrical** |  | 2019-09-27 → 2019-11-22 (+56d) |  |  |  |  |  |
| 06 | **Electrical Procurements** |  | 2019-09-27 → 2019-11-22 (+56d) |  |  |  |  |  |
| 05 | **Harness Procurement** |  | 2019-09-27 → 2019-11-22 (+56d) |  |  |  |  |  |
| JUICE-UVS593856 | SVT Procure Long Lead FM Harness Parts Nov 17 Lead Time |  | 2019-09-27 → 2019-11-22 (+56d) |  |  | 22d → 14d |  |  |
| JUICE-UVS 593340 | Long Lead FM Harness Parts Nov 17 Delivery | 2019-09-27 → 2019-11-22 (+56d) | 2019-09-27 → 2019-11-22 (+56d) |  |  | 22d → 36d |  |  |
| JUICE-UVS 593261 | Long Lead FM Harness Parts Nov 17 Material Task Receipt | 2019-09-27 → 2019-11-22 (+56d) | 2019-09-27 → 2019-11-22 (+56d) |  |  | 22d → 36d |  |  |
| 04 | **Flight Software** |  | 2019-10-17 → 2019-12-17 (+61d) |  |  |  |  |  |
| 01 | **FSW Mgmt** |  | 2019-10-01 → 2019-12-17 (+77d) |  |  |  |  |  |
| JUICE-UVS 3417 | S/W Configuration Mgmt Phase C/D FY 19 |  | 2019-10-01 → 2019-12-17 (+77d) |  | 97% → 85% |  |  |  |
| JUICE-UVS 3464 | SW Project Management & Team Meetings Phase C/D FY 19 |  | 2019-10-01 → 2019-12-17 (+77d) |  | 99% → 85% |  |  |  |
| JUICE-UVS 592839 | SW Support/Clerical/Misc. Phase C/D FY 19 |  | 2019-10-01 → 2019-12-17 (+77d) |  | 97% → 85% |  |  |  |
| 02 | **FSW SE** |  | 2019-10-01 → 2019-12-17 (+77d) |  |  |  |  |  |
| JUICE-UVS 3427 | S/W Project Review Meetings (PDR, CDR, etc.) FY 19 |  | 2019-10-01 → 2019-12-17 (+77d) |  | 97% → 85% |  |  |  |
| JUICE-UVS 593379 | SW User Manual Phase 2 | 2019-09-30 A | 2019-09-30 A |  | 0% → 100% | 23d → none |  |  |
| JUICE-UVS 3426 | S/W Build 4 Code (FM I&T PROMs) | 2019-09-30 A | 2019-10-02 A |  | 0% → 100% | 9d → none |  |  |
| JUICE-UVS 3435 | S/W Build 4 Test (FM I&T PROMs) | 2019-10-03 A | 2019-10-07 A |  | 0% → 100% | 9d → none |  |  |
| JUICE-UVS 592398 | ATP Dry Run on EM & FM | 2019-10-08 A | 2019-10-10 A |  | 0% → 100% | 9d → none |  |  |
| JUICE-UVS 592401 | ATP Run for Score on FM + Test Report | 2019-10-14 A | 2019-10-16 A |  | 0% → 100% | 9d → none |  |  |
| JUICE-UVS 3495 | Build 4 Version Description Document (VDD) | 2019-10-17 A | 2019-10-17 A |  | 0% → 100% | 9d → none |  |  |
| JUICE-UVS 592749 | Build 4 SW Delivery | 2019-10-17 A | 2019-10-17 A |  | 0% → 100% | 10d → none |  |  |
| JUICE-UVS594018 | Incorporate feedback from Airbus/ESA |  | 2019-09-30 A |  | 0% → 100% | 22d → none |  |  |
| 11 | **SW Bug Fixes** |  | 2019-09-30 → 2019-09-27 (-3d) |  |  |  |  |  |
| JUICE-UVS594216 | SW Bug Fixes |  | 2019-09-30 → 2019-09-27 A (-3d) |  | 99% → 100% | 22d → none |  |  |
| 05 | **I&T** |  | 2019-11-15 → 2020-01-10 (+56d) |  |  |  |  |  |
| 01 | **EM AI&T** |  | 2019-11-15 → 2019-12-27 (+42d) |  |  |  |  |  |
| 04 | **EM Environmental Test** |  | 2019-11-15 → 2019-12-27 (+42d) |  |  |  |  |  |
| 02 | **EM1 Environmental Test** |  | 2019-10-18 → 2019-12-10 (+53d) |  |  |  |  |  |
| 05 | **EM/FM I&T Anomaly Resolution** |  | 2019-10-18 → 2019-12-10 (+53d) |  |  |  |  |  |
| JUICE-UVS594213 | EM/FM I&T Anomaly Resolution |  | 2019-10-18 → 2019-12-10 (+53d) |  | 94% → 96% | 7d → 21d |  |  |
| 03 | **EM2 Final Integration** |  | 2019-11-15 → 2019-12-27 (+42d) |  |  |  |  |  |
| 01 | **EM2 Final Assembly/Testing** |  | 2019-11-14 → 2019-12-26 (+42d) |  |  |  |  |  |
| JUICE-UVS594162 | End-to-End Bench Test | 2019-11-01 → 2019-12-11 (+40d) | 2019-11-07 → 2019-12-17 (+40d) |  |  | 33d → 21d |  | constraint start on or after 2019-11-01 → start on or after 2019-12-11 |
| JUICE-UVS594177 | CAL & Test Report | 2019-11-01 → 2019-12-11 (+40d) | 2019-11-14 → 2019-12-26 (+42d) |  |  | 28d → 16d |  | constraint start on or after 2019-11-01 → start on or after 2019-12-11 |
| 02 | **EM2 Delivery to FSW** | 2019-11-15 → 2019-12-27 (+42d) | 2019-11-15 → 2019-12-27 (+42d) |  |  |  |  |  |
| JUICE-UVS594165 | EM2 Delivery to FSW | 2019-11-15 → 2019-12-27 (+42d) | 2019-11-15 → 2019-12-27 (+42d) |  |  | 28d → 16d |  |  |
| 02 | **FM AI&T** |  | 2019-10-31 → 2020-01-10 (+71d) |  |  |  |  |  |
| 02 | **Integrate Electronics** |  | 2019-09-30 → 2019-12-31 (+92d) |  |  |  |  |  |
| JUICE-UVS 15712 | S/W Build 4 ATP (Run for Score on FM) |  | 2019-09-30 → 2019-12-31 (+92d) |  |  | 22d → 14d |  |  |
| 04 | **FM Environmental Test** |  | 2019-10-29 → 2020-01-09 (+72d) |  |  |  |  |  |
| 02 | **Vibe Test** |  | 2019-10-01 → 2019-10-02 (+1d) |  |  |  |  |  |
| JUICE-UVS 15667 | Inspection & Physical Properties | 2019-10-01 → 2019-09-27 A (-4d) | 2019-10-01 → 2019-10-02 A (+1d) | 0.5d → 4d | 0% → 100% | 19.5d → none | JUICE-UVS 16051 → JUICE-UVS 16048 |  |
| JUICE-UVS 16048 | Thermal Balance test, analysis & test correlation |  | 2019-09-27 A → 2019-09-26 A (-1d) |  |  |  |  |  |
| JUICE-UVS 16051 | Remove Blankets | 2019-09-30 A | 2019-10-01 A |  | 0% → 100% | 1.5d → none |  |  |
| 04 | **FM Calibration & Pre-Delivery Testing** |  | 2019-10-29 → 2020-01-09 (+72d) |  |  |  |  |  |
| JUICE-UVS 5577 | FM Sensor UV Calibration | 2019-10-01 A | 2019-10-22 A |  | 0% → 100% | 1.5d → none |  |  |
| JUICE-UVS 15595 | Cal Test Report | 2019-10-22 → 2019-12-11 (+50d) | 2019-10-24 → 2019-12-12 (+49d) |  |  | 4.5d → 25d |  | constraint none → start on or after 2019-12-11 |
| JUICE-UVS 15589 | Test Results Closeout Review | 2019-10-24 → 2019-12-13 (+50d) | 2019-10-24 → 2019-12-13 (+50d) |  |  | 4.5d → 25d |  |  |
| JUICE-UVS 5580 | Install MLI & Perform Radiometric_End-to-End Test | 2019-10-22 → 2020-01-02 (+72d) | 2019-10-24 → 2020-01-03 (+71d) |  |  | 1.5d → 8d | JUICE-UVS 5577 → JUICE-UVS594213, JUICE-UVS 5577 | was named Perform Radiometric_End-to-End Test; constraint none → start on or after 2020-01-02 |
| JUICE-UVS 5586 | UVS Sensor NVRR test | 2019-10-24 → 2020-01-06 (+74d) | 2019-10-24 → 2020-01-06 (+74d) | 0d → 0.5d |  | 1.5d → 8d |  |  |
| JUICE-UVS 5592 | Full Func Test | 2019-10-24 → 2020-01-06 (+74d) | 2019-10-25 → 2020-01-07 (+74d) |  |  | 1.5d → 8d |  |  |
| JUICE-UVS 15583 | UVS final Visual Inspection, Black light | 2019-10-25 → 2020-01-07 (+74d) | 2019-10-25 → 2020-01-07 (+74d) |  |  | 1.5d → 8d |  |  |
| JUICE-UVS 6036 | Photograph Instrument | 2019-10-28 → 2020-01-08 (+72d) | 2019-10-28 → 2020-01-08 (+72d) |  |  | 1.5d → 8d |  |  |
| JUICE-UVS 16030 | Install final Red tag items | 2019-10-28 → 2020-01-08 (+72d) | 2019-10-28 → 2020-01-08 (+72d) | 0d → 0.5d |  | 1.5d → 8d |  |  |
| JUICE-UVS 16036 | Package, Ship preparations, TSA inspection prior to boxing up | 2019-10-28 → 2020-01-09 (+73d) | 2019-10-29 → 2020-01-09 (+72d) |  |  | 1.5d → 8d | JUICE-UVS 11664, JUICE-UVS 16030, JUICE-UVS594213, JUICE-UVS 593261 → JUICE-UVS 11664, JUICE-UVS 16030, JUICE-UVS 593261 |  |
| 05 | **FM Delivery** | 2019-10-29 → 2020-01-10 (+73d) | 2019-10-31 → 2020-01-10 (+71d) |  |  |  |  |  |
| JUICE-UVS 5598 | FM JUICE-UVS Delivery | 2019-10-31 → 2020-01-10 (+71d) | 2019-10-31 → 2020-01-10 (+71d) |  |  | 0d → 8d |  | constraint mandatory finish 2019-10-31 → none |

| ID | Task | Start | Finish | Complete | Total float |
| --- | --- | --- | --- | --- | --- |
| JUICE-UVS 5607 | FM Schedule Margin | 2019-10-29 → 2020-01-10 (+73d) | 2019-10-29 → 2020-01-10 (+73d) |  | 1.5d → 8d |
| 03 | **E/MGSE AI&T** |  | 2019-10-29 → 2019-12-20 (+52d) |  |  |
| 02 | **Mechanical GSE** |  | 2019-10-29 → 2019-12-20 (+52d) |  |  |
| JUICE-UVS 11649 | Vibe Test Fixture & OGSE Fab |  | 2019-10-29 → 2019-12-20 (+52d) |  | 1d → 19d |
| JUICE-UVS 594231 | SOC Support FY 19 -22 | 2019-09-30 A |  | 0% → 15% |  |
| JUICE-UVS 5685 | EM & FM I&T Support @ ESTEC FY 19 | 2019-10-07 A |  |  |  |
| 02 | **AI&T Support** | 2019-11-01 → 2020-01-22 (+82d) | 2022-03-22 → 2022-06-07 (+77d) |  |  |
| JUICE-UVS 5010 | Spacecraft Functional Test Support | 2019-11-01 → 2020-01-22 (+82d) | 2020-10-29 → 2021-01-19 (+82d) |  | 125d → 72d |
| JUICE-UVS 5030 | Spacecraft Environmental Test Support | 2020-10-30 → 2021-01-20 (+82d) | 2021-10-26 → 2022-01-14 (+80d) |  | 125d → 72d |
| JUICE-UVS 592566 | Additional Support FY 21 | 2021-10-27 → 2022-01-17 (+82d) | 2022-03-22 → 2022-06-07 (+77d) |  | 125d → 72d |

## Version 6 (data date 2020-01-04, saved 2020-01-14, file JUICE UVS IMS DD 20200103 NC.xer)

Last finish stays 2022-09-21. Complete tasks 962 → 968.

Changed:

| ID | Task | Start | Finish | Complete | Total float | Predecessors | Other |
| --- | --- | --- | --- | --- | --- | --- | --- |
| 01 | **H/W Deliverables** |  | 2020-03-23 → 2020-03-24 (+1d) |  |  |  |  |
| JUICE-UVS 089 | JUICE UVS FM Delivery Target LOE | 2020-01-21 → 2020-02-04 (+14d) | 2020-01-21 → 2020-02-04 (+14d) |  |  | JUICE-UVS 593673, JUICE-UVS 2390, JUICE-UVS 0978, JUICE-UVS 592245, JUICE-UVS 591486, JUICE-UVS 591516, JUICE-UVS 591546, JUICE-UVS 591576, JUICE-UVS 592332, JUICE-UVS 591636, JUICE-UVS 591606, JUICE-UVS 592296, JUICE-UVS 2225, JUICE-UVS 592344, JUICE-UVS 592839, JUICE-UVS 3427, JUICE-UVS 3422, JUICE-UVS 3464, JUICE-UVS 3417 → JUICE-UVS 593673, JUICE-UVS 2390, JUICE-UVS 0978, JUICE-UVS 592245, JUICE-UVS 591516, JUICE-UVS 591576, JUICE-UVS 592296, JUICE-UVS 3422 | constraint mandatory finish 2020-01-21 → mandatory finish 2020-02-04 |
| JUICE-UVS 594213 | JUICE UVS FM Delivery Target Discrete | 2020-01-21 → 2020-02-04 (+14d) | 2020-01-21 → 2020-02-04 (+14d) |  |  |  | constraint mandatory finish 2020-01-21 → mandatory finish 2020-02-04 |
| JUICE-UVS 092 | JUICE-UVS STM Delivery to ESA | 2020-03-23 → 2020-03-24 (+1d) | 2020-03-23 → 2020-03-24 (+1d) |  |  |  | constraint mandatory finish 2020-03-23 → mandatory finish 2020-03-24 |
| JUICE-UVS3081 | EM 2 Delivery SwRI | 2020-01-21 → 2020-03-24 (+63d) | 2020-01-21 → 2020-03-24 (+63d) |  |  |  | constraint mandatory finish 2020-01-21 → mandatory finish 2020-03-24 |
| JUICE-UVS 1522 | Program Management Oversight FY 20 |  | 2020-10-01 A → 2020-09-30 (-1d) | 100% → 25% | none → 0d |  |  |
| JUICE-UVS 1525 | Program Management Oversight FY 21 End of Phase C | 2020-10-01 A → 2020-10-01 |  |  |  |  | constraint none → start on or after 2020-10-01 |
| 02 | **Project Control** |  | 2020-01-21 → 2020-02-04 (+14d) |  |  |  |  |
| JUICE-UVS 0978 | Planning / EVM FY 2019 |  | 2020-01-21 → 2020-02-04 (+14d) | 80% → 88% |  |  |  |
| JUICE-UVS 1071 | Financial FY 2020 |  |  | 15% → 25% |  |  |  |
| 04 | **CAM Support** |  | 2019-12-17 → 2019-11-22 (-25d) |  |  |  |  |
| 01 | **CAM Support Labor** |  | 2019-12-17 → 2019-11-22 (-25d) |  |  |  |  |
| JUICE-UVS 592245 | CAM FY 19 |  | 2019-12-17 → 2019-11-22 A (-25d) | 85% → 100% | 22d → none |  |  |
| 02 | **CAM Support Non-Labor** |  | 2019-12-17 → 2019-11-22 (-25d) |  |  |  |  |
| JUICE-UVS 593673 | CAM FY 19 |  | 2019-12-17 → 2019-11-22 A (-25d) | 85% → 100% | 22d → none |  |  |
| JUICE-UVS 592333 | FM Delivery Travel | 2019-12-17 → 2020-02-03 (+48d) | 2019-12-17 → 2020-02-03 (+48d) |  | 23d → 2d |  | constraint start on or after 2019-12-17 → start on or after 2020-02-03 |
| JUICE-UVS 592227 | Project Support FY 20 |  |  | 15% → 26% |  |  |  |
| 07 | **Review Support** |  | 2019-12-13 → 2020-01-10 (+28d) |  |  |  |  |
| 01 | **ESA QR** |  | 2019-12-13 → 2020-01-10 (+28d) |  |  |  |  |
| JUICE-UVS 593322 | ESA QR RFA Closeout |  | 2019-12-13 → 2020-01-10 (+28d) |  | 24d → 17d |  |  |
| 05 | **NASA Pre-Ship Review (I-PSR)** |  | 2019-12-13 → 2020-01-10 (+28d) |  |  |  |  |
| JUICE-UVS 2390 | NASA I-PSR RFA Closeout |  | 2019-12-13 → 2020-01-10 (+28d) |  | 24d → 17d |  |  |
| 08 | **Configuration Management/Document Control** |  | 2019-12-17 → 2020-02-04 (+49d) |  |  |  |  |
| 01 | **Configuration Management** |  | 2019-12-17 → 2020-02-04 (+49d) |  |  |  |  |
| JUICE-UVS 591486 | CM FY 19 |  | 2019-12-17 → 2020-02-04 (+49d) | 85% → 79% | 22d → 619d |  |  |
| 09 | **Control Stores** |  | 2019-12-17 → 2020-02-04 (+49d) |  |  |  |  |
| JUICE-UVS 591546 | Controlled Stores FY 19 |  | 2019-12-17 → 2020-02-04 (+49d) | 85% → 79% | 22d → 619d |  |  |
| JUICE-UVS 592275 | Customs Broker FY 20 |  |  | 15% → 25% |  |  |  |
| JUICE-UVS 591669 | SE FY 20 |  |  | 15% → 25% |  |  |  |
| JUICE-UVS592509 | Additional ESA Support FY 20 |  |  | 15% → 25% |  |  |  |
| 03 | **Analyses** |  | 2019-12-13 → 2020-01-31 (+49d) |  |  |  |  |
| 05 | **Thermal Analyses** |  | 2019-12-13 → 2020-01-31 (+49d) |  |  |  |  |
| JUICE-UVS 592522 | Additional Thermal Interface Analysis FY 18 |  | 2019-12-13 → 2020-01-31 (+49d) |  | 24d → 2d |  |  |
| 06 | **Structural Analyses** |  | 2019-12-13 → 2020-01-31 (+49d) |  |  |  |  |
| JUICE-UVS 592526 | Additional Structural Interface Analysis FY 18 |  | 2019-12-13 → 2020-01-31 (+49d) |  | 24d → 2d |  |  |
| 08 | **Revised Thermal Analysis** |  | 2019-12-13 → 2020-01-10 (+28d) |  |  |  |  |
| JUICE-UVS 594813 | Revised Thermal Analysis |  | 2019-12-13 → 2020-01-10 (+28d) |  | 24d → 17d |  |  |
| 04 | **Verification** |  | 2020-03-11 → 2020-03-17 (+6d) |  |  |  |  |
| 02 | **Acceptance Data Package** |  | 2020-03-11 → 2020-03-17 (+6d) |  |  |  |  |
| JUICE-UVS 2185 | UVS FM End Item Data Package |  | 2019-12-31 → 2020-02-03 (+34d) |  | 14d → 2d |  |  |
| JUICE-UVS 3094 | UVS STM End Item Data Package | 2020-02-27 → 2020-03-04 (+6d) | 2020-03-11 → 2020-03-17 (+6d) |  | 8d → 5d |  |  |
| 06 | **Contamination Control FY 18-19** |  | 2019-12-17 → 2020-01-06 (+20d) |  |  |  |  |
| JUICE-UVS 591576 | Contamination Control FY 19 |  | 2019-12-17 → 2020-01-06 (+20d) | 85% → 100% |  |  |  |
| 03 | **Safety & Performance Assurance** |  | 2019-12-17 → 2020-02-04 (+49d) |  |  |  |  |
| 01 | **PA Support** |  | 2019-12-17 → 2020-02-04 (+49d) |  |  |  |  |
| 01 | **PA Sustaining Support** |  | 2019-12-17 → 2020-02-04 (+49d) |  |  |  |  |
| JUICE-UVS 592332 | PA FY 19 |  | 2019-12-17 → 2020-02-04 (+49d) | 85% → 79% | 22d → 619d |  |  |
| 02 | **Safety** |  | 2019-12-17 → 2020-02-04 (+49d) |  |  |  |  |
| 01 | **Safety Engineering** |  | 2019-12-17 → 2020-02-04 (+49d) |  |  |  |  |
| JUICE-UVS 591636 | Safety Engineering FY 19 |  | 2019-12-17 → 2020-02-04 (+49d) | 85% → 79% | 22d → 619d |  |  |
| 03 | **Parts Engineering** |  | 2019-12-17 → 2020-02-04 (+49d) |  |  |  |  |
| 01 | **Sustained Parts Eng.** |  | 2019-12-17 → 2020-02-04 (+49d) |  |  |  |  |
| JUICE-UVS 591606 | Parts Engineering FY 19 |  | 2019-12-17 → 2020-02-04 (+49d) | 85% → 79% | 22d → 619d |  |  |
| 04 | **Materials & Process** |  | 2019-12-17 → 2019-11-22 (-25d) |  |  |  |  |
| JUICE-UVS 592296 | Materials & Process Support FY 19 |  | 2019-12-17 → 2019-11-22 A (-25d) | 85% → 100% | 22d → none |  |  |
| 05 | **Hardware QA Support** |  | 2019-12-17 → 2020-02-04 (+49d) |  |  |  |  |
| JUICE-UVS 2225 | QA FY 19 |  | 2019-12-17 → 2020-02-04 (+49d) | 85% → 79% | 22d → 619d |  |  |
| 06 | **Software QA Support** |  | 2019-12-17 → 2020-02-04 (+49d) |  |  |  |  |
| 01 | **Sustained SQA** |  | 2019-12-17 → 2020-02-04 (+49d) |  |  |  |  |
| JUICE-UVS 592344 | QA FY 19 |  | 2019-12-17 → 2020-02-04 (+49d) | 85% → 79% | 22d → 619d |  |  |
| JUICE-UVS 11452 | PI/DPI Oversight - FY 20 |  |  | 15% → 25% |  |  |  |
| JUICE-UVS 593685 | PI/DPI Oversight - FY 20 |  |  | 15% → 25% |  |  |  |
| JUICE-UVS 10855 | PS Support - FY 20 |  |  | 15% → 25% |  |  |  |
| JUICE-UVS 8176 | Co-I Support - FY 20 |  |  | 15% → 25% |  |  |  |
| JUICE-UVS594309 | University of Colorado Support - Dec FY 20 | 2020-01-02 A | 2020-01-02 A | 0% → 100% | 649d → none |  |  |
| JUICE-UVS594489 | Johns Hopkins Support - Dec FY 20 | 2020-01-02 A | 2020-01-02 A | 0% → 100% | 649d → none |  |  |
| JUICE-UVS594669 | SETI Support - Dec FY 20 | 2020-01-02 A | 2020-01-02 A | 0% → 100% | 649d → none |  |  |
| 05 | **UVS Instrument Development** |  | 2020-03-23 → 2020-03-24 (+1d) |  |  |  |  |
| 01 | **Mechanical** |  | 2020-03-23 → 2020-03-24 (+1d) |  |  |  |  |
| 01 | **Structure/Housing** |  | 2020-03-23 → 2020-03-24 (+1d) |  |  |  |  |

| ID | Task | Start | Finish | Complete | Total float | Other |
| --- | --- | --- | --- | --- | --- | --- |
| 04 | **Structure/Thermal Model (STM)** |  | 2020-03-23 → 2020-03-24 (+1d) |  |  |  |
| 03 | **STM Optics & Detector Mass Models** |  | 2020-01-28 → 2020-02-03 (+6d) |  |  |  |
| 03 | **STM Mass Model Detector** |  | 2020-01-28 → 2020-02-03 (+6d) |  |  |  |
| JUICE-UVS 591303 | STM Detector Fab |  | 2020-01-28 → 2020-02-03 (+6d) |  | 5d → 2d |  |
| 04 | **STM Mass Model Housing** |  | 2020-01-02 → 2020-01-17 (+15d) |  |  |  |
| JUICE-UVS 51115 | STM Housing Fab |  | 2020-01-02 → 2020-01-17 (+15d) | 0% → 50% | 23d → 13d |  |
| JUICE-UVS 51118 | STM Plate Fab |  | 2020-01-02 → 2020-01-17 (+15d) |  | 23d → 13d |  |
| 05 | **STM Mass Model Assembly** | 2020-01-29 → 2020-02-04 (+6d) | 2020-02-04 → 2020-02-10 (+6d) |  |  |  |
| JUICE-UVS 591285 | STM Assy | 2020-01-29 → 2020-02-04 (+6d) | 2020-02-04 → 2020-02-10 (+6d) |  | 5d → 2d |  |
| 06 | **STM Mass Model Bench-Checkout/Test** | 2020-02-05 → 2020-02-11 (+6d) | 2020-02-06 → 2020-02-12 (+6d) |  |  |  |
| JUICE-UVS 51049 | STM Bench Check-Out | 2020-02-05 → 2020-02-11 (+6d) | 2020-02-05 → 2020-02-11 (+6d) |  | 5d → 2d |  |
| JUICE-UVS 51052 | Dis-assemble Test Config and Ready JUICE-UVS & GSE for Move to Vibe TF | 2020-02-06 → 2020-02-12 (+6d) | 2020-02-06 → 2020-02-12 (+6d) |  | 5d → 2d |  |
| 07 | **STM Mass Model Testing** | 2020-02-07 → 2020-02-13 (+6d) | 2020-02-27 → 2020-03-04 (+6d) |  |  |  |
| 01 | **STM Mass Model Vibration Testing** | 2020-02-07 → 2020-02-13 (+6d) | 2020-02-14 → 2020-02-20 (+6d) |  |  |  |
| JUICE-UVS 4618 | STM Vibration Test Procedure | 2020-02-07 → 2020-02-13 (+6d) | 2020-02-10 → 2020-02-14 (+4d) |  | 5d → 2d |  |
| JUICE-UVS 4624 | Move STM & GSE over to Vibration Test Facility & Setup | 2020-02-07 → 2020-02-13 (+6d) | 2020-02-07 → 2020-02-13 (+6d) |  | 7d → 4d |  |
| JUICE-UVS 4620 | STM Vibration TRR | 2020-02-11 → 2020-02-17 (+6d) | 2020-02-11 → 2020-02-17 (+6d) |  | 5d → 2d |  |
| JUICE-UVS 4626 | Conduct STM Vibration Tests | 2020-02-11 → 2020-02-17 (+6d) | 2020-02-11 → 2020-02-17 (+6d) |  | 5d → 2d |  |
| JUICE-UVS 4628 | Closeout STM Vibration "As-Run" TP/Report | 2020-02-12 → 2020-02-18 (+6d) | 2020-02-12 → 2020-02-18 (+6d) |  | 5d → 2d |  |
| JUICE-UVS 4632 | Dis-assemble Vibration Test Configuration | 2020-02-13 → 2020-02-19 (+6d) | 2020-02-13 → 2020-02-19 (+6d) |  | 5d → 2d |  |
| JUICE-UVS 592437 | Reassemble Vibration Test Configuration | 2020-02-14 → 2020-02-20 (+6d) | 2020-02-14 → 2020-02-20 (+6d) |  | 5d → 2d |  |
| 02 | **STM Mass Model Thermal Balance Testing** | 2020-02-07 → 2020-02-13 (+6d) | 2020-02-26 → 2020-03-03 (+6d) |  |  |  |
| JUICE-UVS 4650 | STM Thermal Test Procedure | 2020-02-07 → 2020-02-13 (+6d) | 2020-02-10 → 2020-02-14 (+4d) |  | 11d → 8d |  |
| JUICE-UVS 4652 | STM TB TRR | 2020-02-17 → 2020-02-21 (+4d) | 2020-02-17 → 2020-02-21 (+4d) |  | 5d → 2d |  |
| JUICE-UVS 4656 | Move STM & GSE over to TB Test Facility | 2020-02-17 → 2020-02-21 (+4d) | 2020-02-17 → 2020-02-21 (+4d) |  | 5d → 2d |  |
| JUICE-UVS 4658 | Clean STM for TB & Install into Chamber | 2020-02-17 → 2020-02-21 (+4d) | 2020-02-17 → 2020-02-21 (+4d) |  | 5d → 2d |  |
| JUICE-UVS 51073 | Conduct STM TB Tests (1-cycle) | 2020-02-18 → 2020-02-24 (+6d) | 2020-02-24 → 2020-02-28 (+4d) |  | 5d → 2d |  |
| JUICE-UVS 4670 | Remove STM fm Chamber & Dbl Bag | 2020-02-25 → 2020-03-02 (+6d) | 2020-02-25 → 2020-03-02 (+6d) |  | 5d → 2d |  |
| JUICE-UVS 51076 | Closeout STM TB "As-Run" TP/Report | 2020-02-26 → 2020-03-03 (+6d) | 2020-02-26 → 2020-03-03 (+6d) |  | 8d → 5d |  |
| 03 | **STM Mass Model Properties Measurements** | 2020-02-26 → 2020-03-03 (+6d) | 2020-02-27 → 2020-03-04 (+6d) |  |  |  |
| JUICE-UVS 4678 | Move STM over to Mass Prop Test Stand | 2020-02-26 → 2020-03-03 (+6d) | 2020-02-26 → 2020-03-03 (+6d) |  | 5d → 2d |  |
| JUICE-UVS 4680 | STM Mass Prop Test Preparation | 2020-02-26 → 2020-03-03 (+6d) | 2020-02-26 → 2020-03-03 (+6d) |  | 5d → 2d |  |
| JUICE-UVS 4682 | Conduct STM Mass Prop Measurements | 2020-02-26 → 2020-03-03 (+6d) | 2020-02-26 → 2020-03-03 (+6d) |  | 5d → 2d |  |
| JUICE-UVS 4684 | Closeout STM Mass Prop "As-Run" Proc/Report | 2020-02-27 → 2020-03-04 (+6d) | 2020-02-27 → 2020-03-04 (+6d) |  | 5d → 2d |  |
| 08 | **STM Mass Model Final Closeout & Delivery to ESA** | 2020-02-27 → 2020-03-04 (+6d) | 2020-03-23 → 2020-03-24 (+1d) |  |  |  |
| JUICE-UVS 51055 | Move Clean/Bag'd STM into Hi-Bay Clean Cabin | 2020-02-27 → 2020-03-04 (+6d) | 2020-02-27 → 2020-03-04 (+6d) |  | 5d → 2d |  |
| JUICE-UVS 51058 | Inspect & Photograph STM | 2020-02-27 → 2020-03-04 (+6d) | 2020-02-27 → 2020-03-04 (+6d) |  | 5d → 2d |  |
| JUICE-UVS 51064 | STM Schedule Margin | 2020-02-28 → 2020-03-05 (+6d) | 2020-03-12 → 2020-03-18 (+6d) |  | 5d → 2d |  |
| JUICE-UVS 51067 | Deliver STM JUICE-UVS Ready for Delivery | 2020-03-20 → 2020-03-23 (+3d) | 2020-03-23 → 2020-03-24 (+1d) |  |  |  |
| 03 | **Mechanical Procurements** |  | 2019-11-25 → 2020-01-07 (+43d) |  |  |  |
| JUICE-UVS 592539 | MLI Design & Procure Delivery | 2019-11-22 → 2020-01-06 (+45d) | 2019-11-25 → 2020-01-07 (+43d) |  | 36d → 20d |  |
| JUICE-UVS593829 | FM & STM Mechanical Materials Procurement Oct 17 Delivery | 2019-11-22 → 2020-01-06 (+45d) | 2019-11-22 → 2020-01-06 (+45d) |  | 31.5d → 15.5d |  |
| JUICE-UVS593913 | FM & STM Mechanical Materials Oct 17 Material Task Receipt | 2019-11-22 → 2020-01-06 (+45d) | 2019-11-22 → 2020-01-06 (+45d) |  | 31.5d → 15.5d |  |
| JUICE-UVS593949 | MLI Design & Procure Material Task Receipt | 2019-11-25 → 2020-01-07 (+43d) | 2019-11-25 → 2020-01-07 (+43d) |  | 36d → 20d |  |
| 02 | **Electrical** |  | 2019-11-22 → 2020-01-06 (+45d) |  |  |  |
| 06 | **Electrical Procurements** |  | 2019-11-22 → 2020-01-06 (+45d) |  |  |  |
| 05 | **Harness Procurement** |  | 2019-11-22 → 2020-01-06 (+45d) |  |  |  |
| JUICE-UVS593856 | SVT Procure Long Lead FM Harness Parts Nov 17 Lead Time |  | 2019-11-22 → 2020-01-06 (+45d) |  | 14d → 12d |  |
| JUICE-UVS 593340 | Long Lead FM Harness Parts Nov 17 Delivery | 2019-11-22 → 2020-01-06 (+45d) | 2019-11-22 → 2020-01-06 (+45d) |  | 36d → 20d |  |
| JUICE-UVS 593261 | Long Lead FM Harness Parts Nov 17 Material Task Receipt | 2019-11-22 → 2020-01-06 (+45d) | 2019-11-22 → 2020-01-06 (+45d) |  | 36d → 20d |  |
| 04 | **Flight Software** |  | 2019-12-17 → 2020-02-04 (+49d) |  |  |  |
| 01 | **FSW Mgmt** |  | 2019-12-17 → 2020-02-04 (+49d) |  |  |  |
| JUICE-UVS 3417 | S/W Configuration Mgmt Phase C/D FY 19 |  | 2019-12-17 → 2020-02-04 (+49d) | 85% → 79% | 22d → 619d |  |
| JUICE-UVS 3464 | SW Project Management & Team Meetings Phase C/D FY 19 |  | 2019-12-17 → 2020-02-04 (+49d) | 85% → 79% | 22d → 619d |  |
| JUICE-UVS 592839 | SW Support/Clerical/Misc. Phase C/D FY 19 |  | 2019-12-17 → 2020-02-04 (+49d) | 85% → 79% | 22d → 619d |  |
| 02 | **FSW SE** |  | 2019-12-17 → 2020-02-04 (+49d) |  |  |  |
| JUICE-UVS 3427 | S/W Project Review Meetings (PDR, CDR, etc.) FY 19 |  | 2019-12-17 → 2020-02-04 (+49d) | 85% → 79% | 22d → 619d |  |
| 05 | **I&T** |  | 2020-01-10 → 2020-03-02 (+52d) |  |  |  |
| 01 | **EM AI&T** |  | 2019-12-27 → 2020-03-02 (+66d) |  |  |  |
| 04 | **EM Environmental Test** |  | 2019-12-27 → 2020-03-02 (+66d) |  |  |  |
| 02 | **EM1 Environmental Test** |  | 2019-12-10 → 2020-01-10 (+31d) |  |  |  |
| 05 | **EM/FM I&T Anomaly Resolution** |  | 2019-12-10 → 2020-01-10 (+31d) |  |  |  |
| JUICE-UVS594213 | EM/FM I&T Anomaly Resolution |  | 2019-12-10 → 2020-01-10 (+31d) | 96% → 98% | 21d → 11d |  |
| 03 | **EM2 Final Integration** |  | 2019-12-27 → 2020-03-02 (+66d) |  |  |  |
| 01 | **EM2 Final Assembly/Testing** |  | 2019-12-26 → 2020-02-28 (+64d) |  |  |  |
| JUICE-UVS594162 | End-to-End Bench Test | 2019-12-11 → 2020-02-17 (+68d) | 2019-12-17 → 2020-02-21 (+66d) |  |  | constraint start on or after 2019-12-11 → start on or after 2020-02-17 |
| JUICE-UVS594177 | CAL & Test Report | 2019-12-11 → 2020-02-17 (+68d) | 2019-12-26 → 2020-02-28 (+64d) |  |  | constraint start on or after 2019-12-11 → start on or after 2020-02-17 |
| 02 | **EM2 Delivery to FSW** | 2019-12-27 → 2020-03-02 (+66d) | 2019-12-27 → 2020-03-02 (+66d) |  |  |  |
| JUICE-UVS594165 | EM2 Delivery to FSW | 2019-12-27 → 2020-03-02 (+66d) | 2019-12-27 → 2020-03-02 (+66d) |  |  |  |
| 02 | **FM AI&T** |  | 2020-01-10 → 2020-01-21 (+11d) |  |  |  |

| ID | Task | Start | Finish | Duration | Complete | Total float | Predecessors | Other |
| --- | --- | --- | --- | --- | --- | --- | --- | --- |
| 02 | **Integrate Electronics** |  | 2019-12-31 → 2020-01-17 (+17d) |  |  |  |  |  |
| JUICE-UVS 15712 | S/W Build 4 ATP (Run for Score on FM) |  | 2019-12-31 → 2020-01-17 (+17d) |  |  | 14d → 12d |  |  |
| 04 | **FM Environmental Test** |  | 2020-01-09 → 2020-01-20 (+11d) |  |  |  |  |  |
| 04 | **FM Calibration & Pre-Delivery Testing** |  | 2020-01-09 → 2020-01-20 (+11d) |  |  |  |  |  |
| JUICE-UVS 15595 | Cal Test Report | 2019-12-11 → 2020-01-03 A (+23d) | 2019-12-12 → 2020-01-09 (+28d) | 2d → 5d |  | 25d → 18d |  | constraint start on or after 2019-12-11 → start on or after 2020-01-03 |
| JUICE-UVS 15589 | Test Results Closeout Review | 2019-12-13 → 2020-01-10 (+28d) | 2019-12-13 → 2020-01-10 (+28d) |  |  | 25d → 18d |  |  |
| JUICE-UVS 5580 | Install MLI & Perform Radiometric_End-to-End Test | 2020-01-02 → 2020-01-13 (+11d) | 2020-01-03 → 2020-01-14 (+11d) |  |  | 8d → 11d |  | constraint start on or after 2020-01-02 → start on or after 2020-01-13 |
| JUICE-UVS 5586 | UVS Sensor NVRR test | 2020-01-06 → 2020-01-15 (+9d) | 2020-01-06 → 2020-01-15 (+9d) |  |  | 8d → 11d |  |  |
| JUICE-UVS 5592 | Full Func Test | 2020-01-06 → 2020-01-15 (+9d) | 2020-01-07 → 2020-01-16 (+9d) |  |  | 8d → 11d |  |  |
| JUICE-UVS 15583 | UVS final Visual Inspection, Black light | 2020-01-07 → 2020-01-16 (+9d) | 2020-01-07 → 2020-01-16 (+9d) |  |  | 8d → 11d |  |  |
| JUICE-UVS 6036 | Photograph Instrument | 2020-01-08 → 2020-01-17 (+9d) | 2020-01-08 → 2020-01-17 (+9d) |  |  | 8d → 11d |  |  |
| JUICE-UVS 16030 | Install final Red tag items | 2020-01-08 → 2020-01-17 (+9d) | 2020-01-08 → 2020-01-17 (+9d) |  |  | 8d → 11d |  |  |
| JUICE-UVS 16036 | Package, Ship preparations, TSA inspection prior to boxing up | 2020-01-09 → 2020-01-20 (+11d) | 2020-01-09 → 2020-01-20 (+11d) |  |  | 8d → 11d |  |  |
| 05 | **FM Delivery** | 2020-01-10 → 2020-01-21 (+11d) | 2020-01-10 → 2020-01-21 (+11d) |  |  |  |  |  |
| JUICE-UVS 5598 | FM JUICE-UVS Delivery | 2020-01-10 → 2020-01-21 (+11d) | 2020-01-10 → 2020-01-21 (+11d) |  |  | 8d → 11d |  |  |
| JUICE-UVS 5607 | FM Schedule Margin | 2020-01-10 → 2020-01-21 (+11d) | 2020-01-10 → 2020-01-21 (+11d) |  |  | 8d → 11d |  |  |
| 03 | **E/MGSE AI&T** |  | 2019-12-20 → 2020-01-17 (+28d) |  |  |  |  |  |
| 02 | **Mechanical GSE** |  | 2019-12-20 → 2020-01-17 (+28d) |  |  |  |  |  |
| JUICE-UVS 11649 | Vibe Test Fixture & OGSE Fab |  | 2019-12-20 → 2020-01-17 (+28d) |  |  | 19d → 12d |  |  |
| JUICE-UVS 594231 | SOC Support FY 19 -22 |  |  |  | 15% → 18% |  |  |  |
| JUICE-UVS 5685 | EM & FM I&T Support @ ESTEC FY 19 |  |  |  | 0% → 25% |  |  |  |
| JUICE-UVS 5703 | FM I&T Support @ ESTEC Complete |  |  |  |  |  | JUICE-UVS 5700 → JUICE-UVS 592332, JUICE-UVS 591636, JUICE-UVS 591606, JUICE-UVS 2225, JUICE-UVS 592344, JUICE-UVS 3417, JUICE-UVS 3464, JUICE-UVS 3427, JUICE-UVS 592839, JUICE-UVS 591546, JUICE-UVS 591486, JUICE-UVS 5700 |  |
| 02 | **AI&T Support** | 2020-01-22 → 2020-02-05 (+14d) | 2022-06-07 → 2022-06-21 (+14d) |  |  |  |  |  |
| JUICE-UVS 5010 | Spacecraft Functional Test Support | 2020-01-22 → 2020-02-05 (+14d) | 2021-01-19 → 2021-02-02 (+14d) |  |  | 72d → 62d |  |  |
| JUICE-UVS 5030 | Spacecraft Environmental Test Support | 2021-01-20 → 2021-02-03 (+14d) | 2022-01-14 → 2022-01-28 (+14d) |  |  | 72d → 62d |  |  |
| JUICE-UVS 592566 | Additional Support FY 21 | 2022-01-17 → 2022-01-31 (+14d) | 2022-06-07 → 2022-06-21 (+14d) |  |  | 72d → 62d |  |  |

## Version 7 (data date 2020-02-29, saved 2020-03-12, file JUICE UVS IMS DD 20200228 NC (002).xer)

Last finish stays 2022-09-21. Complete tasks 968 → 1001.

Changed:

| ID | Task | Start | Finish | Complete | Total float | Predecessors | Other |
| --- | --- | --- | --- | --- | --- | --- | --- |
| 01 | **H/W Deliverables** |  | 2020-03-24 → 2020-09-18 (+178d) |  |  |  |  |
| JUICE-UVS 089 | JUICE UVS FM Delivery Target LOE | 2020-02-04 A | 2020-02-04 A | 0% → 100% | 0d → none |  |  |
| JUICE-UVS 594213 | JUICE UVS FM Delivery Target Discrete | 2020-02-04 A | 2020-02-04 A | 0% → 100% | 0d → none | JUICE-UVS 593379, JUICE-UVS 8043, JUICE-UVS 593361, JUICE-UVS 593358, JUICE-UVS 593355, JUICE-UVS 593352, JUICE-UVS 593349, JUICE-UVS 593346, JUICE-UVS 593343, JUICE-UVS 593337, JUICE-UVS 593334, JUICE-UVS 593328, JUICE-UVS 593325, JUICE-UVS 593004, JUICE-UVS 593001, JUICE-UVS 592986, JUICE-UVS 592983, JUICE-UVS 592980, JUICE-UVS 592977, JUICE-UVS 592974, JUICE-UVS 592971, JUICE-UVS 592950, JUICE-UVS 592947, JUICE-UVS 592944, JUICE-UVS 592941, JUICE-UVS 592935, JUICE-UVS 592899, JUICE-UVS 592896, JUICE-UVS 592893, JUICE-UVS 592890, JUICE-UVS 592887, JUICE-UVS 592884, JUICE-UVS 592881, JUICE-UVS 592477, JUICE-UVS 592333, JUICE-UVS 0023, JUICE-UVS 5598, JUICE-UVS 2185, JUICE-UVS 592770, JUICE-UVS 594216 → JUICE-UVS 593379, JUICE-UVS 8043, JUICE-UVS 593361, JUICE-UVS 593358, JUICE-UVS 593355, JUICE-UVS 593352, JUICE-UVS 593349, JUICE-UVS 593346, JUICE-UVS 593343, JUICE-UVS 593337, JUICE-UVS 593334, JUICE-UVS 593328, JUICE-UVS 593325, JUICE-UVS 593004, JUICE-UVS 593001, JUICE-UVS 592986, JUICE-UVS 592983, JUICE-UVS 592980, JUICE-UVS 592977, JUICE-UVS 592974, JUICE-UVS 592971, JUICE-UVS 592950, JUICE-UVS 592947, JUICE-UVS 592944, JUICE-UVS 592941, JUICE-UVS 592935, JUICE-UVS 592899, JUICE-UVS 592896, JUICE-UVS 592893, JUICE-UVS 592890, JUICE-UVS 592887, JUICE-UVS 592884, JUICE-UVS 592881, JUICE-UVS 592477, JUICE-UVS 592333, JUICE-UVS 0023, JUICE-UVS 5598, JUICE-UVS 592770, JUICE-UVS 594216 |  |
| JUICE-UVS 092 | JUICE-UVS STM Delivery to ESA | 2020-03-24 → 2020-04-21 (+28d) | 2020-03-24 → 2020-04-21 (+28d) |  |  |  | constraint mandatory finish 2020-03-24 → mandatory finish 2020-04-21 |
| JUICE-UVS3081 | EM 2 Delivery SwRI | 2020-03-24 → 2020-09-18 (+178d) | 2020-03-24 → 2020-09-18 (+178d) |  |  |  | constraint mandatory finish 2020-03-24 → mandatory finish 2020-09-18 |
| JUICE-UVS 1522 | Program Management Oversight FY 20 |  |  | 25% → 41% |  |  |  |
| JUICE-UVS 592495 | Additional ESA Support FY 20 |  | 2020-09-30 A → 2020-09-30 | 100% → 41% | none → 0d |  |  |
| 02 | **Project Control** |  | 2020-02-04 → 2020-02-29 (+25d) |  |  |  |  |
| JUICE-UVS 0978 | Planning / EVM FY 2019 |  | 2020-02-04 → 2020-02-29 (+25d) | 88% → 95% | 0d → none |  |  |
| JUICE-UVS 1071 | Financial FY 2020 |  |  | 25% → 41% |  |  |  |
| 01 | **Travel Phase C** |  | 2021-01-22 → 2021-10-22 (+273d) |  |  |  |  |
| JUICE-UVS 592554 | Additional FY 21 ESA Travel (AI&T Support, x2 End to End) |  | 2020-09-25 A → 2020-09-28 (+3d) |  | none → 277d |  |  |
| JUICE-UVS 592908 | PI Day | 2020-01-13 A | 2020-01-17 A | 0% → 100% | 299d → none |  |  |
| JUICE-UVS 592333 | FM Delivery Travel | 2020-02-03 A | 2020-02-03 A | 0% → 100% | 2d → none |  |  |
| JUICE-UVS 592328 | STM Delivery Travel | 2020-01-20 → 2020-03-24 (+64d) | 2020-01-22 → 2020-03-26 (+64d) |  | 416d → 370d |  | constraint start on or after 2020-01-20 → start on or after 2020-03-24 |
| JUICE-UVS 592336 | S/C End to End Testing (x2) | 2020-01-23 → 2020-10-21 (+272d) | 2021-01-22 → 2021-10-22 (+273d) |  | 416d → 227d |  | constraint start on or after 2019-10-01 → start on or after 2020-10-21 |
| JUICE-UVS 592227 | Project Support FY 20 |  |  | 26% → 42% |  |  |  |
| 07 | **Review Support** |  | 2020-01-10 → 2020-01-31 (+21d) |  |  |  |  |
| 01 | **ESA QR** |  | 2020-01-10 → 2020-01-31 (+21d) |  |  |  |  |
| JUICE-UVS 593322 | ESA QR RFA Closeout | 2019-10-17 A → 2020-01-06 A (+81d) | 2020-01-10 → 2020-01-31 A (+21d) | 0% → 100% | 17d → none |  |  |
| 05 | **NASA Pre-Ship Review (I-PSR)** |  | 2020-01-10 → 2020-01-31 (+21d) |  |  |  |  |
| JUICE-UVS 2390 | NASA I-PSR RFA Closeout |  | 2020-01-10 → 2020-01-31 A (+21d) | 0% → 100% | 17d → none |  |  |
| 08 | **Configuration Management/Document Control** |  | 2020-02-04 → 2020-03-02 (+27d) |  |  |  |  |
| 01 | **Configuration Management** |  | 2020-02-04 → 2020-03-02 (+27d) |  |  |  |  |
| JUICE-UVS 591486 | CM FY 19 |  | 2020-02-04 → 2020-03-02 (+27d) | 79% → 62% | 619d → 601d |  |  |
| 09 | **Control Stores** |  | 2020-02-04 → 2020-03-02 (+27d) |  |  |  |  |
| JUICE-UVS 591546 | Controlled Stores FY 19 |  | 2020-02-04 → 2020-03-02 (+27d) | 79% → 62% | 619d → 601d |  |  |
| JUICE-UVS 592275 | Customs Broker FY 20 |  |  | 25% → 41% |  |  |  |
| JUICE-UVS 591669 | SE FY 20 |  |  | 25% → 41% |  |  |  |
| JUICE-UVS592509 | Additional ESA Support FY 20 |  |  | 25% → 41% |  |  |  |
| 03 | **Analyses** |  | 2020-01-31 → 2020-03-13 (+42d) |  |  |  |  |
| 05 | **Thermal Analyses** |  | 2020-01-31 → 2020-03-13 (+42d) |  |  |  |  |
| JUICE-UVS 592522 | Additional Thermal Interface Analysis FY 18 |  | 2020-01-31 → 2020-03-13 (+42d) |  | 2d → 422d |  |  |
| 06 | **Structural Analyses** |  | 2020-01-31 → 2020-03-13 (+42d) |  |  |  |  |
| JUICE-UVS 592526 | Additional Structural Interface Analysis FY 18 |  | 2020-01-31 → 2020-03-13 (+42d) |  | 2d → 422d |  |  |
| 08 | **Revised Thermal Analysis** |  | 2020-01-10 → 2020-03-13 (+63d) |  |  |  |  |
| JUICE-UVS 594813 | Revised Thermal Analysis |  | 2020-01-10 → 2020-03-13 (+63d) |  | 17d → 422d |  |  |
| 04 | **Verification** |  | 2020-03-17 → 2020-04-21 (+35d) |  |  |  |  |
| 02 | **Acceptance Data Package** |  | 2020-03-17 → 2020-04-21 (+35d) |  |  |  |  |
| JUICE-UVS 2185 | UVS FM End Item Data Package |  | 2020-02-03 → 2020-03-13 (+39d) |  | 2d → 422d | JUICE-UVS 592526 FF, JUICE-UVS 592522 FF, JUICE-UVS 594813 FF, JUICE-UVS 593310 → JUICE-UVS 593310 |  |
| JUICE-UVS 3094 | UVS STM End Item Data Package | 2020-03-04 → 2020-04-08 (+35d) | 2020-03-17 → 2020-04-21 (+35d) |  | 5d → 0d |  |  |
| 06 | **Contamination Control FY 18-19** |  | 2020-01-06 → 2020-03-02 (+56d) |  |  |  |  |
| JUICE-UVS 591576 | Contamination Control FY 19 |  | 2020-01-06 → 2020-03-02 (+56d) |  | 22d → 44d |  |  |
| 03 | **Safety & Performance Assurance** |  | 2020-02-04 → 2020-03-02 (+27d) |  |  |  |  |
| 01 | **PA Support** |  | 2020-02-04 → 2020-03-02 (+27d) |  |  |  |  |
| 01 | **PA Sustaining Support** |  | 2020-02-04 → 2020-03-02 (+27d) |  |  |  |  |
| JUICE-UVS 592332 | PA FY 19 |  | 2020-02-04 → 2020-03-02 (+27d) | 79% → 62% | 619d → 601d |  |  |
| 02 | **Safety** |  | 2020-02-04 → 2020-03-02 (+27d) |  |  |  |  |
| 01 | **Safety Engineering** |  | 2020-02-04 → 2020-03-02 (+27d) |  |  |  |  |
| JUICE-UVS 591636 | Safety Engineering FY 19 |  | 2020-02-04 → 2020-03-02 (+27d) | 79% → 62% | 619d → 601d |  |  |
| 03 | **Parts Engineering** |  | 2020-02-04 → 2020-03-02 (+27d) |  |  |  |  |
| 01 | **Sustained Parts Eng.** |  | 2020-02-04 → 2020-03-02 (+27d) |  |  |  |  |
| JUICE-UVS 591606 | Parts Engineering FY 19 |  | 2020-02-04 → 2020-03-02 (+27d) | 79% → 62% | 619d → 601d |  |  |
| 05 | **Hardware QA Support** |  | 2020-02-04 → 2020-03-02 (+27d) |  |  |  |  |
| JUICE-UVS 2225 | QA FY 19 |  | 2020-02-04 → 2020-03-02 (+27d) | 79% → 62% | 619d → 601d |  |  |
| 06 | **Software QA Support** |  | 2020-02-04 → 2020-03-02 (+27d) |  |  |  |  |
| 01 | **Sustained SQA** |  | 2020-02-04 → 2020-03-02 (+27d) |  |  |  |  |
| JUICE-UVS 592344 | QA FY 19 |  | 2020-02-04 → 2020-03-02 (+27d) | 79% → 62% | 619d → 601d |  |  |
| JUICE-UVS 11452 | PI/DPI Oversight - FY 20 |  |  | 25% → 41% |  |  |  |
| JUICE-UVS 593685 | PI/DPI Oversight - FY 20 |  |  | 25% → 41% |  |  |  |
| JUICE-UVS 10855 | PS Support - FY 20 |  |  | 25% → 41% |  |  |  |
| JUICE-UVS 8176 | Co-I Support - FY 20 |  |  | 25% → 41% |  |  |  |
| JUICE-UVS594312 | University of Colorado Support - Jan FY 20 | 2020-01-30 A | 2020-01-30 A | 0% → 100% | 630d → none |  |  |
| JUICE-UVS594315 | University of Colorado Support - Feb FY 20 | 2020-02-27 A | 2020-02-27 A | 0% → 100% | 611d → none |  |  |
| JUICE-UVS594492 | Johns Hopkins Support - Jan FY 20 | 2020-01-30 A | 2020-01-30 A | 0% → 100% | 630d → none |  |  |
| JUICE-UVS594495 | Johns Hopkins Support - Feb FY 20 | 2020-02-27 A | 2020-02-27 A | 0% → 100% | 611d → none |  |  |
| JUICE-UVS594672 | SETI Support - Jan FY 20 | 2020-01-30 A | 2020-01-30 A | 0% → 100% | 630d → none |  |  |
| JUICE-UVS594675 | SETI Support - Feb FY 20 | 2020-02-27 A | 2020-02-27 A | 0% → 100% | 611d → none |  |  |
| 05 | **UVS Instrument Development** |  | 2020-03-24 → 2020-05-18 (+55d) |  |  |  |  |
| 01 | **Mechanical** |  | 2020-03-24 → 2020-04-21 (+28d) |  |  |  |  |

| ID | Task | Start | Finish | Duration | Complete | Total float | Other |
| --- | --- | --- | --- | --- | --- | --- | --- |
| 01 | **Structure/Housing** |  | 2020-03-24 → 2020-04-21 (+28d) |  |  |  |  |
| 04 | **Structure/Thermal Model (STM)** |  | 2020-03-24 → 2020-04-21 (+28d) |  |  |  |  |
| JUICE-UVS 591303 | STM Detector Fab |  | 2020-02-03 A |  | 50% → 100% | 2d → none |  |
| 04 | **STM Mass Model Housing** |  | 2020-01-17 → 2020-03-09 (+52d) |  |  |  |  |
| JUICE-UVS 51115 | STM Housing Fab |  | 2020-01-17 → 2020-03-09 (+52d) |  |  | 13d → 0d |  |
| JUICE-UVS 51118 | STM Plate Fab |  | 2020-01-17 → 2020-02-03 A (+17d) |  | 50% → 100% | 13d → none |  |
| 05 | **STM Mass Model Assembly** | 2020-02-04 → 2020-03-10 (+35d) | 2020-02-10 → 2020-03-16 (+35d) |  |  |  |  |
| JUICE-UVS 591285 | STM Assy | 2020-02-04 → 2020-03-10 (+35d) | 2020-02-10 → 2020-03-16 (+35d) |  |  | 2d → 0d |  |
| 06 | **STM Mass Model Bench-Checkout/Test** | 2020-02-11 → 2020-03-17 (+35d) | 2020-02-12 → 2020-03-18 (+35d) |  |  |  |  |
| JUICE-UVS 51049 | STM Bench Check-Out | 2020-02-11 → 2020-03-17 (+35d) | 2020-02-11 → 2020-03-17 (+35d) |  |  | 2d → 0d |  |
| JUICE-UVS 51052 | Dis-assemble Test Config and Ready JUICE-UVS & GSE for Move to Vibe TF | 2020-02-12 → 2020-03-18 (+35d) | 2020-02-12 → 2020-03-18 (+35d) |  |  | 2d → 0d |  |
| 07 | **STM Mass Model Testing** | 2020-02-13 → 2020-03-19 (+35d) | 2020-03-04 → 2020-04-08 (+35d) |  |  |  |  |
| 01 | **STM Mass Model Vibration Testing** | 2020-02-13 → 2020-03-19 (+35d) | 2020-02-20 → 2020-03-26 (+35d) |  |  |  |  |
| JUICE-UVS 4618 | STM Vibration Test Procedure | 2020-02-13 → 2020-03-19 (+35d) | 2020-02-14 → 2020-03-20 (+35d) |  |  | 2d → 0d |  |
| JUICE-UVS 4624 | Move STM & GSE over to Vibration Test Facility & Setup | 2020-02-13 → 2020-03-19 (+35d) | 2020-02-13 → 2020-03-19 (+35d) |  |  | 4d → 2d |  |
| JUICE-UVS 4620 | STM Vibration TRR | 2020-02-17 → 2020-03-23 (+35d) | 2020-02-17 → 2020-03-23 (+35d) |  |  | 2d → 0d |  |
| JUICE-UVS 4626 | Conduct STM Vibration Tests | 2020-02-17 → 2020-03-23 (+35d) | 2020-02-17 → 2020-03-23 (+35d) |  |  | 2d → 0d |  |
| JUICE-UVS 4628 | Closeout STM Vibration "As-Run" TP/Report | 2020-02-18 → 2020-03-24 (+35d) | 2020-02-18 → 2020-03-24 (+35d) |  |  | 2d → 0d |  |
| JUICE-UVS 4632 | Dis-assemble Vibration Test Configuration | 2020-02-19 → 2020-03-25 (+35d) | 2020-02-19 → 2020-03-25 (+35d) |  |  | 2d → 0d |  |
| JUICE-UVS 592437 | Reassemble Vibration Test Configuration | 2020-02-20 → 2020-03-26 (+35d) | 2020-02-20 → 2020-03-26 (+35d) |  |  | 2d → 0d |  |
| 02 | **STM Mass Model Thermal Balance Testing** | 2020-02-13 → 2020-03-19 (+35d) | 2020-03-03 → 2020-04-07 (+35d) |  |  |  |  |
| JUICE-UVS 4650 | STM Thermal Test Procedure | 2020-02-13 → 2020-03-19 (+35d) | 2020-02-14 → 2020-03-20 (+35d) |  |  | 8d → 6d |  |
| JUICE-UVS 4652 | STM TB TRR | 2020-02-21 → 2020-03-27 (+35d) | 2020-02-21 → 2020-03-27 (+35d) |  |  | 2d → 0d |  |
| JUICE-UVS 4656 | Move STM & GSE over to TB Test Facility | 2020-02-21 → 2020-03-27 (+35d) | 2020-02-21 → 2020-03-27 (+35d) |  |  | 2d → 0d |  |
| JUICE-UVS 4658 | Clean STM for TB & Install into Chamber | 2020-02-21 → 2020-03-27 (+35d) | 2020-02-21 → 2020-03-27 (+35d) |  |  | 2d → 0d |  |
| JUICE-UVS 51073 | Conduct STM TB Tests (1-cycle) | 2020-02-24 → 2020-03-30 (+35d) | 2020-02-28 → 2020-04-03 (+35d) |  |  | 2d → 0d |  |
| JUICE-UVS 4670 | Remove STM fm Chamber & Dbl Bag | 2020-03-02 → 2020-04-06 (+35d) | 2020-03-02 → 2020-04-06 (+35d) |  |  | 2d → 0d |  |
| JUICE-UVS 51076 | Closeout STM TB "As-Run" TP/Report | 2020-03-03 → 2020-04-07 (+35d) | 2020-03-03 → 2020-04-07 (+35d) |  |  | 5d → 0d |  |
| 03 | **STM Mass Model Properties Measurements** | 2020-03-03 → 2020-04-07 (+35d) | 2020-03-04 → 2020-04-08 (+35d) |  |  |  |  |
| JUICE-UVS 4678 | Move STM over to Mass Prop Test Stand | 2020-03-03 → 2020-04-07 (+35d) | 2020-03-03 → 2020-04-07 (+35d) |  |  |  |  |
| JUICE-UVS 4680 | STM Mass Prop Test Preparation | 2020-03-03 → 2020-04-07 (+35d) | 2020-03-03 → 2020-04-07 (+35d) |  |  |  |  |
| JUICE-UVS 4682 | Conduct STM Mass Prop Measurements | 2020-03-03 → 2020-04-07 (+35d) | 2020-03-03 → 2020-04-07 (+35d) |  |  |  |  |
| JUICE-UVS 4684 | Closeout STM Mass Prop "As-Run" Proc/Report | 2020-03-04 → 2020-04-08 (+35d) | 2020-03-04 → 2020-04-08 (+35d) |  |  |  |  |
| 08 | **STM Mass Model Final Closeout & Delivery to ESA** | 2020-03-04 → 2020-04-08 (+35d) | 2020-03-24 → 2020-04-21 (+28d) |  |  |  |  |
| JUICE-UVS 51055 | Move Clean/Bag'd STM into Hi-Bay Clean Cabin | 2020-03-04 → 2020-04-08 (+35d) | 2020-03-04 → 2020-04-08 (+35d) |  |  |  |  |
| JUICE-UVS 51058 | Inspect & Photograph STM | 2020-03-04 → 2020-04-08 (+35d) | 2020-03-04 → 2020-04-08 (+35d) |  |  |  |  |
| JUICE-UVS 51064 | STM Schedule Margin | 2020-03-05 → 2020-04-09 (+35d) | 2020-03-18 → 2020-04-15 (+28d) | 10d → 5d |  |  |  |
| JUICE-UVS 51067 | Deliver STM JUICE-UVS Ready for Delivery | 2020-03-23 → 2020-04-20 (+28d) | 2020-03-24 → 2020-04-21 (+28d) |  |  |  |  |
| 03 | **Mechanical Procurements** |  | 2020-01-07 → 2020-03-02 (+55d) |  |  |  |  |
| JUICE-UVS 592539 | MLI Design & Procure Delivery | 2020-01-06 → 2020-01-30 A (+24d) | 2020-01-07 → 2020-01-30 A (+23d) |  | 0% → 100% | 20d → none |  |
| JUICE-UVS593949 | MLI Design & Procure Material Task Receipt | 2020-01-07 → 2020-01-30 A (+23d) | 2020-01-07 → 2020-01-30 A (+23d) |  | 0% → 100% | 20d → none |  |
| JUICE-UVS593829 | FM & STM Mechanical Materials Procurement Oct 17 Delivery | 2020-01-06 → 2020-03-02 (+56d) | 2020-01-06 → 2020-03-02 (+56d) |  |  | 15.5d → 5.5d |  |
| JUICE-UVS593913 | FM & STM Mechanical Materials Oct 17 Material Task Receipt | 2020-01-06 → 2020-03-02 (+56d) | 2020-01-06 → 2020-03-02 (+56d) |  |  | 15.5d → 5.5d |  |
| 02 | **Electrical** |  | 2020-01-06 → 2020-03-02 (+56d) |  |  |  |  |
| 06 | **Electrical Procurements** |  | 2020-01-06 → 2020-03-02 (+56d) |  |  |  |  |
| 05 | **Harness Procurement** |  | 2020-01-06 → 2020-03-02 (+56d) |  |  |  |  |
| JUICE-UVS593856 | SVT Procure Long Lead FM Harness Parts Nov 17 Lead Time |  | 2020-01-06 → 2020-03-02 (+56d) |  |  | 12d → 3587d |  |
| JUICE-UVS 593340 | Long Lead FM Harness Parts Nov 17 Delivery | 2020-01-06 → 2020-03-02 (+56d) | 2020-01-06 → 2020-03-02 (+56d) |  |  | 20d → 3587d |  |
| JUICE-UVS 593261 | Long Lead FM Harness Parts Nov 17 Material Task Receipt | 2020-01-06 → 2020-03-02 (+56d) | 2020-01-06 → 2020-03-02 (+56d) |  |  | 20d → 3587d |  |
| 04 | **Flight Software** |  | 2020-02-04 → 2020-01-31 (-4d) |  |  |  |  |
| 01 | **FSW Mgmt** |  | 2020-02-04 → 2020-01-31 (-4d) |  |  |  |  |
| JUICE-UVS 3417 | S/W Configuration Mgmt Phase C/D FY 19 |  | 2020-02-04 → 2020-01-31 A (-4d) |  | 79% → 100% | 619d → none |  |
| JUICE-UVS 3464 | SW Project Management & Team Meetings Phase C/D FY 19 |  | 2020-02-04 → 2020-01-31 A (-4d) |  | 79% → 100% | 619d → none |  |
| JUICE-UVS 592839 | SW Support/Clerical/Misc. Phase C/D FY 19 |  | 2020-02-04 → 2020-01-31 A (-4d) |  | 79% → 100% | 619d → none |  |
| 02 | **FSW SE** |  | 2020-02-04 → 2020-01-31 (-4d) |  |  |  |  |
| JUICE-UVS 3427 | S/W Project Review Meetings (PDR, CDR, etc.) FY 19 |  | 2020-02-04 → 2020-01-31 A (-4d) |  | 79% → 100% | 619d → none |  |
| 05 | **I&T** |  | 2020-03-02 → 2020-05-18 (+77d) |  |  |  |  |
| 01 | **EM AI&T** |  | 2020-03-02 → 2020-05-18 (+77d) |  |  |  |  |
| 04 | **EM Environmental Test** |  | 2020-03-02 → 2020-05-18 (+77d) |  |  |  |  |
| 02 | **EM1 Environmental Test** |  | 2020-01-10 → 2020-01-31 (+21d) |  |  |  |  |
| 05 | **EM/FM I&T Anomaly Resolution** |  | 2020-01-10 → 2020-01-31 (+21d) |  |  |  |  |
| JUICE-UVS594213 | EM/FM I&T Anomaly Resolution |  | 2020-01-10 → 2020-01-31 A (+21d) |  | 98% → 100% | 11d → none |  |
| 03 | **EM2 Final Integration** |  | 2020-03-02 → 2020-05-18 (+77d) |  |  |  |  |
| 01 | **EM2 Final Assembly/Testing** |  | 2020-02-28 → 2020-05-15 (+77d) |  |  |  |  |
| JUICE-UVS594162 | End-to-End Bench Test | 2020-02-17 → 2020-05-04 (+77d) | 2020-02-21 → 2020-05-08 (+77d) |  |  | 21d → 89d | constraint start on or after 2020-02-17 → start on or after 2020-05-04 |
| JUICE-UVS594177 | CAL & Test Report | 2020-02-17 → 2020-05-04 (+77d) | 2020-02-28 → 2020-05-15 (+77d) |  |  | 16d → 84d | constraint start on or after 2020-02-17 → start on or after 2020-05-04 |
| 02 | **EM2 Delivery to FSW** | 2020-03-02 → 2020-05-18 (+77d) | 2020-03-02 → 2020-05-18 (+77d) |  |  |  |  |
| JUICE-UVS594165 | EM2 Delivery to FSW | 2020-03-02 → 2020-05-18 (+77d) | 2020-03-02 → 2020-05-18 (+77d) |  |  | 16d → 84d |  |
| 02 | **FM AI&T** |  | 2020-01-21 → 2020-01-31 (+10d) |  |  |  |  |
| 02 | **Integrate Electronics** |  | 2020-01-17 → 2020-01-30 (+13d) |  |  |  |  |

| ID | Task | Start | Finish | Complete | Total float | Predecessors | Other |
| --- | --- | --- | --- | --- | --- | --- | --- |
| JUICE-UVS 15712 | S/W Build 4 ATP (Run for Score on FM) |  | 2020-01-17 → 2020-01-30 A (+13d) | 50% → 100% | 12d → none |  |  |
| JUICE-UVS 15595 | Cal Test Report |  | 2020-01-09 A | 0% → 100% | 18d → none |  |  |
| JUICE-UVS 15589 | Test Results Closeout Review | 2020-01-10 A | 2020-01-10 A | 0% → 100% | 18d → none |  |  |
| JUICE-UVS 5580 | Install MLI & Perform Radiometric_End-to-End Test | 2020-01-13 A | 2020-01-14 A | 0% → 100% | 11d → none |  |  |
| JUICE-UVS 5586 | UVS Sensor NVRR test | 2020-01-15 A | 2020-01-15 A | 0% → 100% | 11d → none |  |  |
| JUICE-UVS 5592 | Full Func Test | 2020-01-15 A | 2020-01-16 A | 0% → 100% | 11d → none |  |  |
| JUICE-UVS 15583 | UVS final Visual Inspection, Black light | 2020-01-16 A | 2020-01-16 A | 0% → 100% | 11d → none |  |  |
| JUICE-UVS 6036 | Photograph Instrument | 2020-01-17 A | 2020-01-17 A | 0% → 100% | 11d → none |  |  |
| JUICE-UVS 16030 | Install final Red tag items | 2020-01-17 A | 2020-01-17 A | 0% → 100% | 11d → none |  |  |
| JUICE-UVS 16036 | Package, Ship preparations, TSA inspection prior to boxing up | 2020-01-20 A | 2020-01-20 A | 0% → 100% | 11d → none |  |  |
| 05 | **FM Delivery** | 2020-01-21 → 2020-01-07 (-14d) | 2020-01-21 → 2020-01-31 (+10d) |  |  |  |  |
| JUICE-UVS 5607 | FM Schedule Margin | 2020-01-21 → 2020-01-07 A (-14d) | 2020-01-21 → 2020-01-07 A (-14d) | 0% → 100% | 11d → none |  |  |
| JUICE-UVS 5598 | FM JUICE-UVS Delivery | 2020-01-21 → 2020-01-31 A (+10d) | 2020-01-21 → 2020-01-31 A (+10d) | 0% → 100% | 11d → none |  | constraint none → start on or after 2020-01-31 |
| JUICE-UVS 11649 | Vibe Test Fixture & OGSE Fab |  | 2020-01-17 A | 50% → 100% | 12d → none |  |  |
| JUICE-UVS 594231 | SOC Support FY 19 -22 |  |  | 18% → 23% |  |  |  |
| 02 | **GDS Development PP** | 2020-02-03 → 2020-03-02 (+28d) |  |  |  |  |  |
| JUICE-UVS 593880 | GDS Purchase Request | 2020-02-03 → 2020-03-02 (+28d) | 2020-02-03 → 2020-03-02 (+28d) |  | 289d → 269d |  | constraint start on or after 2020-02-03 → start on or after 2020-03-02 |
| JUICE-UVS 593883 | SVT GDS Procurement Lead Time | 2020-02-03 → 2020-03-02 (+28d) | 2020-04-16 → 2020-05-14 (+28d) |  | 289d → 269d |  |  |
| JUICE-UVS 7990 | GDS Procurement Delivery | 2020-04-17 → 2020-05-15 (+28d) | 2020-04-23 → 2020-05-21 (+28d) |  | 289d → 269d |  |  |
| JUICE-UVS 7993 | GDS Material Task Receipt | 2020-04-23 → 2020-05-21 (+28d) | 2020-04-23 → 2020-05-21 (+28d) |  | 289d → 269d |  |  |
| JUICE-UVS 5685 | EM & FM I&T Support @ ESTEC FY 19 |  |  | 25% → 50% |  |  |  |
| JUICE-UVS 5700 | FM I&T Support @ ESTEC FY 20 |  |  |  |  | JUICE-UVS 5685 → JUICE-UVS 2185, JUICE-UVS 592522, JUICE-UVS 592526, JUICE-UVS 594813, JUICE-UVS 5685 |  |
| 02 | **AI&T Support** | 2020-02-05 → 2020-03-02 (+26d) | 2022-06-21 → 2022-07-19 (+28d) |  |  |  |  |
| JUICE-UVS 5010 | Spacecraft Functional Test Support | 2020-02-05 → 2020-03-02 (+26d) | 2021-02-02 → 2021-02-26 (+24d) |  | 62d → 44d |  | constraint none → start on or after 2020-03-02 |
| JUICE-UVS 5030 | Spacecraft Environmental Test Support | 2021-02-03 → 2021-03-01 (+26d) | 2022-01-28 → 2022-02-23 (+26d) |  | 62d → 44d |  |  |
| JUICE-UVS 592566 | Additional Support FY 21 | 2022-01-31 → 2022-02-24 (+24d) | 2022-06-21 → 2022-07-19 (+28d) |  | 62d → 44d |  |  |
