# Customer Service Ramp Up

How a schedule from MS Project changed from version to version. A marks actual dates.

## Version 1 (data date 2026-07-07, saved 2026-07-08, file Hard_File.mpp)

Note of the change: merge: bring in the operator's Acumen + .mpp uploads

| ID | WBS | Task | Duration | Start | Finish | Predecessors | Total float | Constraint |
| --- | --- | --- | --- | --- | --- | --- | --- | --- |
| 1 |  | Read the note for an explanation of the purpose of the template | 0d | 2026-07-08 | 2026-07-08 |  | 6d |  |
| 2 | 2 | **Initial Assessment** | 18d? | 2026-07-08 | 2026-07-31 |  | 0d |  |
| 3 | 2.1 | **Perform Product Review** | 18d? | 2026-07-08 | 2026-07-31 |  | 0d |  |
| 4 |  | Identify typical product usage scenarios | 1d? | 2026-07-08 | 2026-07-08 | 1 | 5.62d |  |
| 5 |  | Identify typical customer types | 1d? | 2026-07-08 | 2026-07-09 | 4 | 5.62d |  |
| 6 |  | Identify anticipated product problem points | 1mo | 2026-07-09 | 2026-07-23 | 5 | 6d |  |
| 7 |  | Determine solutions for product points | 1d? | 2026-07-23 | 2026-07-23 | 6 | 13.25d |  |
| 8 |  | Document product review results | 1d? | 2026-07-23 | 2026-07-24 | 7 | 5.75d |  |
| 9 |  | Product Review COMPLETE | 0d | 2026-07-31 | 2026-07-31 | 8 | 0d | finish no earlier than 2026-07-31 |
| 10 | 3 | **Service Planning** | 11d? | 2026-07-31 | 2026-08-17 |  | 0.5d |  |
| 11 | 3.1 | **Design Support Services** | 10d? | 2026-07-31 | 2026-08-14 |  | 0.5d |  |
| 12 | 3.1.1 | **Design Customer Service Contact Scenarios** | 1d? | 2026-07-31 | 2026-08-04 |  | 1d |  |
| 13 |  | Online support | 1d? | 2026-07-31 | 2026-08-03 | 9 | 1.5d |  |
| 14 |  | Phone support | 1d? | 2026-08-03 | 2026-08-03 | 9 | 1d |  |
| 15 |  | On-site support | 1d? | 2026-08-03 | 2026-08-04 | 9 | 0.5d |  |
| 16 |  | Design of customer service contact scenarios COMPLETE | 0d | 2026-08-04 | 2026-08-04 | 15, 13, 14 | 1d |  |
| 17 | 3.1.2 | **Develop Levels of Customer Service (Free and Paid)** | 9d? | 2026-08-04 | 2026-08-14 |  | 0.5d |  |
| 18 |  | Identify types of problems to be solved | 1d | 2026-08-04 | 2026-08-04 | 16 | 0.5d | start no earlier than 2026-07-31 |
| 19 |  | Identify service delivery options | 1d? | 2026-08-04 | 2026-08-05 | 18 | 0.5d |  |
| 20 |  | Determine required skill sets for various support options | 3w | 2026-08-05 | 2026-08-14 | 19 | 0.5d |  |
| 21 |  | Customer Service Level Design COMPLETE | 0d | 2026-08-14 | 2026-08-14 | 20 | 0.5d |  |
| 22 |  | Design of Support Services COMPLETE | 0d | 2026-08-14 | 2026-08-14 | 21 | 0.5d |  |
| 23 |  | Service Planning & Design COMPLETE | 1d? | 2026-08-17 | 2026-08-17 | 22 | 0.5d |  |
| 24 | 4 | **Service Delivery Infrastructure Planning** | 41.75d? | 2026-07-31 | 2026-09-29 |  | 11.5d |  |
| 25 | 4.1 | **Resources Requirements** | 2.5d? | 2026-08-18 | 2026-08-20 |  | 0.5d |  |
| 26 |  | Estimate demand for customer support (all options) | 1d? | 2026-08-18 | 2026-08-18 | 23 | 0.5d |  |
| 27 |  | Estimate resource requirements | 4h | 2026-08-19 | 2026-08-19 | 26 | 0.5d |  |
| 28 |  | Estimate effort to hire new resources | 1d? | 2026-08-19 | 2026-08-20 | 27 | 0.5d |  |
| 29 |  | Resource Planning COMPLETE | 0d | 2026-08-20 | 2026-08-20 | 28 | 0.5d |  |
| 30 | 4.2 | **Training & Readiness** | 41.75d? | 2026-07-31 | 2026-09-29 |  | 0.25d |  |
| 31 | 4.2.1 | **Training Needs Assessment** | 14.5d? | 2026-07-31 | 2026-08-21 |  | 0.5d |  |
| 32 |  | Review output of product review phase | 1d? | 2026-07-31 | 2026-08-01 | 9 | 14d |  |
| 33 |  | Review anticipated skill sets of support resources | 1d? | 2026-08-20 | 2026-08-20 | 29 | 0.5d |  |
| 34 |  | Determine product-specific training needs | 1d? | 2026-08-20 | 2026-08-21 | 33, 32 | 0.5d |  |
| 35 |  | Training Needs Assessment COMPLETE | 0d | 2026-08-21 | 2026-08-21 | 34 | 0.5d |  |
| 36 | 4.2.2 | **Training Planning** | 27.25d? | 2026-08-21 | 2026-09-29 |  | 0.25d |  |
| 37 | 4.2.2.1 | **Content Development Planning** | 3.5d? | 2026-08-21 | 2026-08-26 |  | 0.25d |  |
| 38 |  | Determine methods for delivering training | 2d? | 2026-08-21 | 2026-08-22 | 35 | 0d |  |
| 39 |  | Determine form factor for training content | 1d? | 2026-08-22 | 2026-08-22 | 38 | 0d |  |
| 40 |  | Identify internal resources that can review training materials | 1d? | 2026-08-24 | 2026-08-24 | 39 | 0.25d |  |
| 41 |  | Determine training course topics | 1d? | 2026-08-24 | 2026-08-25 | 40 | 0.25d |  |
| 42 |  | Determine number of training courses | 1d? | 2026-08-25 | 2026-08-25 | 41 | 0.88d |  |
| 43 |  | Design student materials | 1d? | 2026-08-25 | 2026-08-25 | 42 | 0.25d |  |
| 44 |  | Draft description of training program/courses | 1d? | 2026-08-26 | 2026-08-26 | 43 | 0.88d |  |
| 45 |  | Draft content development budget | 1d? | 2026-08-26 | 2026-08-26 | 44 | 0.25d |  |
| 46 |  | Content Development Planning COMPLETE | 0d | 2026-08-26 | 2026-08-26 | 45 | 0.25d |  |
| 47 | 4.2.2.2 | **Training Delivery Planning** | 20.75d? | 2026-08-27 | 2026-09-24 |  | 0.25d |  |
| 48 | 4.2.2.2.1 | **Assess Trainer Needs & Options** | 12d? | 2026-08-27 | 2026-09-11 |  | 0.25d |  |
| 49 |  | Identify internal resources that can serve as potential trainers | 1d? | 2026-08-27 | 2026-08-27 | 46 | 0.25d |  |
| 50 |  | Determine whether additional trainers will be needed | 1d? | 2026-08-28 | 2026-08-28 | 49 | 0.25d |  |
| 51 | 4.2.2.2.1.3 | **Review Outsourcing Options - Training Delivery** | 10d? | 2026-08-31 | 2026-09-11 |  | 0.25d |  |
| 52 |  | Review expertise of potential vendors | 1w | 2026-08-31 | 2026-09-04 | 50 | 0.25d |  |
| 53 |  | Review cost | 1d? | 2026-09-07 | 2026-09-07 | 52 | 0.25d |  |
| 54 |  | Review service levels | 1d? | 2026-09-08 | 2026-09-08 | 53 | 0.25d |  |
| 55 |  | Review customer references | 1d? | 2026-09-09 | 2026-09-09 | 54 | 0.25d |  |
| 56 |  | Determine time required to ready external trainers | 1d? | 2026-09-10 | 2026-09-10 | 55 | 0.25d |  |
| 57 |  | Make outsourcing decision | 1d? | 2026-09-11 | 2026-09-11 | 56 | 0.25d |  |
| 58 |  | Outsourcing Review COMPLETE | 0d | 2026-09-11 | 2026-09-11 | 57 | 0.25d |  |
| 59 |  | Trainer Needs Assessment COMPLETE | 0d | 2026-09-11 | 2026-09-11 | 58 | 0.25d |  |
| 60 | 4.2.2.2.2 | **Training Delivery Logistics** | 7.75d? | 2026-09-14 | 2026-09-23 |  | 0.25d |  |
| 61 |  | Create training delivery schedule | 1d? | 2026-09-14 | 2026-09-14 | 59 | 0.25d |  |
| 62 |  | Determine training delivery locations | 1d? | 2026-09-15 | 2026-09-15 | 61 | 0.25d |  |
| 63 |  | Review outsourcing options - event logistics | 1d? | 2026-09-16 | 2026-09-16 | 62 | 0.25d |  |
| 64 |  | Develop training delivery budget | 0.75w | 2026-09-17 | 2026-09-22 | 63 | 0.25d |  |
| 65 |  | Training Delivery Logistics COMPLETE | 1d? | 2026-09-22 | 2026-09-23 | 64 | 0.25d |  |
| 66 |  | Create training plan with outputs of Content Development & Training Delivery Phases | 1d? | 2026-09-23 | 2026-09-24 | 65 | 0.25d |  |
| 67 |  | Training Delivery Planning Complete | 0d | 2026-09-24 | 2026-09-24 | 66 | 0.25d |  |
| 68 | 4.2.2.3 | **Finalize Training Planning** | 3d? | 2026-09-24 | 2026-09-29 |  | 0.25d |  |
| 69 |  | Draft Overall Budget | 1d? | 2026-09-24 | 2026-09-25 | 67 | 0.25d |  |
| 70 |  | Acquire executive sign-off on budget | 1d | 2026-09-25 | 2026-09-28 | 69 | 0.25d |  |

| ID | WBS | Task | Duration | Start | Finish | Predecessors | Total float |
| --- | --- | --- | --- | --- | --- | --- | --- |
| 71 |  | Acquire executive sign-off on training plans | 1d | 2026-09-28 | 2026-09-29 | 70 | 0.25d |
| 72 |  | Training Planning COMPLETE | 0d | 2026-09-29 | 2026-09-29 | 71 | 0.25d |
| 73 | 4.3 | **Technology Infrastructure** | 3d? | 2026-08-18 | 2026-08-21 |  | 36.5d |
| 74 |  | Build technology infrastructure plan (separate project plan required) | 1d? | 2026-08-18 | 2026-08-19 | 23 | 36.63d |
| 75 |  | Determine technology budget | 1d? | 2026-08-19 | 2026-08-21 | 74 | 36.5d |
| 76 |  | Technology infrastructure planning COMPLETE | 0d | 2026-08-21 | 2026-08-21 | 75 | 36.5d |
| 77 |  | Service Delivery Planning COMPLETE | 0d | 2026-08-21 | 2026-08-21 | 76 | 54d |
| 78 | 5 | **Business Performance Planning** | 2d? | 2026-08-17 | 2026-08-18 |  | 20d |
| 79 |  | Determine business objectives of support services | 1d? | 2026-08-17 | 2026-08-17 | 22 | 20d |
| 80 |  | Determine success metrics | 1d? | 2026-08-17 | 2026-08-18 | 79 | 20d |
| 81 |  | Determine cost efficiency standards | 1d? | 2026-08-18 | 2026-08-18 | 80 | 20d |
| 82 |  | Business Performance Planning COMPLETE | 0d | 2026-08-18 | 2026-08-18 | 81 | 20d |
| 83 | 6 | **Build Customer Service Program** | 42d? | 2026-08-18 | 2026-10-15 |  | 14.5d |
| 84 | 6.1 | **Training/Readiness Development** | 12.25d? | 2026-09-29 | 2026-10-15 |  | 0.25d |
| 85 | 6.1.1 | **Training Content Development** | 4.25d? | 2026-09-29 | 2026-10-05 |  | 0d |
| 86 |  | Assemble content development team | 1d? | 2026-09-29 | 2026-09-30 | 72 | 0.25d |
| 87 |  | Define roles and responsibilities | 1d? | 2026-09-30 | 2026-10-01 | 86 | 0.25d |
| 88 |  | Create content development schedule | 1d? | 2026-10-01 | 2026-10-02 | 87 | 0.25d |
| 89 | 6.1.1.4 | **Build Training Content** | 1.25d? | 2026-10-02 | 2026-10-05 |  | 0d |
| 90 |  | Review existing intellectual property | 1d? | 2026-10-02 | 2026-10-02 | 88 | 0d |
| 91 |  | Develop beta content | 1d? | 2026-10-02 | 2026-10-03 | 90 | 0d |
| 92 |  | Perform SME review of training content | 1d? | 2026-10-03 | 2026-10-03 | 91 | 0d |
| 93 |  | Revise and update content | 1d? | 2026-10-03 | 2026-10-03 | 92 | 0d |
| 94 |  | Create "cheat sheets" and additional learning resources for customer support | 1d? | 2026-10-03 | 2026-10-04 | 93 | 0d |
| 95 |  | Acquire final content approval | 1d? | 2026-10-05 | 2026-10-05 | 94 | 0d |
| 96 |  | Content Development COMPLETE | 0d | 2026-10-05 | 2026-10-05 | 95 | 0d |
| 97 | 6.1.2 | **Develop Training Delivery Engine** | 8d? | 2026-10-05 | 2026-10-15 |  | 0d |
| 98 |  | Create additional "train the trainer" learning materials | 1d? | 2026-10-05 | 2026-10-06 | 96 | 0d |
| 99 |  | Create proficiency exams | 4d | 2026-10-06 | 2026-10-07 | 98 | 0d |
| 100 |  | Train additional trainers | 1d? | 2026-10-07 | 2026-10-08 | 99 | 0.38d |
| 101 |  | Prepare training venues | 1d? | 2026-10-08 | 2026-10-09 | 100 | 0d |
| 102 |  | Create communications plan | 3d | 2026-10-09 | 2026-10-13 | 101 | 0d |
| 103 |  | Provide new hires with information on training program | 1d? | 2026-10-14 | 2026-10-14 | 102 | 0d |
| 104 |  | Send out communication to existing support resources regarding new training plan | 1d? | 2026-10-15 | 2026-10-15 | 103 | 0d |
| 105 |  | Training Delivery Engine Development COMPLETE | 0d | 2026-10-15 | 2026-10-15 | 104 | 0d |
| 106 |  | Training/Readiness Development COMPLETE | 0d | 2026-10-15 | 2026-10-15 | 105 | 14.5d |
| 107 | 6.2 | **Build Technology Infrastructure** | 3d? | 2026-08-24 | 2026-08-27 |  | 38.5d |
| 108 |  | Design and develop technology solution (separate schedule required) | 1d? | 2026-08-24 | 2026-08-25 | 76 | 38.5d |
| 109 |  | Test technology infrastructure | 2.5d? | 2026-08-25 | 2026-08-27 | 108 | 38.5d |
| 110 |  | Technology Infrastructure Development COMPLETE | 0d | 2026-08-27 | 2026-08-27 | 109 | 50d |
| 111 | 6.3 | **Customer Service Program Development** | 36.75d? | 2026-08-18 | 2026-10-08 |  | 19.75d |
| 112 |  | Build customer service programs | 1d? | 2026-08-18 | 2026-08-19 | 82 | 20d |
| 113 |  | Perform subject matter expert review | 5d | 2026-08-19 | 2026-08-21 | 112 | 20d |
| 114 |  | Perform user acceptance testing with customers | 5d | 2026-08-21 | 2026-08-27 | 113 | 20d |
| 115 |  | Revise programs and related processes | 1d? | 2026-08-27 | 2026-08-27 | 114 | 20d |
| 116 |  | Acquire executive sign-off | 4d | 2026-09-22 | 2026-10-08 | 115 | 19.75d |
| 117 |  | Customer Service Program Development COMPLETE | 0d | 2026-10-08 | 2026-10-08 | 116 | 19.75d |
| 118 | 7 | **Program Deployment** | 40.5d? | 2026-08-28 | 2026-10-23 |  | 8.5d |
| 119 | 7.1 | **Resource Readiness** | 5d? | 2026-10-16 | 2026-10-22 |  | 0d |
| 120 |  | Hire new resources | 1d? | 2026-10-16 | 2026-10-16 | 95, 105 | 0d |
| 121 |  | Train new resources | 1d? | 2026-10-19 | 2026-10-19 | 120 | 0d |
| 122 |  | Certify new resources | 3d | 2026-10-20 | 2026-10-22 | 121 | 0d |
| 123 |  | Resource Readiness Training COMPLETE | 0d | 2026-10-22 | 2026-10-22 | 122 | 9.5d |
| 124 |  | Deploy technology infrastructure | 1d? | 2026-08-28 | 2026-08-31 | 109 | 38.5d |
| 125 |  | Deploy new customer service programs | 1d? | 2026-10-23 | 2026-10-23 | 124, 122 | 0d |
| 126 |  | Program Deployment COMPLETE | 0d | 2026-10-23 | 2026-10-23 | 125 | 0d |
| 127 | 8 | **Post Launch** | 8.5d? | 2026-10-23 | 2026-11-05 |  | 0d |
| 128 | 8.1 | **Engage in Post Launch Preparation Activities** | 4.5d? | 2026-10-23 | 2026-10-30 |  | 0d |
| 129 |  | Determine success metrics | 8h | 2026-10-23 | 2026-10-26 | 126 | 0d |
| 130 |  | Create method for tracking common problems and solutions | 1d? | 2026-10-26 | 2026-10-26 | 129 | 0d |
| 131 |  | Create method to track support issues vs. product aspects | 3d | 2026-10-26 | 2026-10-29 | 130 | 0d |
| 132 |  | Create method for distributing common solutions to all support resources | 1d? | 2026-10-29 | 2026-10-30 | 131 | 0d |
| 133 |  | Post Launch Preparation COMPLETE | 0d | 2026-10-30 | 2026-10-30 | 132 | 0d |
| 134 | 8.2 | **Monitoring** | 4d? | 2026-10-30 | 2026-11-05 |  | 0d |
| 135 |  | Monitor customer support issues - look for common problems | 1d? | 2026-10-30 | 2026-10-30 | 133 | 0d |
| 136 |  | Aggregate best practices (solutions) - distribute to support services | 1d? | 2026-10-30 | 2026-11-02 | 135 | 0d |
| 137 |  | Review support data, determine which product aspects cause the most support incidents | 1d? | 2026-11-02 | 2026-11-02 | 136 | 0d |
| 138 |  | Review resource performance, determine which ones are the most effective | 1d? | 2026-11-02 | 2026-11-03 | 137 | 0d |
| 139 |  | Revise training materials based on data collected from customer service program | 2ed | 2026-11-03 | 2026-11-05 | 138 | 0d |
| 140 |  | Post Launch Activities COMPLETE | 0d | 2026-11-05 | 2026-11-05 | 139 | 0d |

| ID | Task | Duration | Start | Finish | Predecessors | Total float |
| --- | --- | --- | --- | --- | --- | --- |
| 141 | Customer Service Program Development COMPLETE | 0d | 2026-11-05 | 2026-11-05 | 140 | 0d |

## Version 2 (data date 2026-08-11, saved 2026-07-08, file Hard_File_updated_with_logic_reestablished.mpp)

Last finish 2026-11-05 → 2026-11-12 (+7d). Complete tasks 0 → 7.

Changed:

| ID | Task | Start | Finish | Duration | Complete | Total float | Predecessors | Other |
| --- | --- | --- | --- | --- | --- | --- | --- | --- |
| 1 | Read the note for an explanation of the purpose of the template | 2026-07-08 A | 2026-07-08 A |  | 0% → 100% | 6d → none |  |  |
| 2 | **Initial Assessment** | 2026-07-08 A | 2026-07-31 → 2026-08-13 (+13d) | 18d? → 26d? | 0% → 94% |  |  |  |
| 3 | **Perform Product Review** | 2026-07-08 A | 2026-07-31 → 2026-08-13 (+13d) | 18d? → 26d? | 0% → 94% |  |  |  |
| 4 | Identify typical product usage scenarios | 2026-07-08 A | 2026-07-08 A |  | 0% → 100% | 5.62d → none |  |  |
| 5 | Identify typical customer types | 2026-07-08 A | 2026-07-09 A |  | 0% → 100% | 5.62d → none |  |  |
| 6 | Identify anticipated product problem points | 2026-07-09 A | 2026-07-23 → 2026-07-28 A (+5d) | 1mo → 1.35mo | 0% → 100% | 6d → none |  |  |
| 7 | Determine solutions for product points | 2026-07-23 → 2026-08-12 (+20d) | 2026-07-23 → 2026-08-12 (+20d) |  |  | 13.25d → 0d |  | constraint none → start no earlier than 2026-08-12 |
| 8 | Document product review results | 2026-07-23 → 2026-08-12 (+20d) | 2026-07-24 → 2026-08-13 (+20d) |  |  | 5.75d → 0d |  |  |
| 9 | Product Review COMPLETE | 2026-07-31 → 2026-08-13 (+13d) | 2026-07-31 → 2026-08-13 (+13d) |  |  |  |  |  |
| 10 | **Service Planning** | 2026-07-31 → 2026-08-05 A (+5d) | 2026-08-17 → 2026-08-21 (+4d) | 11d? → 13d? | 0% → 43% | 0.5d → -3.5d |  |  |
| 11 | **Design Support Services** | 2026-07-31 → 2026-08-05 A (+5d) | 2026-08-14 → 2026-08-20 (+6d) | 10d? → 12d? | 0% → 45% | 0.5d → -3d |  |  |
| 12 | **Design Customer Service Contact Scenarios** | 2026-07-31 → 2026-08-13 (+13d) | 2026-08-04 → 2026-08-14 (+10d) | 1d? → 2d? |  | 1d → 0d |  |  |
| 13 | Online support | 2026-07-31 → 2026-08-13 (+13d) | 2026-08-03 → 2026-08-13 (+10d) |  |  | 1.5d → 1d |  |  |
| 14 | Phone support | 2026-08-03 → 2026-08-13 (+10d) | 2026-08-03 → 2026-08-14 (+11d) |  |  | 1d → 0d |  |  |
| 15 | On-site support | 2026-08-03 → 2026-08-14 (+11d) | 2026-08-04 → 2026-08-14 (+10d) |  |  | 0.5d → 0d |  |  |
| 16 | Design of customer service contact scenarios COMPLETE | 2026-08-04 → 2026-08-14 (+10d) | 2026-08-04 → 2026-08-14 (+10d) |  |  | 1d → 0d |  |  |
| 17 | **Develop Levels of Customer Service (Free and Paid)** | 2026-08-04 → 2026-08-05 A (+1d) | 2026-08-14 → 2026-08-20 (+6d) | 9d? → 12d? | 0% → 53% | 0.5d → -3d |  |  |
| 18 | Identify types of problems to be solved | 2026-08-04 → 2026-08-14 (+10d) | 2026-08-04 → 2026-08-17 (+13d) |  |  | 0.5d → 0d |  |  |
| 19 | Identify service delivery options | 2026-08-04 → 2026-08-17 (+13d) | 2026-08-05 → 2026-08-17 (+12d) |  |  | 0.5d → 0d |  |  |
| 20 | Determine required skill sets for various support options | 2026-08-05 A | 2026-08-14 → 2026-08-20 (+6d) |  | 0% → 60% | 0.5d → -3.5d |  |  |
| 21 | Customer Service Level Design COMPLETE | 2026-08-14 → 2026-08-20 (+6d) | 2026-08-14 → 2026-08-20 (+6d) |  |  | 0.5d → -3.5d |  |  |
| 22 | Design of Support Services COMPLETE | 2026-08-14 → 2026-08-20 (+6d) | 2026-08-14 → 2026-08-20 (+6d) |  |  | 0.5d → -3.5d |  |  |
| 23 | Service Planning & Design COMPLETE | 2026-08-17 → 2026-08-21 (+4d) | 2026-08-17 → 2026-08-21 (+4d) |  |  | 0.5d → -3.5d |  |  |
| 24 | **Service Delivery Infrastructure Planning** | 2026-07-31 → 2026-08-13 (+13d) | 2026-09-29 → 2026-10-05 (+6d) | 41.75d? → 37.75d? |  | 11.5d → 3.5d |  |  |
| 25 | **Resources Requirements** | 2026-08-18 → 2026-08-24 (+6d) | 2026-08-20 → 2026-08-26 (+6d) |  |  | 0.5d → -3.5d |  |  |
| 26 | Estimate demand for customer support (all options) | 2026-08-18 → 2026-08-24 (+6d) | 2026-08-18 → 2026-08-24 (+6d) |  |  | 0.5d → -3.5d |  |  |
| 27 | Estimate resource requirements | 2026-08-19 → 2026-08-25 (+6d) | 2026-08-19 → 2026-08-25 (+6d) |  |  | 0.5d → -3.5d |  |  |
| 28 | Estimate effort to hire new resources | 2026-08-19 → 2026-08-25 (+6d) | 2026-08-20 → 2026-08-26 (+6d) |  |  | 0.5d → -3.5d |  |  |
| 29 | Resource Planning COMPLETE | 2026-08-20 → 2026-08-26 (+6d) | 2026-08-20 → 2026-08-26 (+6d) |  |  | 0.5d → -3.5d |  |  |
| 30 | **Training & Readiness** | 2026-07-31 → 2026-08-13 (+13d) | 2026-09-29 → 2026-10-05 (+6d) | 41.75d? → 37.75d? |  | 0.25d → -3.75d |  |  |
| 31 | **Training Needs Assessment** | 2026-07-31 → 2026-08-13 (+13d) | 2026-08-21 → 2026-08-27 (+6d) | 14.5d? → 10.5d? |  | 0.5d → -3.5d |  |  |
| 32 | Review output of product review phase | 2026-07-31 → 2026-08-13 (+13d) | 2026-08-01 → 2026-08-13 (+12d) |  |  | 14d → 5.62d |  |  |
| 33 | Review anticipated skill sets of support resources | 2026-08-20 → 2026-08-26 (+6d) | 2026-08-20 → 2026-08-26 (+6d) |  |  | 0.5d → -3.5d |  |  |
| 34 | Determine product-specific training needs | 2026-08-20 → 2026-08-26 (+6d) | 2026-08-21 → 2026-08-27 (+6d) |  |  | 0.5d → -3.5d |  |  |
| 35 | Training Needs Assessment COMPLETE | 2026-08-21 → 2026-08-27 (+6d) | 2026-08-21 → 2026-08-27 (+6d) |  |  | 0.5d → -3.5d |  |  |
| 36 | **Training Planning** | 2026-08-21 → 2026-08-27 (+6d) | 2026-09-29 → 2026-10-05 (+6d) |  |  | 0.25d → -3.75d |  |  |
| 37 | **Content Development Planning** | 2026-08-21 → 2026-08-27 (+6d) | 2026-08-26 → 2026-09-02 (+7d) |  |  | 0.25d → -3.75d |  |  |
| 38 | Determine methods for delivering training | 2026-08-21 → 2026-08-27 (+6d) | 2026-08-22 → 2026-08-28 (+6d) |  |  | 0d → -3.5d |  |  |
| 39 | Determine form factor for training content | 2026-08-22 → 2026-08-28 (+6d) | 2026-08-22 → 2026-08-28 (+6d) |  |  | 0d → -3.5d |  |  |
| 40 | Identify internal resources that can review training materials | 2026-08-24 → 2026-08-28 (+4d) | 2026-08-24 → 2026-08-31 (+7d) |  |  | 0.25d → -3.5d |  |  |
| 41 | Determine training course topics | 2026-08-24 → 2026-08-31 (+7d) | 2026-08-25 → 2026-08-31 (+6d) |  |  | 0.25d → -4d |  |  |
| 42 | Determine number of training courses | 2026-08-25 → 2026-08-31 (+6d) | 2026-08-25 → 2026-09-01 (+7d) |  |  | 0.88d → -4d |  |  |
| 43 | Design student materials | 2026-08-25 → 2026-09-01 (+7d) | 2026-08-25 → 2026-09-01 (+7d) |  |  | 0.25d → -3.75d |  |  |
| 44 | Draft description of training program/courses | 2026-08-26 → 2026-09-01 (+6d) | 2026-08-26 → 2026-09-01 (+6d) |  |  | 0.88d → -4d |  |  |
| 45 | Draft content development budget | 2026-08-26 → 2026-09-01 (+6d) | 2026-08-26 → 2026-09-02 (+7d) |  |  | 0.25d → -4d |  |  |
| 46 | Content Development Planning COMPLETE | 2026-08-26 → 2026-09-02 (+7d) | 2026-08-26 → 2026-09-02 (+7d) |  |  | 0.25d → -3.75d |  |  |
| 47 | **Training Delivery Planning** | 2026-08-27 → 2026-09-02 (+6d) | 2026-09-24 → 2026-09-30 (+6d) |  |  | 0.25d → -3.75d |  |  |
| 48 | **Assess Trainer Needs & Options** | 2026-08-27 → 2026-09-02 (+6d) | 2026-09-11 → 2026-09-17 (+6d) |  |  | 0.25d → -3.75d |  |  |
| 49 | Identify internal resources that can serve as potential trainers | 2026-08-27 → 2026-09-02 (+6d) | 2026-08-27 → 2026-09-02 (+6d) |  |  | 0.25d → -3.75d |  |  |
| 50 | Determine whether additional trainers will be needed | 2026-08-28 → 2026-09-03 (+6d) | 2026-08-28 → 2026-09-03 (+6d) |  |  | 0.25d → -3.75d |  |  |
| 51 | **Review Outsourcing Options - Training Delivery** | 2026-08-31 → 2026-09-04 (+4d) | 2026-09-11 → 2026-09-17 (+6d) |  |  | 0.25d → -3.75d |  |  |
| 52 | Review expertise of potential vendors | 2026-08-31 → 2026-09-04 (+4d) | 2026-09-04 → 2026-09-10 (+6d) |  |  | 0.25d → -3.75d |  |  |
| 53 | Review cost | 2026-09-07 → 2026-09-11 (+4d) | 2026-09-07 → 2026-09-11 (+4d) |  |  | 0.25d → -3.75d | 52 → 52, 19 |  |
| 54 | Review service levels | 2026-09-08 → 2026-09-14 (+6d) | 2026-09-08 → 2026-09-14 (+6d) |  |  | 0.25d → -3.75d |  |  |
| 55 | Review customer references | 2026-09-09 → 2026-09-15 (+6d) | 2026-09-09 → 2026-09-15 (+6d) |  |  | 0.25d → -3.75d |  |  |
| 56 | Determine time required to ready external trainers | 2026-09-10 → 2026-09-16 (+6d) | 2026-09-10 → 2026-09-16 (+6d) |  |  | 0.25d → -3.75d |  |  |
| 57 | Make outsourcing decision | 2026-09-11 → 2026-09-17 (+6d) | 2026-09-11 → 2026-09-17 (+6d) |  |  | 0.25d → -3.75d |  |  |
| 58 | Outsourcing Review COMPLETE | 2026-09-11 → 2026-09-17 (+6d) | 2026-09-11 → 2026-09-17 (+6d) |  |  | 0.25d → -3.75d |  |  |
| 59 | Trainer Needs Assessment COMPLETE | 2026-09-11 → 2026-09-17 (+6d) | 2026-09-11 → 2026-09-17 (+6d) |  |  | 0.25d → -3.75d |  |  |
| 60 | **Training Delivery Logistics** | 2026-09-14 → 2026-09-18 (+4d) | 2026-09-23 → 2026-09-29 (+6d) |  |  | 0.25d → -3.75d |  |  |
| 61 | Create training delivery schedule | 2026-09-14 → 2026-09-18 (+4d) | 2026-09-14 → 2026-09-18 (+4d) |  |  | 0.25d → -3.75d |  |  |
| 62 | Determine training delivery locations | 2026-09-15 → 2026-09-21 (+6d) | 2026-09-15 → 2026-09-21 (+6d) |  |  | 0.25d → -3.75d |  |  |
| 63 | Review outsourcing options - event logistics | 2026-09-16 → 2026-09-22 (+6d) | 2026-09-16 → 2026-09-22 (+6d) |  |  | 0.25d → -3.75d |  |  |
| 64 | Develop training delivery budget | 2026-09-17 → 2026-09-23 (+6d) | 2026-09-22 → 2026-09-28 (+6d) |  |  | 0.25d → -3.75d |  |  |
| 65 | Training Delivery Logistics COMPLETE | 2026-09-22 → 2026-09-28 (+6d) | 2026-09-23 → 2026-09-29 (+6d) |  |  | 0.25d → -3.75d |  |  |
| 66 | Create training plan with outputs of Content Development & Training Delivery Phases | 2026-09-23 → 2026-09-29 (+6d) | 2026-09-24 → 2026-09-30 (+6d) |  |  | 0.25d → -3.75d |  |  |
| 67 | Training Delivery Planning Complete | 2026-09-24 → 2026-09-30 (+6d) | 2026-09-24 → 2026-09-30 (+6d) |  |  | 0.25d → -3.75d |  |  |
| 68 | **Finalize Training Planning** | 2026-09-24 → 2026-09-30 (+6d) | 2026-09-29 → 2026-10-05 (+6d) |  |  | 0.25d → -3.75d |  |  |
| 69 | Draft Overall Budget | 2026-09-24 → 2026-09-30 (+6d) | 2026-09-25 → 2026-10-01 (+6d) |  |  | 0.25d → -3.75d |  |  |
| 70 | Acquire executive sign-off on budget | 2026-09-25 → 2026-10-01 (+6d) | 2026-09-28 → 2026-10-02 (+4d) |  |  | 0.25d → -3.75d |  |  |

| ID | Task | Start | Finish | Duration | Complete | Total float | Predecessors |
| --- | --- | --- | --- | --- | --- | --- | --- |
| 71 | Acquire executive sign-off on training plans | 2026-09-28 → 2026-10-02 (+4d) | 2026-09-29 → 2026-10-05 (+6d) |  |  | 0.25d → -3.75d |  |
| 72 | Training Planning COMPLETE | 2026-09-29 → 2026-10-05 (+6d) | 2026-09-29 → 2026-10-05 (+6d) |  |  | 0.25d → -3.75d |  |
| 73 | **Technology Infrastructure** | 2026-08-18 → 2026-08-24 (+6d) | 2026-08-21 → 2026-08-27 (+6d) |  |  | 36.5d → 34.62d |  |
| 74 | Build technology infrastructure plan (separate project plan required) | 2026-08-18 → 2026-08-24 (+6d) | 2026-08-19 → 2026-08-25 (+6d) |  |  | 36.63d → 34.75d |  |
| 75 | Determine technology budget | 2026-08-19 → 2026-08-25 (+6d) | 2026-08-21 → 2026-08-27 (+6d) |  |  | 36.5d → 34.62d |  |
| 76 | Technology infrastructure planning COMPLETE | 2026-08-21 → 2026-08-27 (+6d) | 2026-08-21 → 2026-08-27 (+6d) |  |  | 36.5d → 34.62d |  |
| 77 | Service Delivery Planning COMPLETE | 2026-08-21 → 2026-08-27 (+6d) | 2026-08-21 → 2026-08-27 (+6d) |  |  | 54d → 55d |  |
| 78 | **Business Performance Planning** | 2026-08-17 → 2026-08-21 (+4d) | 2026-08-18 → 2026-08-24 (+6d) |  |  | 20d → 57.5d |  |
| 79 | Determine business objectives of support services | 2026-08-17 → 2026-08-21 (+4d) | 2026-08-17 → 2026-08-21 (+4d) |  |  | 20d → 57.5d |  |
| 80 | Determine success metrics | 2026-08-17 → 2026-08-21 (+4d) | 2026-08-18 → 2026-08-24 (+6d) |  |  | 20d → 57.5d |  |
| 81 | Determine cost efficiency standards | 2026-08-18 → 2026-08-24 (+6d) | 2026-08-18 → 2026-08-24 (+6d) |  |  | 20d → 57.5d |  |
| 82 | Business Performance Planning COMPLETE | 2026-08-18 → 2026-08-24 (+6d) | 2026-08-18 → 2026-08-24 (+6d) |  |  | 20d → 57.5d |  |
| 83 | **Build Customer Service Program** | 2026-08-18 → 2026-07-28 A (-21d) | 2026-10-15 → 2026-10-22 (+7d) | 42d? → 62d? | 0% → 32% |  |  |
| 84 | **Training/Readiness Development** | 2026-09-29 → 2026-10-05 (+6d) | 2026-10-15 → 2026-10-22 (+7d) | 12.25d? → 13.25d? |  | 0.25d → -3.75d |  |
| 85 | **Training Content Development** | 2026-09-29 → 2026-10-05 (+6d) | 2026-10-05 → 2026-10-12 (+7d) | 4.25d? → 5.25d? |  | 0d → -5d |  |
| 86 | Assemble content development team | 2026-09-29 → 2026-10-05 (+6d) | 2026-09-30 → 2026-10-06 (+6d) |  |  | 0.25d → -3.75d |  |
| 87 | Define roles and responsibilities | 2026-09-30 → 2026-10-06 (+6d) | 2026-10-01 → 2026-10-07 (+6d) |  |  | 0.25d → -3.75d |  |
| 88 | Create content development schedule | 2026-10-01 → 2026-10-07 (+6d) | 2026-10-02 → 2026-10-08 (+6d) |  |  | 0.25d → -3.75d |  |
| 89 | **Build Training Content** | 2026-10-02 → 2026-10-08 (+6d) | 2026-10-05 → 2026-10-12 (+7d) | 1.25d? → 2.25d? |  | 0d → -5d |  |
| 90 | Review existing intellectual property | 2026-10-02 → 2026-10-08 (+6d) | 2026-10-02 → 2026-10-08 (+6d) |  |  | 0d → -4d |  |
| 91 | Develop beta content | 2026-10-02 → 2026-10-08 (+6d) | 2026-10-03 → 2026-10-09 (+6d) |  |  | 0d → -4d |  |
| 92 | Perform SME review of training content | 2026-10-03 → 2026-10-09 (+6d) | 2026-10-03 → 2026-10-09 (+6d) |  |  | 0d → -4.75d |  |
| 93 | Revise and update content | 2026-10-03 → 2026-10-09 (+6d) | 2026-10-03 → 2026-10-09 (+6d) |  |  | 0d → -5d |  |
| 94 | Create "cheat sheets" and additional learning resources for customer support | 2026-10-03 → 2026-10-09 (+6d) | 2026-10-04 → 2026-10-10 (+6d) |  |  | 0d → -5d |  |
| 95 | Acquire final content approval | 2026-10-05 → 2026-10-12 (+7d) | 2026-10-05 → 2026-10-12 (+7d) |  |  | 0d → -5d |  |
| 96 | Content Development COMPLETE | 2026-10-05 → 2026-10-12 (+7d) | 2026-10-05 → 2026-10-12 (+7d) |  |  | 0d → -5d |  |
| 97 | **Develop Training Delivery Engine** | 2026-10-05 → 2026-10-12 (+7d) | 2026-10-15 → 2026-10-22 (+7d) |  |  | 0d → -5d |  |
| 98 | Create additional "train the trainer" learning materials | 2026-10-05 → 2026-10-12 (+7d) | 2026-10-06 → 2026-10-13 (+7d) |  |  | 0d → -5d |  |
| 99 | Create proficiency exams | 2026-10-06 → 2026-10-13 (+7d) | 2026-10-07 → 2026-10-14 (+7d) |  |  | 0d → -5d |  |
| 100 | Train additional trainers | 2026-10-07 → 2026-10-14 (+7d) | 2026-10-08 → 2026-10-15 (+7d) |  |  | 0.38d → -4.28d |  |
| 101 | Prepare training venues | 2026-10-08 → 2026-10-15 (+7d) | 2026-10-09 → 2026-10-16 (+7d) |  |  | 0d → -5d |  |
| 102 | Create communications plan | 2026-10-09 → 2026-10-16 (+7d) | 2026-10-13 → 2026-10-20 (+7d) |  |  | 0d → -4.62d |  |
| 103 | Provide new hires with information on training program | 2026-10-14 → 2026-10-21 (+7d) | 2026-10-14 → 2026-10-21 (+7d) |  |  | 0d → -4.62d |  |
| 104 | Send out communication to existing support resources regarding new training plan | 2026-10-15 → 2026-10-22 (+7d) | 2026-10-15 → 2026-10-22 (+7d) |  |  | 0d → -4.62d |  |
| 105 | Training Delivery Engine Development COMPLETE | 2026-10-15 → 2026-10-22 (+7d) | 2026-10-15 → 2026-10-22 (+7d) |  |  | 0d → -4.62d |  |
| 106 | Training/Readiness Development COMPLETE | 2026-10-15 → 2026-10-22 (+7d) | 2026-10-15 → 2026-10-22 (+7d) |  |  |  |  |
| 107 | **Build Technology Infrastructure** | 2026-08-24 → 2026-08-28 (+4d) | 2026-08-27 → 2026-09-02 (+6d) |  |  | 38.5d → 34.75d |  |
| 108 | Design and develop technology solution (separate schedule required) | 2026-08-24 → 2026-08-28 (+4d) | 2026-08-25 → 2026-08-31 (+6d) |  |  | 38.5d → 34.75d |  |
| 109 | Test technology infrastructure | 2026-08-25 → 2026-08-31 (+6d) | 2026-08-27 → 2026-09-02 (+6d) | 2.5d? → 2.12d? |  | 38.5d → 34.75d |  |
| 110 | Technology Infrastructure Development COMPLETE | 2026-08-27 → 2026-09-02 (+6d) | 2026-08-27 → 2026-09-02 (+6d) |  |  | 50d → 51d |  |
| 111 | **Customer Service Program Development** | 2026-08-18 → 2026-07-28 A (-21d) | 2026-10-08 → 2026-08-17 (-52d) | 36.75d? → 14d? | 0% → 74% | 19.75d → 62.5d |  |
| 112 | Build customer service programs | 2026-08-18 → 2026-07-28 A (-21d) | 2026-08-19 → 2026-07-29 A (-21d) |  | 0% → 100% | 20d → none | 82 → none |
| 113 | Perform subject matter expert review | 2026-08-19 → 2026-07-29 A (-21d) | 2026-08-21 → 2026-07-31 A (-21d) |  | 0% → 100% | 20d → none |  |
| 114 | Perform user acceptance testing with customers | 2026-08-21 → 2026-07-31 A (-21d) | 2026-08-27 → 2026-08-06 A (-21d) | 5d → 8d | 0% → 100% | 20d → none |  |
| 115 | Revise programs and related processes | 2026-08-27 → 2026-08-11 (-16d) | 2026-08-27 → 2026-08-12 (-15d) |  |  | 20d → 62d |  |
| 116 | Acquire executive sign-off | 2026-09-22 → 2026-08-12 (-41d) | 2026-10-08 → 2026-08-17 (-52d) |  |  | 19.75d → 62.5d |  |
| 117 | Customer Service Program Development COMPLETE | 2026-10-08 → 2026-08-17 (-52d) | 2026-10-08 → 2026-08-17 (-52d) |  |  | 19.75d → 62.5d |  |
| 118 | **Program Deployment** | 2026-08-28 → 2026-09-03 (+6d) | 2026-10-23 → 2026-10-30 (+7d) | 40.5d? → 41.5d? |  |  |  |
| 119 | **Resource Readiness** | 2026-10-16 → 2026-10-23 (+7d) | 2026-10-22 → 2026-10-29 (+7d) |  |  | 0d → -4.62d |  |
| 120 | Hire new resources | 2026-10-16 → 2026-10-23 (+7d) | 2026-10-16 → 2026-10-23 (+7d) |  |  | 0d → -4.62d |  |
| 121 | Train new resources | 2026-10-19 → 2026-10-26 (+7d) | 2026-10-19 → 2026-10-26 (+7d) |  |  | 0d → -4.62d |  |
| 122 | Certify new resources | 2026-10-20 → 2026-10-27 (+7d) | 2026-10-22 → 2026-10-29 (+7d) |  |  | 0d → -4.62d |  |
| 123 | Resource Readiness Training COMPLETE | 2026-10-22 → 2026-10-29 (+7d) | 2026-10-22 → 2026-10-29 (+7d) |  |  |  |  |
| 124 | Deploy technology infrastructure | 2026-08-28 → 2026-09-03 (+6d) | 2026-08-31 → 2026-09-04 (+4d) |  |  | 38.5d → 34.88d |  |
| 125 | Deploy new customer service programs | 2026-10-23 → 2026-10-30 (+7d) | 2026-10-23 → 2026-10-30 (+7d) |  |  | 0d → -4.62d |  |
| 126 | Program Deployment COMPLETE | 2026-10-23 → 2026-10-30 (+7d) | 2026-10-23 → 2026-10-30 (+7d) |  |  | 0d → -4.62d |  |
| 127 | **Post Launch** | 2026-10-23 → 2026-10-30 (+7d) | 2026-11-05 → 2026-11-12 (+7d) |  |  | 0d → -4.62d |  |
| 128 | **Engage in Post Launch Preparation Activities** | 2026-10-23 → 2026-10-30 (+7d) | 2026-10-30 → 2026-11-06 (+7d) |  |  | 0d → -4.62d |  |
| 129 | Determine success metrics | 2026-10-23 → 2026-10-30 (+7d) | 2026-10-26 → 2026-11-02 (+7d) |  |  | 0d → -4.62d |  |
| 130 | Create method for tracking common problems and solutions | 2026-10-26 → 2026-11-02 (+7d) | 2026-10-26 → 2026-11-02 (+7d) |  |  | 0d → -4.62d |  |
| 131 | Create method to track support issues vs. product aspects | 2026-10-26 → 2026-11-02 (+7d) | 2026-10-29 → 2026-11-05 (+7d) |  |  | 0d → -19.62d |  |
| 132 | Create method for distributing common solutions to all support resources | 2026-10-29 → 2026-11-05 (+7d) | 2026-10-30 → 2026-11-06 (+7d) |  |  | 0d → -5d |  |
| 133 | Post Launch Preparation COMPLETE | 2026-10-30 → 2026-11-06 (+7d) | 2026-10-30 → 2026-11-06 (+7d) |  |  | 0d → -4.5d |  |
| 134 | **Monitoring** | 2026-10-30 → 2026-11-06 (+7d) | 2026-11-05 → 2026-11-12 (+7d) |  |  | 0d → -4.5d |  |
| 135 | Monitor customer support issues - look for common problems | 2026-10-30 → 2026-11-06 (+7d) | 2026-10-30 → 2026-11-06 (+7d) |  |  | 0d → -5d |  |
| 136 | Aggregate best practices (solutions) - distribute to support services | 2026-10-30 → 2026-11-06 (+7d) | 2026-11-02 → 2026-11-09 (+7d) |  |  | 0d → -5d |  |
| 137 | Review support data, determine which product aspects cause the most support incidents | 2026-11-02 → 2026-11-09 (+7d) | 2026-11-02 → 2026-11-09 (+7d) |  |  | 0d → -5d |  |
| 138 | Review resource performance, determine which ones are the most effective | 2026-11-02 → 2026-11-09 (+7d) | 2026-11-03 → 2026-11-10 (+7d) |  |  | 0d → -5d |  |
| 139 | Revise training materials based on data collected from customer service program | 2026-11-03 → 2026-11-10 (+7d) | 2026-11-05 → 2026-11-12 (+7d) |  |  | 0d → -20.38d |  |
| 140 | Post Launch Activities COMPLETE | 2026-11-05 → 2026-11-12 (+7d) | 2026-11-05 → 2026-11-12 (+7d) |  |  | 0d → -4.5d |  |

| ID | Task | Start | Finish | Total float |
| --- | --- | --- | --- | --- |
| 141 | Customer Service Program Development COMPLETE | 2026-11-05 → 2026-11-12 (+7d) | 2026-11-05 → 2026-11-12 (+7d) | 0d → -4.5d |

## Version 3 (data date 2026-09-10, saved 2026-07-09, file Hard_File_updated2.mpp)

Last finish 2026-11-12 → 2026-11-06 (-6d). Complete tasks 7 → 34.

Changed:

| ID | Task | Start | Finish | Duration | Complete | Total float | Predecessors | Other |
| --- | --- | --- | --- | --- | --- | --- | --- | --- |
| 2 | **Initial Assessment** |  | 2026-08-13 → 2026-08-19 A (+6d) | 26d? → 31d? | 94% → 100% | 0d → none |  |  |
| 3 | **Perform Product Review** |  | 2026-08-13 → 2026-08-19 A (+6d) | 26d? → 31d? | 94% → 100% | 0d → none |  |  |
| 7 | Determine solutions for product points | 2026-08-12 A | 2026-08-12 A |  | 0% → 100% | 0d → none |  |  |
| 8 | Document product review results | 2026-08-12 → 2026-08-18 A (+6d) | 2026-08-13 → 2026-08-19 A (+6d) | 1d? → 3d? | 0% → 100% | 0d → none |  |  |
| 9 | Product Review COMPLETE | 2026-08-13 → 2026-08-19 A (+6d) | 2026-08-13 → 2026-08-19 A (+6d) |  | 0% → 100% | 0d → none |  |  |
| 10 | **Service Planning** |  | 2026-08-21 → 2026-08-22 (+1d) |  | 43% → 77% | -3.5d → 12.1d |  |  |
| 11 | **Design Support Services** |  | 2026-08-20 → 2026-08-22 (+2d) | 12d? → 13d? | 45% → 77% | -3d → 12.1d |  |  |
| 12 | **Design Customer Service Contact Scenarios** | 2026-08-13 → 2026-08-19 (+6d) | 2026-08-14 → 2026-08-20 (+6d) | 2d? → 1d? |  | 0d → 12d |  |  |
| 13 | Online support | 2026-08-13 → 2026-08-19 (+6d) | 2026-08-13 → 2026-08-20 (+7d) |  |  | 1d → 12.37d |  |  |
| 14 | Phone support | 2026-08-13 → 2026-08-19 (+6d) | 2026-08-14 → 2026-08-20 (+6d) |  |  | 0d → 12.37d |  |  |
| 15 | On-site support | 2026-08-14 → 2026-08-20 (+6d) | 2026-08-14 → 2026-08-20 (+6d) |  |  | 0d → 12d |  |  |
| 16 | Design of customer service contact scenarios COMPLETE | 2026-08-14 → 2026-08-20 (+6d) | 2026-08-14 → 2026-08-20 (+6d) |  |  | 0d → 12d |  |  |
| 17 | **Develop Levels of Customer Service (Free and Paid)** |  | 2026-08-20 → 2026-08-22 (+2d) | 12d? → 13d? | 53% → 88% | -3d → 12.1d |  |  |
| 18 | Identify types of problems to be solved | 2026-08-14 → 2026-08-20 (+6d) | 2026-08-17 → 2026-08-21 (+4d) |  |  | 0d → 12d |  |  |
| 19 | Identify service delivery options | 2026-08-17 → 2026-08-21 (+4d) | 2026-08-17 → 2026-08-22 (+5d) | 1d? → 1.36d? |  | 0d → 12.1d |  | resources Customer Service Team → Customer Service Team [50%]; Content Developer [25%]; Trainer |
| 20 | Determine required skill sets for various support options |  | 2026-08-20 → 2026-08-18 A (-2d) | 3w → 3.6w | 60% → 100% | -3.5d → none | 19 → none |  |
| 21 | Customer Service Level Design COMPLETE | 2026-08-20 → 2026-08-18 A (-2d) | 2026-08-20 → 2026-08-18 A (-2d) |  | 0% → 100% | -3.5d → none |  |  |
| 22 | Design of Support Services COMPLETE | 2026-08-20 → 2026-08-18 A (-2d) | 2026-08-20 → 2026-08-18 A (-2d) |  | 0% → 100% | -3.5d → none |  |  |
| 23 | Service Planning & Design COMPLETE | 2026-08-21 → 2026-08-19 A (-2d) | 2026-08-21 → 2026-08-19 A (-2d) | 1d? → 0d | 0% → 100% | -3.5d → none |  |  |
| 24 | **Service Delivery Infrastructure Planning** | 2026-08-13 → 2026-08-19 A (+6d) | 2026-10-05 → 2026-10-01 (-4d) | 37.75d? → 31.9d? | 0% → 40% | 3.5d → 26.1d |  |  |
| 25 | **Resources Requirements** | 2026-08-24 → 2026-08-19 A (-5d) | 2026-08-26 → 2026-08-20 A (-6d) | 2.5d? → 1.5d | 0% → 100% | -3.5d → none |  |  |
| 26 | Estimate demand for customer support (all options) | 2026-08-24 → 2026-08-19 A (-5d) | 2026-08-24 → 2026-08-19 A (-5d) | 1d? → 0.5d | 0% → 100% | -3.5d → none |  |  |
| 27 | Estimate resource requirements | 2026-08-25 → 2026-08-19 A (-6d) | 2026-08-25 → 2026-08-19 A (-6d) |  | 0% → 100% | -3.5d → none |  |  |
| 28 | Estimate effort to hire new resources | 2026-08-25 → 2026-08-20 A (-5d) | 2026-08-26 → 2026-08-20 A (-6d) | 1d? → 0.5d | 0% → 100% | -3.5d → none |  |  |
| 29 | Resource Planning COMPLETE | 2026-08-26 → 2026-08-20 A (-6d) | 2026-08-26 → 2026-08-20 A (-6d) |  | 0% → 100% | -3.5d → none |  |  |
| 30 | **Training & Readiness** | 2026-08-13 → 2026-08-19 A (+6d) | 2026-10-05 → 2026-10-01 (-4d) | 37.75d? → 30.9d? | 0% → 40% | -3.75d → -1.9d |  |  |
| 31 | **Training Needs Assessment** | 2026-08-13 → 2026-08-19 A (+6d) | 2026-08-27 → 2026-08-26 A (-1d) | 10.5d? → 4.5d? | 0% → 100% | -3.5d → none |  |  |
| 32 | Review output of product review phase | 2026-08-13 → 2026-08-19 A (+6d) | 2026-08-13 → 2026-08-19 A (+6d) | 1d? → 0.5d | 0% → 100% | 5.62d → none |  | resources Content Developer → Content Developer; Cleaning |
| 33 | Review anticipated skill sets of support resources | 2026-08-26 → 2026-08-20 A (-6d) | 2026-08-26 → 2026-08-25 A (-1d) | 1d? → 4d | 0% → 100% | -3.5d → none |  | resources Content Developer → Content Developer; Cleaning [1.6%]; Logistics Apprentice; AI Token Time [1.16 Bucket] |
| 34 | Determine product-specific training needs | 2026-08-26 → 2026-08-25 A (-1d) | 2026-08-27 → 2026-08-26 A (-1d) |  | 0% → 100% | -3.5d → none |  |  |
| 35 | Training Needs Assessment COMPLETE | 2026-08-27 → 2026-08-26 A (-1d) | 2026-08-27 → 2026-08-26 A (-1d) |  | 0% → 100% | -3.5d → none |  |  |
| 36 | **Training Planning** | 2026-08-27 → 2026-08-26 A (-1d) | 2026-10-05 → 2026-10-01 (-4d) | 27.25d? → 26.4d? | 0% → 29% | -3.75d → -1.9d |  |  |
| 37 | **Content Development Planning** | 2026-08-27 → 2026-08-26 A (-1d) | 2026-09-02 → 2026-08-30 A (-3d) | 3.5d? → 2.5d? | 0% → 100% | -3.75d → none |  |  |
| 38 | Determine methods for delivering training | 2026-08-27 → 2026-08-26 A (-1d) | 2026-08-28 → 2026-08-27 A (-1d) |  | 0% → 100% | -3.5d → none |  |  |
| 39 | Determine form factor for training content | 2026-08-28 → 2026-08-27 A (-1d) | 2026-08-28 → 2026-08-27 A (-1d) |  | 0% → 100% | -3.5d → none |  |  |
| 40 | Identify internal resources that can review training materials | 2026-08-28 → 2026-08-27 A (-1d) | 2026-08-31 → 2026-08-28 A (-3d) |  | 0% → 100% | -3.5d → none |  |  |
| 41 | Determine training course topics | 2026-08-31 → 2026-08-28 A (-3d) | 2026-08-31 → 2026-08-28 A (-3d) |  | 0% → 100% | -4d → none |  |  |
| 42 | Determine number of training courses | 2026-08-31 → 2026-08-28 A (-3d) | 2026-09-01 → 2026-08-29 A (-3d) |  | 0% → 100% | -4d → none |  |  |
| 43 | Design student materials | 2026-09-01 → 2026-08-29 A (-3d) | 2026-09-01 → 2026-08-29 A (-3d) |  | 0% → 100% | -3.75d → none |  |  |
| 44 | Draft description of training program/courses | 2026-09-01 → 2026-08-29 A (-3d) | 2026-09-01 → 2026-08-29 A (-3d) |  | 0% → 100% | -4d → none |  |  |
| 45 | Draft content development budget | 2026-09-01 → 2026-08-29 A (-3d) | 2026-09-02 → 2026-08-30 A (-3d) |  | 0% → 100% | -4d → none |  |  |
| 46 | Content Development Planning COMPLETE | 2026-09-02 → 2026-08-30 A (-3d) | 2026-09-02 → 2026-08-30 A (-3d) |  | 0% → 100% | -3.75d → none |  |  |
| 47 | **Training Delivery Planning** |  | 2026-09-30 → 2026-09-28 (-2d) | 20.75d? → 18.9d? |  | -3.75d → -1.9d |  |  |
| 49 | Identify internal resources that can serve as potential trainers | 2026-09-02 A | 2026-09-02 A |  | 0% → 100% | -3.75d → none |  | constraint none → start no earlier than 2026-09-02 |
| 50 | Determine whether additional trainers will be needed | 2026-09-03 A | 2026-09-03 A |  | 0% → 100% | -3.75d → none |  |  |
| 52 | Review expertise of potential vendors | 2026-09-04 A | 2026-09-10 A |  | 0% → 100% | -3.75d → none |  |  |
| 60 | **Training Delivery Logistics** |  | 2026-09-29 → 2026-09-25 (-4d) | 7.75d? → 5.9d? |  | -3.75d → -1.9d |  |  |
| 64 | Develop training delivery budget | 2026-09-23 → 2026-09-22 (-1d) | 2026-09-28 → 2026-09-24 (-4d) | 0.75w → 0.38w |  | -3.75d → -1.9d |  | resources Customer Service Lead → Customer Service Lead; Cleaning [0.2%]; Trainer Apprentice; Logistics Apprentice |
| 65 | Training Delivery Logistics COMPLETE | 2026-09-28 → 2026-09-24 (-4d) | 2026-09-29 → 2026-09-25 (-4d) |  |  | -3.75d → -1.9d |  |  |
| 66 | Create training plan with outputs of Content Development & Training Delivery Phases | 2026-09-29 → 2026-09-25 (-4d) | 2026-09-30 → 2026-09-28 (-2d) |  |  | -3.75d → -1.9d |  |  |
| 67 | Training Delivery Planning Complete | 2026-09-30 → 2026-09-28 (-2d) | 2026-09-30 → 2026-09-28 (-2d) |  |  | -3.75d → -1.9d |  |  |
| 68 | **Finalize Training Planning** | 2026-09-30 → 2026-09-28 (-2d) | 2026-10-05 → 2026-10-01 (-4d) |  |  | -3.75d → -1.9d |  |  |
| 69 | Draft Overall Budget | 2026-09-30 → 2026-09-28 (-2d) | 2026-10-01 → 2026-09-29 (-2d) |  |  | -3.75d → -1.9d |  |  |
| 70 | Acquire executive sign-off on budget | 2026-10-01 → 2026-09-29 (-2d) | 2026-10-02 → 2026-09-30 (-2d) |  |  | -3.75d → -1.9d |  |  |
| 71 | Acquire executive sign-off on training plans | 2026-10-02 → 2026-09-30 (-2d) | 2026-10-05 → 2026-10-01 (-4d) |  |  | -3.75d → -1.9d |  |  |
| 72 | Training Planning COMPLETE | 2026-10-05 → 2026-10-01 (-4d) | 2026-10-05 → 2026-10-01 (-4d) |  |  | -3.75d → -1.9d |  |  |
| 73 | **Technology Infrastructure** | 2026-08-24 → 2026-08-19 (-5d) | 2026-08-27 → 2026-08-20 (-7d) | 3d? → 2d? |  | 34.62d → 44d |  |  |
| 74 | Build technology infrastructure plan (separate project plan required) | 2026-08-24 → 2026-08-19 (-5d) | 2026-08-25 → 2026-08-19 (-6d) |  |  | 34.75d → 44d |  |  |
| 75 | Determine technology budget | 2026-08-25 → 2026-08-20 (-5d) | 2026-08-27 → 2026-08-20 (-7d) |  |  | 34.62d → 44d |  |  |
| 76 | Technology infrastructure planning COMPLETE | 2026-08-27 → 2026-08-20 (-7d) | 2026-08-27 → 2026-08-20 (-7d) |  |  | 34.62d → 44d |  |  |
| 77 | Service Delivery Planning COMPLETE | 2026-08-27 → 2026-08-20 (-7d) | 2026-08-27 → 2026-08-20 (-7d) |  |  | 55d → 56d |  |  |
| 78 | **Business Performance Planning** | 2026-08-21 → 2026-08-20 (-1d) |  | 2d? → 2.5d? |  | 57.5d → 26d |  |  |
| 79 | Determine business objectives of support services | 2026-08-21 → 2026-08-20 (-1d) |  |  |  | 57.5d → 26.5d |  |  |
| 80 | Determine success metrics | 2026-08-21 → 2026-08-24 (+3d) |  |  |  | 57.5d → 26d |  |  |
| 83 | **Build Customer Service Program** |  | 2026-10-22 → 2026-10-20 (-2d) | 62d? → 60d? |  | 14.5d → 13d |  |  |
| 84 | **Training/Readiness Development** | 2026-10-05 → 2026-10-01 (-4d) | 2026-10-22 → 2026-10-20 (-2d) | 13.25d? → 13.1d? |  | -3.75d → -1.9d |  |  |
| 85 | **Training Content Development** | 2026-10-05 → 2026-10-01 (-4d) | 2026-10-12 → 2026-10-09 (-3d) | 5.25d? → 5.12d? |  | -5d → -1.9d |  |  |
| 86 | Assemble content development team | 2026-10-05 → 2026-10-01 (-4d) | 2026-10-06 → 2026-10-02 (-4d) |  |  | -3.75d → -1.9d | 72 → 72, 82 |  |
| 87 | Define roles and responsibilities | 2026-10-06 → 2026-10-02 (-4d) | 2026-10-07 → 2026-10-05 (-2d) |  |  | -3.75d → -1.9d |  |  |
| 88 | Create content development schedule | 2026-10-07 → 2026-10-05 (-2d) | 2026-10-08 → 2026-10-06 (-2d) |  |  | -3.75d → -1.9d |  |  |

| ID | Task | Start | Finish | Duration | Total float |
| --- | --- | --- | --- | --- | --- |
| 89 | **Build Training Content** | 2026-10-08 → 2026-10-06 (-2d) | 2026-10-12 → 2026-10-09 (-3d) | 2.25d? → 2.12d? | -5d → -1.9d |
| 90 | Review existing intellectual property | 2026-10-08 → 2026-10-06 (-2d) | 2026-10-08 → 2026-10-07 (-1d) |  | -4d → -2d |
| 91 | Develop beta content | 2026-10-08 → 2026-10-07 (-1d) | 2026-10-09 → 2026-10-07 (-2d) |  | -4d → -2d |
| 92 | Perform SME review of training content | 2026-10-09 → 2026-10-07 (-2d) | 2026-10-09 → 2026-10-07 (-2d) |  | -4.75d → -1.9d |
| 93 | Revise and update content | 2026-10-09 → 2026-10-07 (-2d) | 2026-10-09 → 2026-10-08 (-1d) |  | -5d → -2d |
| 94 | Create "cheat sheets" and additional learning resources for customer support | 2026-10-09 → 2026-10-08 (-1d) | 2026-10-10 → 2026-10-08 (-2d) |  | -5d → -2d |
| 95 | Acquire final content approval | 2026-10-12 → 2026-10-08 (-4d) | 2026-10-12 → 2026-10-09 (-3d) |  | -5d → -1.15d |
| 96 | Content Development COMPLETE | 2026-10-12 → 2026-10-09 (-3d) | 2026-10-12 → 2026-10-09 (-3d) |  | -5d → -1.15d |
| 97 | **Develop Training Delivery Engine** | 2026-10-12 → 2026-10-09 (-3d) | 2026-10-22 → 2026-10-20 (-2d) | 8d? → 7.97d? | -5d → -1.15d |
| 98 | Create additional "train the trainer" learning materials | 2026-10-12 → 2026-10-09 (-3d) | 2026-10-13 → 2026-10-09 (-4d) |  | -5d → -1.9d |
| 99 | Create proficiency exams | 2026-10-13 → 2026-10-09 (-4d) | 2026-10-14 → 2026-10-11 (-3d) |  | -5d → -1.9d |
| 100 | Train additional trainers | 2026-10-14 → 2026-10-12 (-2d) | 2026-10-15 → 2026-10-12 (-3d) |  | -4.28d → -1d |
| 101 | Prepare training venues | 2026-10-15 → 2026-10-12 (-3d) | 2026-10-16 → 2026-10-14 (-2d) |  | -5d → -1d |
| 102 | Create communications plan | 2026-10-16 → 2026-10-14 (-2d) | 2026-10-20 → 2026-10-16 (-4d) |  | -4.62d → -1d |
| 103 | Provide new hires with information on training program | 2026-10-21 → 2026-10-19 (-2d) | 2026-10-21 → 2026-10-19 (-2d) |  | -4.62d → -1d |
| 104 | Send out communication to existing support resources regarding new training plan | 2026-10-22 → 2026-10-20 (-2d) | 2026-10-22 → 2026-10-20 (-2d) |  | -4.62d → -1d |
| 105 | Training Delivery Engine Development COMPLETE | 2026-10-22 → 2026-10-20 (-2d) | 2026-10-22 → 2026-10-20 (-2d) |  | -4.62d → -1d |
| 106 | Training/Readiness Development COMPLETE | 2026-10-22 → 2026-10-20 (-2d) | 2026-10-22 → 2026-10-20 (-2d) |  | 14.5d → 13d |
| 107 | **Build Technology Infrastructure** | 2026-08-28 → 2026-08-21 (-7d) | 2026-09-02 → 2026-08-24 (-9d) | 3d? → 2d? | 34.75d → 44d |
| 108 | Design and develop technology solution (separate schedule required) | 2026-08-28 → 2026-08-21 (-7d) | 2026-08-31 → 2026-08-21 (-10d) |  | 34.75d → 44d |
| 109 | Test technology infrastructure | 2026-08-31 → 2026-08-21 (-10d) | 2026-09-02 → 2026-08-24 (-9d) | 2.12d? → 3d? | 34.75d → 44d |
| 110 | Technology Infrastructure Development COMPLETE | 2026-09-02 → 2026-08-24 (-9d) | 2026-09-02 → 2026-08-24 (-9d) |  | 51d → 54d |
| 111 | **Customer Service Program Development** |  | 2026-08-17 → 2026-08-12 (-5d) | 14d? → 11d? | 62.5d → 62d |
| 115 | Revise programs and related processes | 2026-08-11 → 2026-08-06 (-5d) | 2026-08-12 → 2026-08-07 (-5d) |  |  |
| 116 | Acquire executive sign-off | 2026-08-12 → 2026-08-07 (-5d) | 2026-08-17 → 2026-08-12 (-5d) |  | 62.5d → 62d |
| 117 | Customer Service Program Development COMPLETE | 2026-08-17 → 2026-08-12 (-5d) | 2026-08-17 → 2026-08-12 (-5d) |  | 62.5d → 62d |
| 118 | **Program Deployment** | 2026-09-03 → 2026-08-25 (-9d) | 2026-10-30 → 2026-10-28 (-2d) | 41.5d? → 47d? | 8.5d → 7d |
| 119 | **Resource Readiness** | 2026-10-23 → 2026-10-21 (-2d) | 2026-10-29 → 2026-10-27 (-2d) |  | -4.62d → -1d |
| 120 | Hire new resources | 2026-10-23 → 2026-10-21 (-2d) | 2026-10-23 → 2026-10-21 (-2d) |  | -4.62d → -1d |
| 121 | Train new resources | 2026-10-26 → 2026-10-22 (-4d) | 2026-10-26 → 2026-10-22 (-4d) |  | -4.62d → -1d |
| 122 | Certify new resources | 2026-10-27 → 2026-10-23 (-4d) | 2026-10-29 → 2026-10-27 (-2d) |  | -4.62d → -1d |
| 123 | Resource Readiness Training COMPLETE | 2026-10-29 → 2026-10-27 (-2d) | 2026-10-29 → 2026-10-27 (-2d) |  | 9.5d → 8d |
| 124 | Deploy technology infrastructure | 2026-09-03 → 2026-08-25 (-9d) | 2026-09-04 → 2026-08-25 (-10d) |  | 34.88d → 44d |
| 125 | Deploy new customer service programs | 2026-10-30 → 2026-10-28 (-2d) | 2026-10-30 → 2026-10-28 (-2d) |  | -4.62d → -1d |
| 126 | Program Deployment COMPLETE | 2026-10-30 → 2026-10-28 (-2d) | 2026-10-30 → 2026-10-28 (-2d) |  | -4.62d → -1d |
| 127 | **Post Launch** | 2026-10-30 → 2026-10-28 (-2d) | 2026-11-12 → 2026-11-06 (-6d) | 8.5d? → 7d? | -4.62d → -1d |
| 128 | **Engage in Post Launch Preparation Activities** | 2026-10-30 → 2026-10-28 (-2d) | 2026-11-06 → 2026-11-02 (-4d) | 4.5d? → 3d? | -4.62d → -1d |
| 129 | Determine success metrics | 2026-10-30 → 2026-10-28 (-2d) | 2026-11-02 → 2026-10-29 (-4d) |  | -4.62d → -1d |
| 130 | Create method for tracking common problems and solutions | 2026-11-02 → 2026-10-29 (-4d) | 2026-11-02 → 2026-10-29 (-4d) |  | -4.62d → -1d |
| 131 | Create method to track support issues vs. product aspects | 2026-11-02 → 2026-10-29 (-4d) | 2026-11-05 → 2026-11-02 (-3d) |  | -19.62d → -9d |
| 132 | Create method for distributing common solutions to all support resources | 2026-11-05 → 2026-11-02 (-3d) | 2026-11-06 → 2026-11-02 (-4d) |  | -5d → -1d |
| 133 | Post Launch Preparation COMPLETE | 2026-11-06 → 2026-11-02 (-4d) | 2026-11-06 → 2026-11-02 (-4d) |  | -4.5d → -1d |
| 134 | **Monitoring** | 2026-11-06 → 2026-11-02 (-4d) | 2026-11-12 → 2026-11-06 (-6d) |  | -4.5d → -1d |
| 135 | Monitor customer support issues - look for common problems | 2026-11-06 → 2026-11-02 (-4d) | 2026-11-06 → 2026-11-03 (-3d) |  | -5d → -1d |
| 136 | Aggregate best practices (solutions) - distribute to support services | 2026-11-06 → 2026-11-03 (-3d) | 2026-11-09 → 2026-11-03 (-6d) |  | -5d → -1d |
| 137 | Review support data, determine which product aspects cause the most support incidents | 2026-11-09 → 2026-11-03 (-6d) | 2026-11-09 → 2026-11-04 (-5d) |  | -5d → -1d |
| 138 | Review resource performance, determine which ones are the most effective | 2026-11-09 → 2026-11-04 (-5d) | 2026-11-10 → 2026-11-04 (-6d) |  | -5d → -1d |
| 139 | Revise training materials based on data collected from customer service program | 2026-11-10 → 2026-11-04 (-6d) | 2026-11-12 → 2026-11-06 (-6d) |  | -20.38d → -3d |
| 140 | Post Launch Activities COMPLETE | 2026-11-12 → 2026-11-06 (-6d) | 2026-11-12 → 2026-11-06 (-6d) |  | -4.5d → -1d |
| 141 | Customer Service Program Development COMPLETE | 2026-11-12 → 2026-11-06 (-6d) | 2026-11-12 → 2026-11-06 (-6d) |  | -4.5d → -1d |

## Version 4 (data date 2026-10-12, saved 2026-07-09, file Hard_File_updated3.mpp)

Last finish 2026-11-06 → 2026-12-12 (+36d). Complete tasks 34 → 42.

Changed:

| ID | Task | Start | Finish | Duration | Complete | Total float | Predecessors | Other |
| --- | --- | --- | --- | --- | --- | --- | --- | --- |
| 10 | **Service Planning** |  | 2026-08-22 → 2026-10-14 (+53d) | 13d? → 50.64d? |  | 12.1d → 42.36d |  |  |
| 11 | **Design Support Services** |  | 2026-08-22 → 2026-10-14 (+53d) | 13d? → 50.64d? |  | 12.1d → 42.36d |  |  |
| 12 | **Design Customer Service Contact Scenarios** | 2026-08-19 → 2026-10-12 (+54d) | 2026-08-20 → 2026-10-13 (+54d) | 1d? → 0d? |  | 12d → 42.36d |  |  |
| 13 | Online support | 2026-08-19 → 2026-10-12 (+54d) | 2026-08-20 → 2026-10-13 (+54d) |  |  | 12.37d → 42.36d |  | constraint none → start no earlier than 2026-10-12 |
| 14 | Phone support | 2026-08-19 → 2026-10-12 (+54d) | 2026-08-20 → 2026-10-13 (+54d) |  |  | 12.37d → 42.36d |  | constraint none → start no earlier than 2026-10-12 |
| 15 | On-site support | 2026-08-20 → 2026-10-12 (+53d) | 2026-08-20 → 2026-10-13 (+54d) |  |  | 12d → 42.36d |  | constraint none → start no earlier than 2026-10-12 |
| 16 | Design of customer service contact scenarios COMPLETE | 2026-08-20 → 2026-10-13 (+54d) | 2026-08-20 → 2026-10-13 (+54d) |  |  | 12d → 43d |  | constraint none → start no earlier than 2026-10-12 |
| 17 | **Develop Levels of Customer Service (Free and Paid)** |  | 2026-08-22 → 2026-10-14 (+53d) | 13d? → 50.64d? |  | 12.1d → 42.36d |  |  |
| 18 | Identify types of problems to be solved | 2026-08-20 → 2026-10-13 (+54d) | 2026-08-21 → 2026-10-13 (+53d) |  |  | 12d → 42.36d |  | constraint start no earlier than 2026-07-31 → start no earlier than 2026-10-12 |
| 19 | Identify service delivery options | 2026-08-21 → 2026-10-13 (+53d) | 2026-08-22 → 2026-10-14 (+53d) |  |  | 12.1d → 42.36d |  | constraint none → start no earlier than 2026-10-12 |
| 24 | **Service Delivery Infrastructure Planning** |  | 2026-10-01 → 2026-11-04 (+34d) | 31.9d? → 55.4d? | 40% → 60% | 26.1d → 27.6d |  |  |
| 30 | **Training & Readiness** |  | 2026-10-01 → 2026-11-04 (+34d) | 30.9d? → 54.4d? | 40% → 61% | -1.9d → -16.4d |  |  |
| 36 | **Training Planning** |  | 2026-10-01 → 2026-11-04 (+34d) | 26.4d? → 49.9d? | 29% → 55% | -1.9d → -16.4d |  |  |
| 47 | **Training Delivery Planning** | 2026-09-02 A | 2026-09-28 → 2026-11-04 (+37d) | 18.9d? → 45.4d? | 0% → 48% | -1.9d → -16.4d |  |  |
| 48 | **Assess Trainer Needs & Options** | 2026-09-02 A | 2026-09-17 → 2026-09-14 A (-3d) | 12d? → 9d? | 0% → 100% | -1.9d → none |  |  |
| 51 | **Review Outsourcing Options - Training Delivery** | 2026-09-04 A | 2026-09-17 → 2026-09-14 A (-3d) | 10d? → 7d? | 0% → 100% | -1.9d → none |  |  |
| 52 | Review expertise of potential vendors |  | 2026-09-10 A → 2026-09-07 A (-3d) | 1w → 0.4w |  |  |  | baseline finish 2026-09-04 → 2026-09-07 |
| 53 | Review cost | 2026-09-11 → 2026-09-08 A (-3d) | 2026-09-11 → 2026-09-08 A (-3d) |  | 0% → 100% | -1.9d → none |  | baseline finish 2026-09-07 → 2026-09-08 |
| 54 | Review service levels | 2026-09-14 → 2026-09-09 A (-5d) | 2026-09-14 → 2026-09-09 A (-5d) |  | 0% → 100% | -1.9d → none |  |  |
| 55 | Review customer references | 2026-09-15 → 2026-09-10 A (-5d) | 2026-09-15 → 2026-09-10 A (-5d) |  | 0% → 100% | -1.9d → none |  |  |
| 56 | Determine time required to ready external trainers | 2026-09-16 → 2026-09-11 A (-5d) | 2026-09-16 → 2026-09-11 A (-5d) |  | 0% → 100% | -1.9d → none |  |  |
| 57 | Make outsourcing decision | 2026-09-17 → 2026-09-14 A (-3d) | 2026-09-17 → 2026-09-14 A (-3d) |  | 0% → 100% | -1.9d → none |  |  |
| 58 | Outsourcing Review COMPLETE | 2026-09-17 → 2026-09-14 A (-3d) | 2026-09-17 → 2026-09-14 A (-3d) |  | 0% → 100% | -1.9d → none |  |  |
| 59 | Trainer Needs Assessment COMPLETE | 2026-09-17 → 2026-09-14 A (-3d) | 2026-09-17 → 2026-09-14 A (-3d) |  | 0% → 100% | -1.9d → none |  |  |
| 60 | **Training Delivery Logistics** | 2026-09-18 → 2026-09-25 A (+7d) | 2026-09-25 → 2026-11-04 (+40d) | 5.9d? → 28.4d? | 0% → 17% | -1.9d → -16.4d |  |  |
| 61 | Create training delivery schedule | 2026-09-18 → 2026-09-25 A (+7d) | 2026-09-18 → 2026-09-25 A (+7d) |  | 0% → 100% | -1.9d → none |  | constraint none → start no earlier than 2026-09-23 |
| 62 | Determine training delivery locations | 2026-09-21 → 2026-10-13 (+22d) | 2026-09-21 → 2026-10-13 (+22d) |  |  | -1.9d → -18d |  | constraint none → start no earlier than 2026-10-12 |
| 63 | Review outsourcing options - event logistics | 2026-09-22 → 2026-10-14 (+22d) | 2026-09-22 → 2026-10-14 (+22d) |  |  | -1.9d → -18d |  | constraint none → start no earlier than 2026-10-12 |
| 64 | Develop training delivery budget | 2026-09-22 → 2026-11-02 (+41d) | 2026-09-24 → 2026-11-04 (+41d) |  |  | -1.9d → -16.4d |  | constraint none → start no earlier than 2026-10-12 |
| 65 | Training Delivery Logistics COMPLETE | 2026-09-24 → 2026-10-13 (+19d) | 2026-09-25 → 2026-10-13 (+18d) |  |  | -1.9d → -17.62d | 64 → 59 | constraint none → start no earlier than 2026-10-12 |
| 66 | Create training plan with outputs of Content Development & Training Delivery Phases | 2026-09-25 → 2026-10-13 (+18d) | 2026-09-28 → 2026-10-21 (+23d) | 1d? → 5.75d? |  | -1.9d → -17.62d |  | constraint none → start no earlier than 2026-10-12; resources Customer Service Lead → Customer Service Lead; AI Token Time [1 Bucket]; Cleaning [0.1%]; Customer Service Team |
| 67 | Training Delivery Planning Complete | 2026-09-28 → 2026-10-21 (+23d) | 2026-09-28 → 2026-10-21 (+23d) |  |  | -1.9d → -17.62d |  | constraint none → start no earlier than 2026-10-12 |
| 68 | **Finalize Training Planning** | 2026-09-28 → 2026-10-21 (+23d) | 2026-10-01 → 2026-10-28 (+27d) | 3d? → 5d? |  | -1.9d → -17.62d |  |  |
| 69 | Draft Overall Budget | 2026-09-28 → 2026-10-21 (+23d) | 2026-09-29 → 2026-10-22 (+23d) |  |  | -1.9d → -17.62d |  | constraint none → start no earlier than 2026-10-12 |
| 70 | Acquire executive sign-off on budget | 2026-09-29 → 2026-10-22 (+23d) | 2026-09-30 → 2026-10-27 (+27d) | 1d → 3d |  | -1.9d → -17.62d |  | constraint none → start no earlier than 2026-10-12 |
| 71 | Acquire executive sign-off on training plans | 2026-09-30 → 2026-10-27 (+27d) | 2026-10-01 → 2026-10-28 (+27d) |  |  | -1.9d → -17.62d |  | constraint none → start no earlier than 2026-10-12 |
| 72 | Training Planning COMPLETE | 2026-10-01 → 2026-10-28 (+27d) | 2026-10-01 → 2026-10-28 (+27d) |  |  | -1.9d → -17.62d |  | constraint none → start no earlier than 2026-10-12 |
| 73 | **Technology Infrastructure** | 2026-08-19 → 2026-10-13 (+55d) | 2026-08-20 → 2026-10-14 (+55d) |  |  | 44d → 5d |  |  |
| 74 | Build technology infrastructure plan (separate project plan required) | 2026-08-19 → 2026-10-13 (+55d) | 2026-08-19 → 2026-10-13 (+55d) |  |  | 44d → 5d |  | constraint none → start no earlier than 2026-10-12 |
| 75 | Determine technology budget | 2026-08-20 → 2026-10-14 (+55d) | 2026-08-20 → 2026-10-14 (+55d) |  |  | 44d → 5d |  | constraint none → start no earlier than 2026-10-12 |
| 76 | Technology infrastructure planning COMPLETE | 2026-08-20 → 2026-10-14 (+55d) | 2026-08-20 → 2026-10-14 (+55d) |  |  | 44d → 5d |  | constraint none → start no earlier than 2026-10-12 |
| 77 | Service Delivery Planning COMPLETE | 2026-08-20 → 2026-10-14 (+55d) | 2026-08-20 → 2026-10-14 (+55d) |  |  | 56d → 42d |  | constraint none → start no earlier than 2026-10-12 |
| 78 | **Business Performance Planning** | 2026-08-20 → 2026-10-13 (+54d) | 2026-08-24 → 2026-11-06 (+74d) | 2.5d? → 19d? |  | 26d → -25.68d |  |  |
| 79 | Determine business objectives of support services | 2026-08-20 → 2026-10-13 (+54d) | 2026-08-21 → 2026-10-13 (+53d) |  |  | 26.5d → -25.68d |  | constraint none → start no earlier than 2026-10-12 |
| 80 | Determine success metrics | 2026-08-24 → 2026-10-13 (+50d) | 2026-08-24 → 2026-11-04 (+72d) | 1d? → 11.8d? |  | 26d → -25.68d |  | constraint none → start no earlier than 2026-10-12; resources Customer Service Team → Customer Service Team; AI Token Time [1 Bucket]; Cleaning [0.1%]; Logistics [25%] |
| 81 | Determine cost efficiency standards | 2026-08-24 → 2026-11-04 (+72d) | 2026-08-24 → 2026-11-06 (+74d) | 1d? → 5d? |  | 26d → -25.68d |  | constraint none → start no earlier than 2026-10-12 |
| 82 | Business Performance Planning COMPLETE | 2026-08-24 → 2026-11-06 (+74d) | 2026-08-24 → 2026-11-06 (+74d) |  |  | 26d → -25.12d |  | constraint none → start no earlier than 2026-10-12 |
| 83 | **Build Customer Service Program** |  | 2026-10-20 → 2026-11-25 (+36d) | 60d? → 86d? |  | 13d → 12d |  |  |
| 84 | **Training/Readiness Development** | 2026-10-01 → 2026-11-09 (+39d) | 2026-10-20 → 2026-11-25 (+36d) | 13.1d? → 13d? |  | -1.9d → -25.12d |  |  |
| 85 | **Training Content Development** | 2026-10-01 → 2026-11-09 (+39d) | 2026-10-09 → 2026-11-16 (+38d) |  |  | -1.9d → -25.12d |  |  |
| 86 | Assemble content development team | 2026-10-01 → 2026-11-09 (+39d) | 2026-10-02 → 2026-11-09 (+38d) |  |  | -1.9d → -25.12d |  | constraint none → start no earlier than 2026-10-12 |
| 87 | Define roles and responsibilities | 2026-10-02 → 2026-11-10 (+39d) | 2026-10-05 → 2026-11-10 (+36d) |  |  | -1.9d → -25.12d |  | constraint none → start no earlier than 2026-10-12 |
| 88 | Create content development schedule | 2026-10-05 → 2026-11-11 (+37d) | 2026-10-06 → 2026-11-11 (+36d) |  |  | -1.9d → -25.12d |  | constraint none → start no earlier than 2026-10-12 |
| 89 | **Build Training Content** | 2026-10-06 → 2026-11-11 (+36d) | 2026-10-09 → 2026-11-16 (+38d) |  |  | -1.9d → -25.12d |  |  |
| 90 | Review existing intellectual property | 2026-10-06 → 2026-11-11 (+36d) | 2026-10-07 → 2026-11-12 (+36d) |  |  | -2d → -25.12d |  | constraint none → start no earlier than 2026-10-12 |
| 91 | Develop beta content | 2026-10-07 → 2026-11-12 (+36d) | 2026-10-07 → 2026-11-12 (+36d) |  |  | -2d → -25.12d |  | constraint none → start no earlier than 2026-10-12 |
| 92 | Perform SME review of training content | 2026-10-07 → 2026-11-12 (+36d) | 2026-10-07 → 2026-11-12 (+36d) |  |  | -1.9d → -25.12d |  | constraint none → start no earlier than 2026-10-12 |
| 93 | Revise and update content | 2026-10-07 → 2026-11-12 (+36d) | 2026-10-08 → 2026-11-13 (+36d) |  |  | -2d → -25.12d |  | constraint none → start no earlier than 2026-10-12 |
| 94 | Create "cheat sheets" and additional learning resources for customer support | 2026-10-08 → 2026-11-13 (+36d) | 2026-10-08 → 2026-11-13 (+36d) |  |  | -2d → -25.12d |  | constraint none → start no earlier than 2026-10-12 |
| 95 | Acquire final content approval | 2026-10-08 → 2026-11-13 (+36d) | 2026-10-09 → 2026-11-16 (+38d) |  |  | -1.15d → -25.12d |  | constraint none → start no earlier than 2026-10-12 |
| 96 | Content Development COMPLETE | 2026-10-09 → 2026-11-16 (+38d) | 2026-10-09 → 2026-11-16 (+38d) |  |  | -1.15d → -25.12d |  | constraint none → start no earlier than 2026-10-12 |
| 97 | **Develop Training Delivery Engine** | 2026-10-09 → 2026-11-16 (+38d) | 2026-10-20 → 2026-11-25 (+36d) | 7.97d? → 7.88d? |  | -1.15d → -27d |  |  |
| 98 | Create additional "train the trainer" learning materials | 2026-10-09 → 2026-11-16 (+38d) | 2026-10-09 → 2026-11-16 (+38d) |  |  | -1.9d → -26d |  | constraint none → start no earlier than 2026-10-12 |
| 99 | Create proficiency exams | 2026-10-09 → 2026-11-16 (+38d) | 2026-10-11 → 2026-11-18 (+38d) |  |  | -1.9d → -27d |  | constraint none → start no earlier than 2026-10-12 |
| 100 | Train additional trainers | 2026-10-12 → 2026-11-18 (+37d) | 2026-10-12 → 2026-11-18 (+37d) |  |  | -1d → -27d |  | constraint none → start no earlier than 2026-10-12 |
| 101 | Prepare training venues | 2026-10-12 → 2026-11-18 (+37d) | 2026-10-14 → 2026-11-19 (+36d) |  |  | -1d → -27d |  |  |
| 102 | Create communications plan | 2026-10-14 → 2026-11-19 (+36d) | 2026-10-16 → 2026-11-23 (+38d) |  |  | -1d → -27d | 101 → 101, 64 |  |
| 103 | Provide new hires with information on training program | 2026-10-19 → 2026-11-24 (+36d) | 2026-10-19 → 2026-11-24 (+36d) |  |  | -1d → -27d |  |  |
| 104 | Send out communication to existing support resources regarding new training plan | 2026-10-20 → 2026-11-25 (+36d) | 2026-10-20 → 2026-11-25 (+36d) |  |  | -1d → -27d |  |  |
| 105 | Training Delivery Engine Development COMPLETE | 2026-10-20 → 2026-11-25 (+36d) | 2026-10-20 → 2026-11-25 (+36d) |  |  | -1d → -27d |  |  |

| ID | Task | Start | Finish | Duration | Total float | Other |
| --- | --- | --- | --- | --- | --- | --- |
| 106 | Training/Readiness Development COMPLETE | 2026-10-20 → 2026-11-25 (+36d) | 2026-10-20 → 2026-11-25 (+36d) |  | 13d → 12d |  |
| 107 | **Build Technology Infrastructure** | 2026-08-21 → 2026-10-15 (+55d) | 2026-08-24 → 2026-10-16 (+53d) |  | 44d → 5d |  |
| 108 | Design and develop technology solution (separate schedule required) | 2026-08-21 → 2026-10-15 (+55d) | 2026-08-21 → 2026-10-15 (+55d) |  | 44d → 5d | constraint none → start no earlier than 2026-10-12 |
| 109 | Test technology infrastructure | 2026-08-21 → 2026-10-15 (+55d) | 2026-08-24 → 2026-10-16 (+53d) | 3d? → 2.25d? | 44d → 5d | constraint none → start no earlier than 2026-10-12 |
| 110 | Technology Infrastructure Development COMPLETE | 2026-08-24 → 2026-10-16 (+53d) | 2026-08-24 → 2026-10-16 (+53d) |  | 54d → 40d | constraint none → start no earlier than 2026-10-12 |
| 111 | **Customer Service Program Development** |  | 2026-08-12 → 2026-11-05 (+85d) | 11d? → 71.15d? | 62d → 26.85d |  |
| 115 | Revise programs and related processes | 2026-08-06 → 2026-10-12 (+67d) | 2026-08-07 → 2026-10-13 (+67d) |  | 62d → 26.85d | constraint none → start no earlier than 2026-10-12 |
| 116 | Acquire executive sign-off | 2026-08-07 → 2026-10-19 (+73d) | 2026-08-12 → 2026-11-05 (+85d) |  | 62d → 26.85d | constraint none → start no earlier than 2026-10-12 |
| 117 | Customer Service Program Development COMPLETE | 2026-08-12 → 2026-11-05 (+85d) | 2026-08-12 → 2026-11-05 (+85d) |  | 62d → 26.85d | constraint none → start no earlier than 2026-10-12 |
| 118 | **Program Deployment** | 2026-08-25 → 2026-10-19 (+55d) | 2026-10-28 → 2026-12-03 (+36d) | 47d? → 34d? | 7d → 1d |  |
| 119 | **Resource Readiness** | 2026-10-21 → 2026-11-26 (+36d) | 2026-10-27 → 2026-12-02 (+36d) |  | -1d → -27d |  |
| 120 | Hire new resources | 2026-10-21 → 2026-11-26 (+36d) | 2026-10-21 → 2026-11-26 (+36d) |  | -1d → -27d |  |
| 121 | Train new resources | 2026-10-22 → 2026-11-27 (+36d) | 2026-10-22 → 2026-11-27 (+36d) |  | -1d → -27d |  |
| 122 | Certify new resources | 2026-10-23 → 2026-11-30 (+38d) | 2026-10-27 → 2026-12-02 (+36d) |  | -1d → -27d |  |
| 123 | Resource Readiness Training COMPLETE | 2026-10-27 → 2026-12-02 (+36d) | 2026-10-27 → 2026-12-02 (+36d) |  | 8d → 7d |  |
| 124 | Deploy technology infrastructure | 2026-08-25 → 2026-10-19 (+55d) | 2026-08-25 → 2026-10-19 (+55d) |  | 44d → 5d | constraint none → start no earlier than 2026-10-12 |
| 125 | Deploy new customer service programs | 2026-10-28 → 2026-12-03 (+36d) | 2026-10-28 → 2026-12-03 (+36d) |  | -1d → -27d |  |
| 126 | Program Deployment COMPLETE | 2026-10-28 → 2026-12-03 (+36d) | 2026-10-28 → 2026-12-03 (+36d) |  | -1d → -27d |  |
| 127 | **Post Launch** | 2026-10-28 → 2026-12-03 (+36d) | 2026-11-06 → 2026-12-12 (+36d) | 7d? → 6d? | -1d → -27d |  |
| 128 | **Engage in Post Launch Preparation Activities** | 2026-10-28 → 2026-12-03 (+36d) | 2026-11-02 → 2026-12-08 (+36d) |  | -1d → -27d |  |
| 129 | Determine success metrics | 2026-10-28 → 2026-12-03 (+36d) | 2026-10-29 → 2026-12-04 (+36d) |  | -1d → -27d |  |
| 130 | Create method for tracking common problems and solutions | 2026-10-29 → 2026-12-04 (+36d) | 2026-10-29 → 2026-12-04 (+36d) |  | -1d → -27d |  |
| 131 | Create method to track support issues vs. product aspects | 2026-10-29 → 2026-12-04 (+36d) | 2026-11-02 → 2026-12-08 (+36d) |  | -9d → -117d |  |
| 132 | Create method for distributing common solutions to all support resources | 2026-11-02 → 2026-12-08 (+36d) | 2026-11-02 → 2026-12-08 (+36d) |  | -1d → -27d |  |
| 133 | Post Launch Preparation COMPLETE | 2026-11-02 → 2026-12-08 (+36d) | 2026-11-02 → 2026-12-08 (+36d) |  | -1d → -27d |  |
| 134 | **Monitoring** | 2026-11-02 → 2026-12-08 (+36d) | 2026-11-06 → 2026-12-12 (+36d) | 4d? → 3d? | -1d → -27d |  |
| 135 | Monitor customer support issues - look for common problems | 2026-11-02 → 2026-12-08 (+36d) | 2026-11-03 → 2026-12-09 (+36d) |  | -1d → -27d |  |
| 136 | Aggregate best practices (solutions) - distribute to support services | 2026-11-03 → 2026-12-09 (+36d) | 2026-11-03 → 2026-12-09 (+36d) |  | -1d → -27d |  |
| 137 | Review support data, determine which product aspects cause the most support incidents | 2026-11-03 → 2026-12-09 (+36d) | 2026-11-04 → 2026-12-10 (+36d) |  | -1d → -27d |  |
| 138 | Review resource performance, determine which ones are the most effective | 2026-11-04 → 2026-12-10 (+36d) | 2026-11-04 → 2026-12-10 (+36d) |  | -1d → -27d |  |
| 139 | Revise training materials based on data collected from customer service program | 2026-11-04 → 2026-12-10 (+36d) | 2026-11-06 → 2026-12-12 (+36d) |  | -3d → -111d |  |
| 140 | Post Launch Activities COMPLETE | 2026-11-06 → 2026-12-12 (+36d) | 2026-11-06 → 2026-12-12 (+36d) |  | -1d → -26d |  |
| 141 | Customer Service Program Development COMPLETE | 2026-11-06 → 2026-12-12 (+36d) | 2026-11-06 → 2026-12-12 (+36d) |  | -1d → -26d |  |

## Version 5 (data date 2026-10-12, saved 2026-07-15, file Hard_File_updated3.mpp)

Last finish stays 2026-12-12.

Changed:

| ID | Task | Start | Finish | Duration | Total float |
| --- | --- | --- | --- | --- | --- |
| 24 | **Service Delivery Infrastructure Planning** |  | 2026-11-04 → 2026-10-30 (-5d) | 55.4d? → 52.4d? | 27.6d → 30.6d |
| 30 | **Training & Readiness** |  | 2026-11-04 → 2026-10-30 (-5d) | 54.4d? → 51.4d? | -16.4d → -13.4d |
| 36 | **Training Planning** |  | 2026-11-04 → 2026-10-30 (-5d) | 49.9d? → 46.9d? | -16.4d → -13.4d |
| 47 | **Training Delivery Planning** |  | 2026-11-04 → 2026-10-30 (-5d) | 45.4d? → 42.4d? | -16.4d → -13.4d |
| 60 | **Training Delivery Logistics** |  | 2026-11-04 → 2026-10-30 (-5d) | 28.4d? → 25.4d? | -16.4d → -13.4d |
| 64 | Develop training delivery budget | 2026-11-02 → 2026-10-28 (-5d) | 2026-11-04 → 2026-10-30 (-5d) |  | -16.4d → -13.4d |
| 111 | **Customer Service Program Development** |  | 2026-11-05 → 2026-10-30 (-6d) | 71.15d? → 67.75d? | 26.85d → 30.25d |
| 116 | Acquire executive sign-off |  | 2026-11-05 → 2026-10-30 (-6d) |  | 26.85d → 30.25d |
| 117 | Customer Service Program Development COMPLETE | 2026-11-05 → 2026-10-30 (-6d) | 2026-11-05 → 2026-10-30 (-6d) |  | 26.85d → 30.25d |

## Version 6 (data date 2026-11-12, saved 2026-07-15, file Hard_File_updated4 24 hour calendar.mpp)

Last finish 2026-12-12 → 2026-11-19 (-23d). Complete tasks 42 → 91.

Changed:

| ID | Task | Start | Finish | Duration | Complete | Total float | Other |
| --- | --- | --- | --- | --- | --- | --- | --- |
| 10 | **Service Planning** |  | 2026-10-14 → 2026-10-22 A (+8d) | 50.64d? → 56.64d? | 77% → 100% | 42.36d → none |  |
| 11 | **Design Support Services** |  | 2026-10-14 → 2026-10-22 A (+8d) | 50.64d? → 56.64d? | 77% → 100% | 42.36d → none |  |
| 12 | **Design Customer Service Contact Scenarios** | 2026-10-12 A | 2026-10-13 A |  | 0% → 100% | 42.36d → none |  |
| 13 | Online support | 2026-10-12 A | 2026-10-13 A |  | 0% → 100% | 42.36d → none |  |
| 14 | Phone support | 2026-10-12 A | 2026-10-13 A |  | 0% → 100% | 42.36d → none |  |
| 15 | On-site support | 2026-10-12 A | 2026-10-13 A |  | 0% → 100% | 42.36d → none |  |
| 16 | Design of customer service contact scenarios COMPLETE | 2026-10-13 A | 2026-10-13 A |  | 0% → 100% | 43d → none |  |
| 17 | **Develop Levels of Customer Service (Free and Paid)** |  | 2026-10-14 → 2026-10-22 A (+8d) | 50.64d? → 56.64d? | 88% → 100% | 42.36d → none |  |
| 18 | Identify types of problems to be solved | 2026-10-13 → 2026-10-19 A (+6d) | 2026-10-13 → 2026-10-21 A (+8d) | 1d → 5d | 0% → 100% | 42.36d → none | constraint start no earlier than 2026-10-12 → start no earlier than 2026-10-19 |
| 19 | Identify service delivery options | 2026-10-13 → 2026-10-21 A (+8d) | 2026-10-14 → 2026-10-22 A (+8d) |  | 0% → 100% | 42.36d → none |  |
| 24 | **Service Delivery Infrastructure Planning** |  | 2026-10-30 → 2026-10-29 (-1d) | 52.4d? → 51.4d? | 60% → 99% | 30.6d → 14.6d |  |
| 30 | **Training & Readiness** |  | 2026-10-30 → 2026-10-29 (-1d) | 51.4d? → 50.4d? | 61% → 99% | -13.4d → 14.6d |  |
| 36 | **Training Planning** |  | 2026-10-30 → 2026-10-29 (-1d) | 46.9d? → 45.9d? | 55% → 99% | -13.4d → 14.6d |  |
| 47 | **Training Delivery Planning** |  | 2026-10-30 → 2026-10-29 (-1d) | 42.4d? → 41.4d? | 48% → 99% | -13.4d → 14.6d |  |
| 60 | **Training Delivery Logistics** |  | 2026-10-30 → 2026-10-29 (-1d) | 25.4d? → 24.4d? | 17% → 99% | -13.4d → 14.6d |  |
| 62 | Determine training delivery locations | 2026-10-13 → 2026-10-15 A (+2d) | 2026-10-13 → 2026-10-15 A (+2d) |  | 0% → 100% | -13d → none |  |
| 63 | Review outsourcing options - event logistics | 2026-10-14 → 2026-10-16 A (+2d) | 2026-10-14 → 2026-10-16 A (+2d) |  | 0% → 100% | -13d → none |  |
| 64 | Develop training delivery budget | 2026-10-28 → 2026-10-27 A (-1d) | 2026-10-30 → 2026-10-29 (-1d) |  | 0% → 99% | -13.4d → 14.6d |  |
| 65 | Training Delivery Logistics COMPLETE | 2026-10-13 A | 2026-10-13 A |  | 0% → 100% | -17.62d → none |  |
| 66 | Create training plan with outputs of Content Development & Training Delivery Phases | 2026-10-13 A | 2026-10-21 → 2026-10-15 (-6d) | 5.75d? → 4.75d? | 0% → 99% | -17.62d → 103.5d |  |
| 67 | Training Delivery Planning Complete | 2026-10-21 → 2026-10-15 A (-6d) | 2026-10-21 → 2026-10-15 A (-6d) |  | 0% → 100% | -17.62d → none |  |
| 68 | **Finalize Training Planning** | 2026-10-21 → 2026-10-15 A (-6d) | 2026-10-28 → 2026-10-22 A (-6d) |  | 0% → 100% | -17.62d → none |  |
| 69 | Draft Overall Budget | 2026-10-21 → 2026-10-15 A (-6d) | 2026-10-22 → 2026-10-16 A (-6d) |  | 0% → 100% | -17.62d → none |  |
| 70 | Acquire executive sign-off on budget | 2026-10-22 → 2026-10-16 A (-6d) | 2026-10-27 → 2026-10-21 A (-6d) |  | 0% → 100% | -17.62d → none |  |
| 71 | Acquire executive sign-off on training plans | 2026-10-27 → 2026-10-21 A (-6d) | 2026-10-28 → 2026-10-22 A (-6d) |  | 0% → 100% | -17.62d → none |  |
| 72 | Training Planning COMPLETE | 2026-10-28 → 2026-10-22 A (-6d) | 2026-10-28 → 2026-10-22 A (-6d) |  | 0% → 100% | -17.62d → none |  |
| 73 | **Technology Infrastructure** | 2026-10-13 A | 2026-10-14 A |  | 0% → 100% | 5d → none |  |
| 74 | Build technology infrastructure plan (separate project plan required) | 2026-10-13 A | 2026-10-13 A |  | 0% → 100% | 5d → none |  |
| 75 | Determine technology budget | 2026-10-14 A | 2026-10-14 A |  | 0% → 100% | 5d → none |  |
| 76 | Technology infrastructure planning COMPLETE | 2026-10-14 A | 2026-10-14 A |  | 0% → 100% | 5d → none |  |
| 77 | Service Delivery Planning COMPLETE | 2026-10-14 A | 2026-10-14 A |  | 0% → 100% | 42d → none |  |
| 78 | **Business Performance Planning** | 2026-10-13 A | 2026-11-06 → 2026-10-20 (-17d) | 19d? → 5.67d? | 0% → 99% | -25.68d → 21.32d |  |
| 79 | Determine business objectives of support services | 2026-10-13 A | 2026-10-13 A |  | 0% → 100% | -25.68d → none |  |
| 80 | Determine success metrics | 2026-10-13 A | 2026-11-04 → 2026-10-18 (-17d) | 11.8d? → 8.8d? | 0% → 99% | -25.68d → 93.33d |  |
| 81 | Determine cost efficiency standards | 2026-11-04 → 2026-10-18 A (-17d) | 2026-11-06 → 2026-10-20 A (-17d) |  | 0% → 100% | -25.68d → none |  |
| 82 | Business Performance Planning COMPLETE | 2026-11-06 → 2026-10-20 A (-17d) | 2026-11-06 → 2026-10-20 A (-17d) |  | 0% → 100% | -25.12d → none |  |
| 83 | **Build Customer Service Program** |  | 2026-11-25 → 2026-11-09 A (-16d) | 86d? → 74d? | 32% → 100% | 12d → none |  |
| 84 | **Training/Readiness Development** | 2026-11-09 → 2026-10-22 A (-18d) | 2026-11-25 → 2026-11-09 A (-16d) | 13d? → 12.5d? | 0% → 100% | -25.12d → none |  |
| 85 | **Training Content Development** | 2026-11-09 → 2026-10-22 A (-18d) | 2026-11-16 → 2026-10-29 A (-18d) | 5.12d? → 5.5d? | 0% → 100% | -25.12d → none |  |
| 86 | Assemble content development team | 2026-11-09 → 2026-10-22 A (-18d) | 2026-11-09 → 2026-10-23 A (-17d) |  | 0% → 100% | -25.12d → none |  |
| 87 | Define roles and responsibilities | 2026-11-10 → 2026-10-23 A (-18d) | 2026-11-10 → 2026-10-26 A (-15d) |  | 0% → 100% | -25.12d → none |  |
| 88 | Create content development schedule | 2026-11-11 → 2026-10-26 A (-16d) | 2026-11-11 → 2026-10-27 A (-15d) |  | 0% → 100% | -25.12d → none |  |
| 89 | **Build Training Content** | 2026-11-11 → 2026-10-27 A (-15d) | 2026-11-16 → 2026-10-29 A (-18d) | 2.12d? → 2.5d? | 0% → 100% | -25.12d → none |  |
| 90 | Review existing intellectual property | 2026-11-11 → 2026-10-27 A (-15d) | 2026-11-12 → 2026-10-27 A (-16d) |  | 0% → 100% | -25.12d → none |  |
| 91 | Develop beta content | 2026-11-12 → 2026-10-27 A (-16d) | 2026-11-12 → 2026-10-28 A (-15d) |  | 0% → 100% | -25.12d → none |  |
| 92 | Perform SME review of training content | 2026-11-12 → 2026-10-28 A (-15d) | 2026-11-12 → 2026-10-28 A (-15d) |  | 0% → 100% | -25.12d → none |  |
| 93 | Revise and update content | 2026-11-12 → 2026-10-28 A (-15d) | 2026-11-13 → 2026-10-28 A (-16d) |  | 0% → 100% | -25.12d → none |  |
| 94 | Create "cheat sheets" and additional learning resources for customer support | 2026-11-13 → 2026-10-28 A (-16d) | 2026-11-13 → 2026-10-29 A (-15d) |  | 0% → 100% | -25.12d → none |  |
| 95 | Acquire final content approval | 2026-11-13 → 2026-10-29 A (-15d) | 2026-11-16 → 2026-10-29 A (-18d) |  | 0% → 100% | -25.12d → none |  |
| 96 | Content Development COMPLETE | 2026-11-16 → 2026-10-29 A (-18d) | 2026-11-16 → 2026-10-29 A (-18d) |  | 0% → 100% | -25.12d → none |  |
| 97 | **Develop Training Delivery Engine** | 2026-11-16 → 2026-10-29 A (-18d) | 2026-11-25 → 2026-11-09 A (-16d) | 7.88d? → 7d? | 0% → 100% | -27d → none |  |
| 98 | Create additional "train the trainer" learning materials | 2026-11-16 → 2026-10-29 A (-18d) | 2026-11-16 → 2026-10-30 A (-17d) |  | 0% → 100% | -26d → none |  |
| 99 | Create proficiency exams | 2026-11-16 → 2026-10-30 A (-17d) | 2026-11-18 → 2026-10-31 A (-18d) |  | 0% → 100% | -27d → none |  |
| 100 | Train additional trainers | 2026-11-18 → 2026-11-02 A (-16d) | 2026-11-18 → 2026-11-02 A (-16d) |  | 0% → 100% | -27d → none |  |
| 101 | Prepare training venues | 2026-11-18 → 2026-11-02 A (-16d) | 2026-11-19 → 2026-11-03 A (-16d) |  | 0% → 100% | -27d → none |  |
| 102 | Create communications plan | 2026-11-19 → 2026-11-03 A (-16d) | 2026-11-23 → 2026-11-05 A (-18d) |  | 0% → 100% | -27d → none |  |
| 103 | Provide new hires with information on training program | 2026-11-24 → 2026-11-06 A (-18d) | 2026-11-24 → 2026-11-06 A (-18d) |  | 0% → 100% | -27d → none |  |
| 104 | Send out communication to existing support resources regarding new training plan | 2026-11-25 → 2026-11-09 A (-16d) | 2026-11-25 → 2026-11-09 A (-16d) |  | 0% → 100% | -27d → none |  |
| 105 | Training Delivery Engine Development COMPLETE | 2026-11-25 → 2026-11-09 A (-16d) | 2026-11-25 → 2026-11-09 A (-16d) |  | 0% → 100% | -27d → none |  |
| 106 | Training/Readiness Development COMPLETE | 2026-11-25 → 2026-11-09 A (-16d) | 2026-11-25 → 2026-11-09 A (-16d) |  | 0% → 100% | 12d → none |  |
| 107 | **Build Technology Infrastructure** | 2026-10-15 A | 2026-10-16 A |  | 0% → 100% | 5d → none |  |
| 108 | Design and develop technology solution (separate schedule required) | 2026-10-15 A | 2026-10-15 A |  | 0% → 100% | 5d → none |  |
| 109 | Test technology infrastructure | 2026-10-15 A | 2026-10-16 A | 2.25d? → 2d? | 0% → 100% | 5d → none |  |
| 110 | Technology Infrastructure Development COMPLETE | 2026-10-16 A | 2026-10-16 A |  | 0% → 100% | 40d → none |  |
| 111 | **Customer Service Program Development** |  | 2026-10-30 → 2026-10-28 A (-2d) | 67.75d? → 65.5d? | 74% → 100% | 30.25d → none |  |
| 115 | Revise programs and related processes | 2026-10-12 A | 2026-10-13 A |  | 0% → 100% | 30.75d → none |  |
| 116 | Acquire executive sign-off | 2026-10-19 → 2026-10-15 A (-4d) | 2026-10-30 → 2026-10-28 A (-2d) |  | 0% → 100% | 30.25d → none |  |
| 117 | Customer Service Program Development COMPLETE | 2026-10-30 → 2026-10-28 A (-2d) | 2026-10-30 → 2026-10-28 A (-2d) |  | 0% → 100% | 30.25d → none |  |
| 118 | **Program Deployment** | 2026-10-19 A | 2026-12-03 → 2026-11-13 (-20d) | 34d? → 20d? | 0% → 71% | 1d → 3d |  |
| 119 | **Resource Readiness** | 2026-11-26 → 2026-11-10 A (-16d) | 2026-12-02 → 2026-11-13 (-19d) | 5d? → 3d? | 0% → 80% | -27d → 4d |  |

| ID | Task | Start | Finish | Duration | Complete | Total float |
| --- | --- | --- | --- | --- | --- | --- |
| 120 | Hire new resources | 2026-11-26 → 2026-11-10 A (-16d) | 2026-11-26 → 2026-11-10 A (-16d) |  | 0% → 100% | -27d → none |
| 121 | Train new resources | 2026-11-27 → 2026-11-11 A (-16d) | 2026-11-27 → 2026-11-11 A (-16d) |  | 0% → 100% | -27d → none |
| 122 | Certify new resources | 2026-11-30 → 2026-11-11 A (-19d) | 2026-12-02 → 2026-11-13 (-19d) |  | 0% → 67% | -27d → -41.12d |
| 123 | Resource Readiness Training COMPLETE | 2026-12-02 → 2026-11-13 (-19d) | 2026-12-02 → 2026-11-13 (-19d) |  |  | 7d → 4d |
| 124 | Deploy technology infrastructure | 2026-10-19 A | 2026-10-19 A |  | 0% → 100% | 5d → none |
| 125 | Deploy new customer service programs | 2026-12-03 → 2026-11-13 (-20d) | 2026-12-03 → 2026-11-13 (-20d) |  |  | -27d → -10d |
| 126 | Program Deployment COMPLETE | 2026-12-03 → 2026-11-13 (-20d) | 2026-12-03 → 2026-11-13 (-20d) |  |  | -27d → -10d |
| 127 | **Post Launch** | 2026-12-03 → 2026-11-13 (-20d) | 2026-12-12 → 2026-11-19 (-23d) | 6d? → 3d? |  | -27d → -10d |
| 128 | **Engage in Post Launch Preparation Activities** | 2026-12-03 → 2026-11-13 (-20d) | 2026-12-08 → 2026-11-15 (-23d) | 3d? → 0d? |  | -27d → -10d |
| 129 | Determine success metrics | 2026-12-03 → 2026-11-13 (-20d) | 2026-12-04 → 2026-11-14 (-20d) |  |  | -27d → -10d |
| 130 | Create method for tracking common problems and solutions | 2026-12-04 → 2026-11-14 (-20d) | 2026-12-04 → 2026-11-14 (-20d) |  |  | -27d → -10d |
| 131 | Create method to track support issues vs. product aspects | 2026-12-04 → 2026-11-14 (-20d) | 2026-12-08 → 2026-11-15 (-23d) |  |  | -117d → -40d |
| 132 | Create method for distributing common solutions to all support resources | 2026-12-08 → 2026-11-15 (-23d) | 2026-12-08 → 2026-11-15 (-23d) |  |  | -27d → -10d |
| 133 | Post Launch Preparation COMPLETE | 2026-12-08 → 2026-11-15 (-23d) | 2026-12-08 → 2026-11-15 (-23d) |  |  | -27d → -9.88d |
| 134 | **Monitoring** | 2026-12-08 → 2026-11-15 (-23d) | 2026-12-12 → 2026-11-19 (-23d) |  |  | -27d → -9.88d |
| 135 | Monitor customer support issues - look for common problems | 2026-12-08 → 2026-11-15 (-23d) | 2026-12-09 → 2026-11-16 (-23d) |  |  | -27d → -9.88d |
| 136 | Aggregate best practices (solutions) - distribute to support services | 2026-12-09 → 2026-11-16 (-23d) | 2026-12-09 → 2026-11-16 (-23d) |  |  | -27d → -9.12d |
| 137 | Review support data, determine which product aspects cause the most support incidents | 2026-12-09 → 2026-11-16 (-23d) | 2026-12-10 → 2026-11-16 (-24d) |  |  | -27d → -9.88d |
| 138 | Review resource performance, determine which ones are the most effective | 2026-12-10 → 2026-11-16 (-24d) | 2026-12-10 → 2026-11-17 (-23d) |  |  | -27d → -9.88d |
| 139 | Revise training materials based on data collected from customer service program | 2026-12-10 → 2026-11-17 (-23d) | 2026-12-12 → 2026-11-19 (-23d) |  |  | -111d → -40d |
| 140 | Post Launch Activities COMPLETE | 2026-12-12 → 2026-11-19 (-23d) | 2026-12-12 → 2026-11-19 (-23d) |  |  | -26d → -9d |
| 141 | Customer Service Program Development COMPLETE | 2026-12-12 → 2026-11-19 (-23d) | 2026-12-12 → 2026-11-19 (-23d) |  |  | -26d → -9d |
