# Commercial Construction

How a schedule from MS Project changed from version to version. A marks actual dates.

## Version 1 (data date 2026-05-24, saved 2026-05-24, file Project2.mpp)

Note of the change: Merge remote-tracking branch 'origin/main' into claude/schedule-tool-forensic-reaudit-7da8p1

| ID | WBS | Task | Duration | Start | Finish | Predecessors | Complete | Total float | Constraint |
| --- | --- | --- | --- | --- | --- | --- | --- | --- | --- |
| 1 | 1 | **General Conditions** | 46d | 2026-03-02 A | 2026-05-04 A |  | 100% |  |  |
| 2 |  | Receive notice to proceed and sign contract | 3d | 2026-03-02 A | 2026-03-04 A |  | 100% |  |  |
| 3 |  | Submit bond and insurance documents | 2d | 2026-03-25 A | 2026-03-26 A | 2 | 100% |  |  |
| 4 |  | Prepare and submit project schedule | 2d | 2026-03-27 A | 2026-03-30 A | 3 | 100% |  |  |
| 5 |  | Prepare and submit schedule of values | 2d | 2026-03-31 A | 2026-04-01 A | 4 | 100% |  |  |
| 6 |  | Obtain building permits | 4d | 2026-03-05 A | 2026-03-10 A | 2 | 100% |  |  |
| 7 |  | Submit preliminary shop drawings | 4.6w | 2026-04-02 A | 2026-05-04 A | 6 | 100% |  |  |
| 8 |  | Submit monthly requests for payment | 1d | 2026-03-05 A | 2026-03-05 A | 2 | 100% |  |  |
| 9 | 2 | **Long Lead Procurement** | 76d | 2026-03-06 A | 2026-06-19 |  | 74% | 248d |  |
| 10 |  | Submit shop drawings and order long lead items - steel | 3.2w | 2026-03-06 A | 2026-03-27 A | 8 | 100% |  |  |
| 11 |  | Submit shop drawings and order long lead items - roofing | 3.8w | 2026-05-05 A | 2026-05-29 | 7 | 74% | 263d |  |
| 12 |  | Submit shop drawings and order long lead items - elevator | 2w | 2026-05-05 A | 2026-05-18 A | 7 | 100% |  |  |
| 13 |  | Submit shop drawings and order long lead items - plumbing | 1.8w | 2026-05-05 A | 2026-05-15 A | 7 | 100% |  |  |
| 14 |  | Submit shop drawings and order long lead items - electric | 2w | 2026-06-08 | 2026-06-19 | 7 |  | 93d | start no earlier than 2026-06-08 |
| 15 |  | Submit shop drawings and order long lead items - HVAC | 2w | 2026-05-05 A | 2026-05-18 A | 7 | 100% |  |  |
| 16 |  | Detail, fabricate and deliver steel | 12w | 2026-03-30 A | 2026-06-19 | 10 | 67% | 48d |  |
| 17 | 3 | **Mobilize on Site** | 17d | 2026-03-05 A | 2026-03-27 A |  | 100% |  |  |
| 18 |  | Install temporary power | 2d | 2026-03-05 A | 2026-03-06 A | 2 | 100% |  |  |
| 19 |  | Install temporary water service | 2d | 2026-03-05 A | 2026-03-06 A | 2 | 100% |  |  |
| 20 |  | Set up site office | 3d | 2026-03-09 A | 2026-03-11 A | 18, 19 | 100% |  |  |
| 21 |  | Set line and grade benchmarks | 2w | 2026-03-12 A | 2026-03-25 A | 20 | 100% |  |  |
| 22 |  | Prepare site - lay down yard and temporary fencing | 2d | 2026-03-26 A | 2026-03-27 A | 21 | 100% |  |  |
| 23 | 4 | **Site Grading and Utilities** | 70d | 2026-04-06 A | 2026-07-10 |  | 60% | 0d |  |
| 24 |  | Clear and grub site | 3d | 2026-04-06 A | 2026-04-08 A | 20, 22 | 100% |  | start no earlier than 2026-04-06 |
| 25 |  | Stone site access and temporary parking area | 2d | 2026-04-13 A | 2026-04-14 A | 24, 22 | 100% |  | start no earlier than 2026-04-13 |
| 26 |  | Rough grade site (cut and fill) | 1w | 2026-04-15 A | 2026-04-21 A | 25 | 100% |  |  |
| 27 |  | Install storm drainage | 4w | 2026-04-22 A | 2026-05-19 A | 26 | 100% |  |  |
| 28 |  | Install exterior fire line and building fire riser | 8.6w | 2026-04-22 A | 2026-06-19 | 26 | 53% | 0d |  |
| 29 |  | Perform final site grading | 2w | 2026-06-22 | 2026-07-03 | 27FF+1d, 28 |  | 0d |  |
| 30 |  | Erect building batter boards and layout building | 1w | 2026-07-06 | 2026-07-10 | 29 |  | 0d |  |
| 31 | 5 | **Foundations** | 45d | 2026-07-13 | 2026-09-11 |  |  | 0d |  |
| 32 |  | Excavate foundations | 2w | 2026-07-13 | 2026-07-24 | 30 |  | 0d |  |
| 33 |  | Excavate elevator pit | 2d | 2026-07-27 | 2026-07-28 | 30 |  | 204d |  |
| 34 |  | Form column piers and spread foundations | 4d | 2026-07-27 | 2026-07-30 | 32 |  | 0d |  |
| 35 |  | Rough-in electric and plumbing in elevator | 4d | 2026-07-29 | 2026-08-03 | 33 |  | 204d |  |
| 36 |  | Form elevator pit walls | 4d | 2026-08-06 | 2026-08-11 | 35 |  | 203d |  |
| 37 |  | Set reinforcing and anchor bolts | 4d | 2026-07-31 | 2026-08-05 | 34 |  | 0d |  |
| 38 |  | Pour column piers and foundations | 5d | 2026-08-06 | 2026-08-12 | 37 |  | 0d |  |
| 39 |  | Pour concrete elevator walls | 1d | 2026-08-13 | 2026-08-13 | 36 |  | 202d |  |
| 40 |  | Cure elevator wall concrete | 7d | 2026-08-27 | 2026-09-04 | 39 |  | 202d |  |
| 41 |  | Cure piers and foundations | 7d | 2026-08-13 | 2026-08-21 | 38 |  | 0d |  |
| 42 |  | Strip wall forms | 1d | 2026-09-07 | 2026-09-07 | 40 |  | 202d |  |
| 43 |  | Strip column piers and foundation forms | 3d | 2026-08-24 | 2026-08-26 | 41 |  | 0d |  |
| 44 |  | Install pneumatic tube in elevator pit | 3d | 2026-09-08 | 2026-09-10 | 42 |  | 202d |  |
| 45 |  | Prepare and pour concrete floor in elevator pit | 1d | 2026-09-11 | 2026-09-11 | 44 |  | 202d |  |
| 46 | 6 | **Steel Erection** | 50d | 2026-08-27 | 2026-11-04 |  |  | 0d |  |
| 47 |  | Erect steel columns, beams and joist - 1st and 2nd floors | 2w | 2026-08-27 | 2026-09-09 | 43, 16 |  | 0d |  |
| 48 |  | Erect steel columns, beams and joist - 3rd floor and roof | 2w | 2026-09-10 | 2026-09-23 | 47 |  | 0d |  |
| 49 |  | Install miscellaneous iron and bracing - 1st and 2nd floors | 2w | 2026-10-22 | 2026-11-04 | 47 |  | 144d |  |
| 50 |  | Install miscellaneous iron and bracing - 3rd floor and roof | 2w | 2026-09-24 | 2026-10-07 | 48 |  | 0d |  |
| 51 |  | Install stairs and miscellaneous iron railing | 2w | 2026-10-08 | 2026-10-21 | 50 |  | 0d |  |
| 52 |  | Touch-up paint on steel | 1w | 2026-10-22 | 2026-10-28 | 51 |  | 0d |  |
| 53 | 7 | **Form and Pour Concrete - Floors and Roof** | 87d | 2026-09-10 | 2027-01-08 |  |  | 35d |  |
| 54 |  | Form 2nd floor including all floor openings | 5d | 2026-10-29 | 2026-11-04 | 52, 13, 14, 15, 47 |  | 0d |  |
| 55 |  | Install rebar and in-floor utilities (including mechanical, electrical, plumbing) | 5d | 2026-09-10 | 2026-09-16 | 47 |  | 35d |  |
| 56 |  | Pour 2nd floor slab | 4d | 2026-11-05 | 2026-11-10 | 55, 54 |  | 0d |  |
| 57 |  | Cure 2nd floor slab | 7d | 2026-11-11 | 2026-11-19 | 56 |  | 0d |  |
| 58 |  | Strip forms from 2nd floor slab | 2d | 2026-11-27 | 2026-11-30 | 57 |  | 73d |  |
| 59 |  | Form 3rd floor including all floor openings | 5d | 2026-11-20 | 2026-11-26 | 57 |  | 0d |  |
| 60 |  | Install rebar and in-floor utilities (including mechanical, electrical, plumbing) | 5d | 2026-11-20 | 2026-11-26 | 57 |  | 0d |  |
| 61 |  | Pour 3rd floor slab | 4d | 2026-11-27 | 2026-12-02 | 60, 59 |  | 0d |  |
| 62 |  | Cure 3rd floor slab | 7d | 2026-12-03 | 2026-12-11 | 61 |  | 0d |  |
| 63 |  | Strip forms from 3rd floor slab | 2d | 2026-12-21 | 2026-12-22 | 62 |  | 11d |  |
| 64 |  | Form roof slab including all floor openings | 5d | 2026-12-14 | 2026-12-18 | 62 |  | 0d |  |
| 65 |  | Install rebar and in-floor utilities (including mechanical, electrical, plumbing) | 5d | 2026-12-14 | 2026-12-18 | 62 |  | 0d |  |
| 66 |  | Pour roof slab | 4d | 2026-12-21 | 2026-12-24 | 65, 64 |  | 0d |  |
| 67 |  | Cure roof slab | 7d | 2026-12-25 | 2027-01-04 | 66 |  | 0d |  |
| 68 |  | Strip forms from roof slab | 2d | 2027-01-05 | 2027-01-06 | 67 |  | 0d |  |
| 69 |  | Form 1st floor | 4d | 2026-12-01 | 2026-12-04 | 58 |  | 78d |  |
| 70 |  | Install electrical underground | 1w | 2026-12-07 | 2026-12-11 | 58 |  | 73d |  |

| ID | WBS | Task | Duration | Start | Finish | Predecessors | Total float |
| --- | --- | --- | --- | --- | --- | --- | --- |
| 71 |  | Install plumbing underground | 1w | 2026-12-07 | 2026-12-11 | 58 | 73d |
| 72 |  | Install rebar and in-floor utilities | 4d | 2026-12-01 | 2026-12-04 | 58 | 78d |
| 73 |  | Pour 1st floor slab | 4d | 2026-12-14 | 2026-12-17 | 69, 72, 70, 71 | 73d |
| 74 |  | Cure 1st floor slab | 7d | 2026-12-23 | 2026-12-31 | 73 | 73d |
| 75 |  | Strip forms from 1st floor slab | 2d | 2027-01-07 | 2027-01-08 | 74 | 73d |
| 76 | 8 | **Carpentry Work** | 15d | 2027-01-07 | 2027-01-27 |  | 0d |
| 77 |  | Install exterior sheathing and metal studs | 3w | 2027-01-07 | 2027-01-27 | 63, 68 | 0d |
| 78 | 9 | **Masonry Work** | 91d | 2026-11-05 | 2027-03-11 |  | 60d |
| 79 |  | Rough-in plumbing at toilets and masonry walls | 4w | 2027-01-11 | 2027-02-05 | 75, 13 | 93d |
| 80 |  | Lay masonry at core, mechanical, and toilets | 4w | 2026-11-05 | 2026-12-02 | 49, 50 | 144d |
| 81 |  | Install exterior masonry work | 5w | 2027-01-28 | 2027-03-03 | 77 | 0d |
| 82 |  | Install roof drains | 2d | 2027-03-10 | 2027-03-11 | 81 | 59d |
| 83 |  | Install tile in toilet rooms | 2w | 2027-02-08 | 2027-02-19 | 79 | 93d |
| 84 |  | Clean masonry | 1w | 2027-03-04 | 2027-03-10 | 81 | 90d |
| 85 |  | Clean toilet room tile | 1w | 2027-02-22 | 2027-02-26 | 83 | 93d |
| 86 | 10 | **Roofing** | 33d | 2027-03-04 | 2027-04-19 |  | 59d |
| 87 |  | Install flashing at parapet walls | 4d | 2027-03-04 | 2027-03-09 | 81 | 61d |
| 88 |  | Pour lightweight concrete roof fill | 2d | 2027-03-12 | 2027-03-15 | 11, 82, 87 | 59d |
| 89 |  | Install seamless roofing material | 5d | 2027-03-23 | 2027-03-29 | 88FS+5d | 59d |
| 90 |  | Spread stone ballast on seamless roof | 5d | 2027-03-30 | 2027-04-05 | 89 | 59d |
| 91 |  | Set rooftop equipment | 2w | 2027-04-06 | 2027-04-19 | 90 | 59d |
| 92 | 11 | **Window wall and store front closures** | 75d | 2027-03-04 | 2027-06-16 |  | 0d |
| 93 |  | Install window wall aluminum and glass | 5w | 2027-03-04 | 2027-04-07 | 81 | 0d |
| 94 |  | Install interior stud walls and drywall | 5w | 2027-04-08 | 2027-05-12 | 93 | 0d |
| 95 |  | Install interior doors and hardware | 2w | 2027-06-03 | 2027-06-16 | 94 | 0d |
| 96 |  | Install store front doors and hardware | 3w | 2027-04-08 | 2027-04-28 | 81 | 20d |
| 97 | 12 | **Building Finishes** | 90d | 2027-04-08 | 2027-08-11 |  | 7d |
| 98 |  | Install millwork and wood trim | 3w | 2027-05-13 | 2027-06-02 | 96, 94 | 10d |
| 99 |  | Paint walls and woodwork | 4w | 2027-06-17 | 2027-07-14 | 98, 95 | 0d |
| 100 |  | Install conduit at ceiling plenum space | 3w | 2027-04-08 | 2027-04-28 | 93 | 15d |
| 101 |  | Install duct in ceiling plenum space | 3w | 2027-05-13 | 2027-06-02 | 94, 100 | 10d |
| 102 |  | Install ceiling grid | 2w | 2027-06-03 | 2027-06-16 | 94, 101 | 10d |
| 103 |  | Install ceiling tile | 2w | 2027-06-17 | 2027-06-30 | 102 | 30d |
| 104 |  | Hang wallpaper | 2w | 2027-07-15 | 2027-07-28 | 102 | 10d |
| 105 |  | Install building carpet | 4w | 2027-07-15 | 2027-08-11 | 99 | 0d |
| 106 |  | Install hardware and accessories | 3w | 2027-07-15 | 2027-08-04 | 99 | 5d |
| 107 |  | Complete interior and exterior sod and plantings | 2w | 2027-07-15 | 2027-07-28 | 99 | 7d |
| 108 |  | Pave, curb, and stripe parking lot | 2w | 2027-07-29 | 2027-08-11 | 107 | 7d |
| 109 | 13 | **Elevators** | 40d | 2026-12-03 | 2027-01-27 |  | 144d |
| 110 |  | Set elevator equipment in shafts | 4w | 2026-12-03 | 2026-12-30 | 80, 45, 12 | 144d |
| 111 |  | Set equipment in mechanical room | 2w | 2026-12-31 | 2027-01-13 | 110 | 144d |
| 112 |  | Test and align doors and equipment | 2w | 2027-01-14 | 2027-01-27 | 111 | 144d |
| 113 | 14 | **Plumbing** | 100d | 2027-03-11 | 2027-07-28 |  | 10d |
| 114 |  | Rough-in plumbing in drywall walls | 4w | 2027-04-08 | 2027-05-05 | 93 | 45d |
| 115 |  | Tie-in fire line riser and set valves | 2w | 2027-03-11 | 2027-03-24 | 84 | 90d |
| 116 |  | Set plumbing fixtures and trim | 3w | 2027-05-06 | 2027-05-26 | 85, 114, 79 | 45d |
| 117 |  | Flush, test, and clean piping and fixtures | 2w | 2027-07-15 | 2027-07-28 | 99, 115, 116 | 10d |
| 118 | 15 | **Electrical** | 140d | 2027-01-11 | 2027-07-23 |  | 17d |
| 119 |  | Rough-in electrical in masonry walls | 4w | 2027-01-11 | 2027-02-05 | 75, 14 | 73d |
| 120 |  | Rough-in electrical in drywall walls | 4w | 2027-04-29 | 2027-05-26 | 93 | 30d |
| 121 |  | Pull wire in conduit and set area transformers | 3w | 2027-05-27 | 2027-06-16 | 119, 100 | 15d |
| 122 |  | Install and terminate electrical devices | 3w | 2027-06-17 | 2027-07-07 | 121, 120 | 15d |
| 123 |  | Make electrical terminations for HVAC equipment | 2d | 2027-07-22 | 2027-07-23 | 121, 91 | 17d |
| 124 |  | Install light fixtures - test and clean | 2w | 2027-07-08 | 2027-07-21 | 102, 122 | 15d |
| 125 | 16 | **Heating and Ventilating - AC** | 187d | 2026-12-03 | 2027-08-20 |  | 17d |
| 126 |  | Set equipment in mechanical room | 2w | 2026-12-03 | 2026-12-16 | 80, 15 | 151d |
| 127 |  | Rough-in mechanical in masonry walls | 4w | 2027-01-11 | 2027-02-05 | 75 | 114d |
| 128 |  | Rough-in mechanical in drywall walls | 2w | 2027-06-03 | 2027-06-16 | 93 | 64d |
| 129 |  | Install duct in building chase | 3w | 2027-04-20 | 2027-05-10 | 126, 127, 93 | 71d |
| 130 |  | Set HVAC trim and test and balance system | 4w | 2027-07-26 | 2027-08-20 | 102, 129, 123 | 17d |
| 131 | 17 | **Final Clean-up and Occupancy** | 70d | 2027-05-13 | 2027-08-18 |  | 19d |
| 132 |  | Install hard tile flooring in common areas | 1w | 2027-05-13 | 2027-05-19 | 94 | 56d |
| 133 |  | Clean hard tile floors | 4d | 2027-05-20 | 2027-05-25 | 132 | 56d |
| 134 |  | Remove debris from building and do final clean-up | 4d | 2027-08-12 | 2027-08-17 | 105, 104, 106, 107, 117, 124, 103, 133 | 0d |
| 135 |  | Substantial completion date | 1d | 2027-08-18 | 2027-08-18 | 134 | 19d |
| 136 | 18 | **Complete Final Inspections** | 6d | 2027-08-18 | 2027-08-25 |  | 0d |
| 137 |  | Complete elevator inspection and certification | 3d | 2027-08-18 | 2027-08-20 | 134, 112 | 0d |
| 138 |  | Perform architect's inspection | 1d | 2027-08-23 | 2027-08-23 | 134, 108, 137 | 0d |
| 139 |  | Perform local building agency inspection | 1d | 2027-08-24 | 2027-08-24 | 138 | 0d |
| 140 |  | Perform Fire Marshal's inspection | 1d | 2027-08-25 | 2027-08-25 | 139 | 0d |

| ID | Task | Duration | Start | Finish | Predecessors | Total float |
| --- | --- | --- | --- | --- | --- | --- |
| 141 | Complete punch list items from all inspections | 2w | 2027-08-26 | 2027-09-08 | 140 | 0d |
| 142 | Obtain certificate of occupancy | 2d | 2027-09-09 | 2027-09-10 | 141 | 1d |
| 143 | Issue final completion documents including warranties | 1d | 2027-09-13 | 2027-09-13 | 141 | 0d |
| 144 | Issue final request for payment | 1d | 2027-09-14 | 2027-09-14 | 142, 143 | 0d |

## Version 2 (data date 2026-06-30, saved 2026-05-24, file Project3.mpp)

Note of the change: Merge remote-tracking branch 'origin/main' into claude/schedule-tool-forensic-reaudit-7da8p1

Last finish 2027-09-14 → 2027-11-02 (+49d). Complete tasks 20 → 24.

Changed:

| ID | Task | Start | Finish | Duration | Complete | Total float |
| --- | --- | --- | --- | --- | --- | --- |
| 9 | **Long Lead Procurement** |  | 2026-06-19 A |  | 74% → 100% | 248d → none |
| 11 | Submit shop drawings and order long lead items - roofing |  | 2026-05-29 A |  | 74% → 100% | 263d → none |
| 14 | Submit shop drawings and order long lead items - electric | 2026-06-08 A | 2026-06-19 A |  | 0% → 100% | 93d → none |
| 16 | Detail, fabricate and deliver steel |  | 2026-06-19 A |  | 67% → 100% | 48d → none |
| 23 | **Site Grading and Utilities** |  | 2026-07-10 → 2026-07-17 (+7d) | 70d → 75d | 60% → 86% |  |
| 28 | Install exterior fire line and building fire riser |  | 2026-06-19 A |  | 53% → 100% | 0d → none |
| 29 | Perform final site grading | 2026-06-22 A |  |  | 0% → 70% |  |
| 30 | Erect building batter boards and layout building |  | 2026-07-10 → 2026-07-17 (+7d) | 1w → 2w |  |  |
| 31 | **Foundations** | 2026-07-13 → 2026-07-20 (+7d) | 2026-09-11 → 2026-10-05 (+24d) | 45d → 56d |  |  |
| 32 | Excavate foundations | 2026-07-13 → 2026-07-20 (+7d) |  | 2w → 1w |  |  |
| 33 | Excavate elevator pit |  | 2026-07-28 → 2026-08-07 (+10d) | 2d → 10d |  | 204d → 223d |
| 34 | Form column piers and spread foundations |  | 2026-07-30 → 2026-08-21 (+22d) | 4d → 20d |  |  |
| 35 | Rough-in electric and plumbing in elevator | 2026-07-29 → 2026-08-10 (+12d) | 2026-08-03 → 2026-08-13 (+10d) |  |  | 204d → 223d |
| 36 | Form elevator pit walls | 2026-08-06 → 2026-08-28 (+22d) | 2026-08-11 → 2026-09-02 (+22d) |  |  | 203d → 223d |
| 37 | Set reinforcing and anchor bolts | 2026-07-31 → 2026-08-24 (+24d) | 2026-08-05 → 2026-08-27 (+22d) |  |  |  |
| 38 | Pour column piers and foundations | 2026-08-06 → 2026-08-28 (+22d) | 2026-08-12 → 2026-09-03 (+22d) |  |  |  |
| 39 | Pour concrete elevator walls | 2026-08-13 → 2026-09-04 (+22d) | 2026-08-13 → 2026-09-04 (+22d) |  |  | 202d → 223d |
| 40 | Cure elevator wall concrete | 2026-08-27 → 2026-09-18 (+22d) | 2026-09-04 → 2026-09-28 (+24d) |  |  | 202d → 221d |
| 41 | Cure piers and foundations | 2026-08-13 → 2026-09-04 (+22d) | 2026-08-21 → 2026-09-14 (+24d) |  |  |  |
| 42 | Strip wall forms | 2026-09-07 → 2026-09-29 (+22d) | 2026-09-07 → 2026-09-29 (+22d) |  |  | 202d → 221d |
| 43 | Strip column piers and foundation forms | 2026-08-24 → 2026-09-15 (+22d) | 2026-08-26 → 2026-09-17 (+22d) |  |  |  |
| 44 | Install pneumatic tube in elevator pit | 2026-09-08 → 2026-09-30 (+22d) | 2026-09-10 → 2026-10-02 (+22d) |  |  | 202d → 221d |
| 45 | Prepare and pour concrete floor in elevator pit | 2026-09-11 → 2026-10-05 (+24d) | 2026-09-11 → 2026-10-05 (+24d) |  |  | 202d → 221d |
| 46 | **Steel Erection** | 2026-08-27 → 2026-09-18 (+22d) | 2026-11-04 → 2026-12-30 (+56d) | 50d → 74d |  |  |
| 47 | Erect steel columns, beams and joist - 1st and 2nd floors | 2026-08-27 → 2026-09-18 (+22d) | 2026-09-09 → 2026-10-01 (+22d) |  |  |  |
| 48 | Erect steel columns, beams and joist - 3rd floor and roof | 2026-09-10 → 2026-10-02 (+22d) | 2026-09-23 → 2026-10-26 (+33d) | 2w → 3.4w |  |  |
| 49 | Install miscellaneous iron and bracing - 1st and 2nd floors | 2026-10-22 → 2026-11-24 (+33d) | 2026-11-04 → 2026-12-30 (+56d) | 2w → 5.4w |  | 144d → 139d |
| 50 | Install miscellaneous iron and bracing - 3rd floor and roof | 2026-09-24 → 2026-10-27 (+33d) | 2026-10-07 → 2026-11-09 (+33d) |  |  |  |
| 51 | Install stairs and miscellaneous iron railing | 2026-10-08 → 2026-11-10 (+33d) | 2026-10-21 → 2026-11-23 (+33d) |  |  |  |
| 52 | Touch-up paint on steel | 2026-10-22 → 2026-11-24 (+33d) | 2026-10-28 → 2026-11-30 (+33d) |  |  |  |
| 53 | **Form and Pour Concrete - Floors and Roof** | 2026-09-10 → 2026-10-02 (+22d) | 2027-01-08 → 2027-02-26 (+49d) | 87d → 106d |  | 35d → 42d |
| 54 | Form 2nd floor including all floor openings | 2026-10-29 → 2026-12-01 (+33d) | 2026-11-04 → 2026-12-23 (+49d) | 5d → 17d |  |  |
| 55 | Install rebar and in-floor utilities (including mechanical, electrical, plumbing) | 2026-09-10 → 2026-10-02 (+22d) | 2026-09-16 → 2026-10-08 (+22d) |  |  | 35d → 54d |
| 56 | Pour 2nd floor slab | 2026-11-05 → 2026-12-24 (+49d) | 2026-11-10 → 2026-12-29 (+49d) |  |  |  |
| 57 | Cure 2nd floor slab | 2026-11-11 → 2026-12-30 (+49d) | 2026-11-19 → 2027-01-07 (+49d) |  |  |  |
| 58 | Strip forms from 2nd floor slab | 2026-11-27 → 2027-01-15 (+49d) | 2026-11-30 → 2027-01-18 (+49d) |  |  |  |
| 59 | Form 3rd floor including all floor openings | 2026-11-20 → 2027-01-08 (+49d) | 2026-11-26 → 2027-01-14 (+49d) |  |  |  |
| 60 | Install rebar and in-floor utilities (including mechanical, electrical, plumbing) | 2026-11-20 → 2027-01-08 (+49d) | 2026-11-26 → 2027-01-14 (+49d) |  |  |  |
| 61 | Pour 3rd floor slab | 2026-11-27 → 2027-01-15 (+49d) | 2026-12-02 → 2027-01-20 (+49d) |  |  |  |
| 62 | Cure 3rd floor slab | 2026-12-03 → 2027-01-21 (+49d) | 2026-12-11 → 2027-01-29 (+49d) |  |  |  |
| 63 | Strip forms from 3rd floor slab | 2026-12-21 → 2027-02-08 (+49d) | 2026-12-22 → 2027-02-09 (+49d) |  |  |  |
| 64 | Form roof slab including all floor openings | 2026-12-14 → 2027-02-01 (+49d) | 2026-12-18 → 2027-02-05 (+49d) |  |  |  |
| 65 | Install rebar and in-floor utilities (including mechanical, electrical, plumbing) | 2026-12-14 → 2027-02-01 (+49d) | 2026-12-18 → 2027-02-05 (+49d) |  |  |  |
| 66 | Pour roof slab | 2026-12-21 → 2027-02-08 (+49d) | 2026-12-24 → 2027-02-11 (+49d) |  |  |  |
| 67 | Cure roof slab | 2026-12-25 → 2027-02-12 (+49d) | 2027-01-04 → 2027-02-22 (+49d) |  |  |  |
| 68 | Strip forms from roof slab | 2027-01-05 → 2027-02-23 (+49d) | 2027-01-06 → 2027-02-24 (+49d) |  |  |  |
| 69 | Form 1st floor | 2026-12-01 → 2027-01-19 (+49d) | 2026-12-04 → 2027-01-22 (+49d) |  |  |  |
| 70 | Install electrical underground | 2026-12-07 → 2027-01-25 (+49d) | 2026-12-11 → 2027-01-29 (+49d) |  |  |  |
| 71 | Install plumbing underground | 2026-12-07 → 2027-01-25 (+49d) | 2026-12-11 → 2027-01-29 (+49d) |  |  |  |
| 72 | Install rebar and in-floor utilities | 2026-12-01 → 2027-01-19 (+49d) | 2026-12-04 → 2027-01-22 (+49d) |  |  |  |
| 73 | Pour 1st floor slab | 2026-12-14 → 2027-02-01 (+49d) | 2026-12-17 → 2027-02-04 (+49d) |  |  |  |
| 74 | Cure 1st floor slab | 2026-12-23 → 2027-02-10 (+49d) | 2026-12-31 → 2027-02-18 (+49d) |  |  |  |
| 75 | Strip forms from 1st floor slab | 2027-01-07 → 2027-02-25 (+49d) | 2027-01-08 → 2027-02-26 (+49d) |  |  |  |
| 76 | **Carpentry Work** | 2027-01-07 → 2027-02-25 (+49d) | 2027-01-27 → 2027-03-17 (+49d) |  |  |  |
| 77 | Install exterior sheathing and metal studs | 2027-01-07 → 2027-02-25 (+49d) | 2027-01-27 → 2027-03-17 (+49d) |  |  |  |
| 78 | **Masonry Work** | 2026-11-05 → 2026-12-31 (+56d) | 2027-03-11 → 2027-04-29 (+49d) | 91d → 86d |  | 60d → 55d |
| 79 | Rough-in plumbing at toilets and masonry walls | 2027-01-11 → 2027-03-01 (+49d) | 2027-02-05 → 2027-03-26 (+49d) |  |  |  |
| 80 | Lay masonry at core, mechanical, and toilets | 2026-11-05 → 2026-12-31 (+56d) | 2026-12-02 → 2027-01-27 (+56d) |  |  | 144d → 139d |
| 81 | Install exterior masonry work | 2027-01-28 → 2027-03-18 (+49d) | 2027-03-03 → 2027-04-21 (+49d) |  |  |  |
| 82 | Install roof drains | 2027-03-10 → 2027-04-28 (+49d) | 2027-03-11 → 2027-04-29 (+49d) |  |  |  |
| 83 | Install tile in toilet rooms | 2027-02-08 → 2027-03-29 (+49d) | 2027-02-19 → 2027-04-09 (+49d) |  |  |  |
| 84 | Clean masonry | 2027-03-04 → 2027-04-22 (+49d) | 2027-03-10 → 2027-04-28 (+49d) |  |  |  |
| 85 | Clean toilet room tile | 2027-02-22 → 2027-04-12 (+49d) | 2027-02-26 → 2027-04-16 (+49d) |  |  |  |
| 86 | **Roofing** | 2027-03-04 → 2027-04-22 (+49d) | 2027-04-19 → 2027-06-07 (+49d) |  |  |  |
| 87 | Install flashing at parapet walls | 2027-03-04 → 2027-04-22 (+49d) | 2027-03-09 → 2027-04-27 (+49d) |  |  |  |
| 88 | Pour lightweight concrete roof fill | 2027-03-12 → 2027-04-30 (+49d) | 2027-03-15 → 2027-05-03 (+49d) |  |  |  |
| 89 | Install seamless roofing material | 2027-03-23 → 2027-05-11 (+49d) | 2027-03-29 → 2027-05-17 (+49d) |  |  |  |
| 90 | Spread stone ballast on seamless roof | 2027-03-30 → 2027-05-18 (+49d) | 2027-04-05 → 2027-05-24 (+49d) |  |  |  |
| 91 | Set rooftop equipment | 2027-04-06 → 2027-05-25 (+49d) | 2027-04-19 → 2027-06-07 (+49d) |  |  |  |
| 92 | **Window wall and store front closures** | 2027-03-04 → 2027-04-22 (+49d) | 2027-06-16 → 2027-08-04 (+49d) |  |  |  |

| ID | Task | Start | Finish | Duration | Total float |
| --- | --- | --- | --- | --- | --- |
| 93 | Install window wall aluminum and glass | 2027-03-04 → 2027-04-22 (+49d) | 2027-04-07 → 2027-05-26 (+49d) |  |  |
| 94 | Install interior stud walls and drywall | 2027-04-08 → 2027-05-27 (+49d) | 2027-05-12 → 2027-06-30 (+49d) |  |  |
| 95 | Install interior doors and hardware | 2027-06-03 → 2027-07-22 (+49d) | 2027-06-16 → 2027-08-04 (+49d) |  |  |
| 96 | Install store front doors and hardware | 2027-04-08 → 2027-05-27 (+49d) | 2027-04-28 → 2027-06-16 (+49d) |  |  |
| 97 | **Building Finishes** | 2027-04-08 → 2027-05-27 (+49d) | 2027-08-11 → 2027-09-29 (+49d) |  |  |
| 98 | Install millwork and wood trim | 2027-05-13 → 2027-07-01 (+49d) | 2027-06-02 → 2027-07-21 (+49d) |  |  |
| 99 | Paint walls and woodwork | 2027-06-17 → 2027-08-05 (+49d) | 2027-07-14 → 2027-09-01 (+49d) |  |  |
| 100 | Install conduit at ceiling plenum space | 2027-04-08 → 2027-05-27 (+49d) | 2027-04-28 → 2027-06-16 (+49d) |  |  |
| 101 | Install duct in ceiling plenum space | 2027-05-13 → 2027-07-01 (+49d) | 2027-06-02 → 2027-07-21 (+49d) |  |  |
| 102 | Install ceiling grid | 2027-06-03 → 2027-07-22 (+49d) | 2027-06-16 → 2027-08-04 (+49d) |  |  |
| 103 | Install ceiling tile | 2027-06-17 → 2027-08-05 (+49d) | 2027-06-30 → 2027-08-18 (+49d) |  |  |
| 104 | Hang wallpaper | 2027-07-15 → 2027-09-02 (+49d) | 2027-07-28 → 2027-09-15 (+49d) |  |  |
| 105 | Install building carpet | 2027-07-15 → 2027-09-02 (+49d) | 2027-08-11 → 2027-09-29 (+49d) |  |  |
| 106 | Install hardware and accessories | 2027-07-15 → 2027-09-02 (+49d) | 2027-08-04 → 2027-09-22 (+49d) |  |  |
| 107 | Complete interior and exterior sod and plantings | 2027-07-15 → 2027-09-02 (+49d) | 2027-07-28 → 2027-09-15 (+49d) |  |  |
| 108 | Pave, curb, and stripe parking lot | 2027-07-29 → 2027-09-16 (+49d) | 2027-08-11 → 2027-09-29 (+49d) |  |  |
| 109 | **Elevators** | 2026-12-03 → 2027-01-28 (+56d) | 2027-01-27 → 2027-03-24 (+56d) |  | 144d → 139d |
| 110 | Set elevator equipment in shafts | 2026-12-03 → 2027-01-28 (+56d) | 2026-12-30 → 2027-02-24 (+56d) |  | 144d → 139d |
| 111 | Set equipment in mechanical room | 2026-12-31 → 2027-02-25 (+56d) | 2027-01-13 → 2027-03-10 (+56d) |  | 144d → 139d |
| 112 | Test and align doors and equipment | 2027-01-14 → 2027-03-11 (+56d) | 2027-01-27 → 2027-03-24 (+56d) |  | 144d → 139d |
| 113 | **Plumbing** | 2027-03-11 → 2027-04-29 (+49d) | 2027-07-28 → 2027-09-15 (+49d) |  |  |
| 114 | Rough-in plumbing in drywall walls | 2027-04-08 → 2027-05-27 (+49d) | 2027-05-05 → 2027-06-23 (+49d) |  |  |
| 115 | Tie-in fire line riser and set valves | 2027-03-11 → 2027-04-29 (+49d) | 2027-03-24 → 2027-05-12 (+49d) |  |  |
| 116 | Set plumbing fixtures and trim | 2027-05-06 → 2027-06-24 (+49d) | 2027-05-26 → 2027-07-14 (+49d) |  |  |
| 117 | Flush, test, and clean piping and fixtures | 2027-07-15 → 2027-09-02 (+49d) | 2027-07-28 → 2027-09-15 (+49d) |  |  |
| 118 | **Electrical** | 2027-01-11 → 2027-03-01 (+49d) | 2027-07-23 → 2027-09-10 (+49d) |  |  |
| 119 | Rough-in electrical in masonry walls | 2027-01-11 → 2027-03-01 (+49d) | 2027-02-05 → 2027-03-26 (+49d) |  |  |
| 120 | Rough-in electrical in drywall walls | 2027-04-29 → 2027-06-17 (+49d) | 2027-05-26 → 2027-07-14 (+49d) |  |  |
| 121 | Pull wire in conduit and set area transformers | 2027-05-27 → 2027-07-15 (+49d) | 2027-06-16 → 2027-08-04 (+49d) |  |  |
| 122 | Install and terminate electrical devices | 2027-06-17 → 2027-08-05 (+49d) | 2027-07-07 → 2027-08-25 (+49d) |  |  |
| 123 | Make electrical terminations for HVAC equipment | 2027-07-22 → 2027-09-09 (+49d) | 2027-07-23 → 2027-09-10 (+49d) |  |  |
| 124 | Install light fixtures - test and clean | 2027-07-08 → 2027-08-26 (+49d) | 2027-07-21 → 2027-09-08 (+49d) |  |  |
| 125 | **Heating and Ventilating - AC** | 2026-12-03 → 2027-01-28 (+56d) | 2027-08-20 → 2027-10-08 (+49d) | 187d → 182d |  |
| 126 | Set equipment in mechanical room | 2026-12-03 → 2027-01-28 (+56d) | 2026-12-16 → 2027-02-10 (+56d) |  | 151d → 146d |
| 127 | Rough-in mechanical in masonry walls | 2027-01-11 → 2027-03-01 (+49d) | 2027-02-05 → 2027-03-26 (+49d) |  |  |
| 128 | Rough-in mechanical in drywall walls | 2027-06-03 → 2027-07-22 (+49d) | 2027-06-16 → 2027-08-04 (+49d) |  |  |
| 129 | Install duct in building chase | 2027-04-20 → 2027-06-08 (+49d) | 2027-05-10 → 2027-06-28 (+49d) |  |  |
| 130 | Set HVAC trim and test and balance system | 2027-07-26 → 2027-09-13 (+49d) | 2027-08-20 → 2027-10-08 (+49d) |  |  |
| 131 | **Final Clean-up and Occupancy** | 2027-05-13 → 2027-07-01 (+49d) | 2027-08-18 → 2027-10-06 (+49d) |  |  |
| 132 | Install hard tile flooring in common areas | 2027-05-13 → 2027-07-01 (+49d) | 2027-05-19 → 2027-07-07 (+49d) |  |  |
| 133 | Clean hard tile floors | 2027-05-20 → 2027-07-08 (+49d) | 2027-05-25 → 2027-07-13 (+49d) |  |  |
| 134 | Remove debris from building and do final clean-up | 2027-08-12 → 2027-09-30 (+49d) | 2027-08-17 → 2027-10-05 (+49d) |  |  |
| 135 | Substantial completion date | 2027-08-18 → 2027-10-06 (+49d) | 2027-08-18 → 2027-10-06 (+49d) |  |  |
| 136 | **Complete Final Inspections** | 2027-08-18 → 2027-10-06 (+49d) | 2027-08-25 → 2027-10-13 (+49d) |  |  |
| 137 | Complete elevator inspection and certification | 2027-08-18 → 2027-10-06 (+49d) | 2027-08-20 → 2027-10-08 (+49d) |  |  |
| 138 | Perform architect's inspection | 2027-08-23 → 2027-10-11 (+49d) | 2027-08-23 → 2027-10-11 (+49d) |  |  |
| 139 | Perform local building agency inspection | 2027-08-24 → 2027-10-12 (+49d) | 2027-08-24 → 2027-10-12 (+49d) |  |  |
| 140 | Perform Fire Marshal's inspection | 2027-08-25 → 2027-10-13 (+49d) | 2027-08-25 → 2027-10-13 (+49d) |  |  |
| 141 | Complete punch list items from all inspections | 2027-08-26 → 2027-10-14 (+49d) | 2027-09-08 → 2027-10-27 (+49d) |  |  |
| 142 | Obtain certificate of occupancy | 2027-09-09 → 2027-10-28 (+49d) | 2027-09-10 → 2027-10-29 (+49d) |  |  |
| 143 | Issue final completion documents including warranties | 2027-09-13 → 2027-11-01 (+49d) | 2027-09-13 → 2027-11-01 (+49d) |  |  |
| 144 | Issue final request for payment | 2027-09-14 → 2027-11-02 (+49d) | 2027-09-14 → 2027-11-02 (+49d) |  |  |

## Version 3 (data date 2026-07-29, saved 2026-05-24, file Project4.mpp)

Last finish 2027-11-02 → 2027-11-16 (+14d). Complete tasks 24 → 25.

Changed:

| ID | Task | Start | Finish | Duration | Complete | Total float | Predecessors | Other |
| --- | --- | --- | --- | --- | --- | --- | --- | --- |
| 23 | **Site Grading and Utilities** |  | 2026-07-17 → 2026-07-31 (+14d) | 75d → 85d | 86% → 98% | 0d → 5d |  |  |
| 29 | Perform final site grading |  | 2026-07-03 A |  | 70% → 100% | 0d → none |  |  |
| 30 | Erect building batter boards and layout building | 2026-07-06 A | 2026-07-17 → 2026-07-31 (+14d) | 2w → 4w | 0% → 90% | 0d → 5d |  |  |
| 31 | **Foundations** | 2026-07-20 → 2026-08-03 (+14d) | 2026-10-05 → 2026-11-02 (+28d) | 56d → 66d |  | 0d → 5d |  |  |
| 32 | Excavate foundations | 2026-07-20 → 2026-08-03 (+14d) | 2026-07-24 → 2026-08-07 (+14d) |  |  | 0d → 5d |  |  |
| 33 | Excavate elevator pit | 2026-07-27 → 2026-08-10 (+14d) | 2026-08-07 → 2026-08-28 (+21d) | 10d → 15d |  | 223d → 230d |  | constraint none → start no earlier than 2026-08-10 |
| 34 | Form column piers and spread foundations | 2026-07-27 → 2026-08-17 (+21d) | 2026-08-21 → 2026-09-04 (+14d) | 20d → 15d |  |  |  | constraint none → start no earlier than 2026-08-17 |
| 35 | Rough-in electric and plumbing in elevator | 2026-08-10 → 2026-08-31 (+21d) | 2026-08-13 → 2026-09-03 (+21d) |  |  | 223d → 230d |  |  |
| 36 | Form elevator pit walls | 2026-08-28 → 2026-09-11 (+14d) | 2026-09-02 → 2026-09-16 (+14d) |  |  | 223d → 230d |  |  |
| 37 | Set reinforcing and anchor bolts | 2026-08-24 → 2026-09-07 (+14d) | 2026-08-27 → 2026-09-10 (+14d) |  |  |  |  |  |
| 38 | Pour column piers and foundations | 2026-08-28 → 2026-09-11 (+14d) | 2026-09-03 → 2026-09-17 (+14d) |  |  |  |  |  |
| 39 | Pour concrete elevator walls | 2026-09-04 → 2026-09-18 (+14d) | 2026-09-04 → 2026-09-18 (+14d) |  |  | 223d → 230d |  |  |
| 40 | Cure elevator wall concrete | 2026-09-18 → 2026-10-16 (+28d) | 2026-09-28 → 2026-10-26 (+28d) |  |  | 221d → 211d | 39 → 39, 47 |  |
| 41 | Cure piers and foundations | 2026-09-04 → 2026-09-18 (+14d) | 2026-09-14 → 2026-09-28 (+14d) |  |  |  |  |  |
| 42 | Strip wall forms | 2026-09-29 → 2026-10-27 (+28d) | 2026-09-29 → 2026-10-27 (+28d) |  |  | 221d → 211d |  |  |
| 43 | Strip column piers and foundation forms | 2026-09-15 → 2026-09-29 (+14d) | 2026-09-17 → 2026-10-01 (+14d) |  |  |  |  |  |
| 44 | Install pneumatic tube in elevator pit | 2026-09-30 → 2026-10-28 (+28d) | 2026-10-02 → 2026-10-30 (+28d) |  |  | 221d → 211d |  |  |
| 45 | Prepare and pour concrete floor in elevator pit | 2026-10-05 → 2026-11-02 (+28d) | 2026-10-05 → 2026-11-02 (+28d) |  |  | 221d → 211d |  |  |
| 46 | **Steel Erection** | 2026-09-18 → 2026-10-02 (+14d) | 2026-12-30 → 2027-01-13 (+14d) |  |  |  |  |  |
| 47 | Erect steel columns, beams and joist - 1st and 2nd floors | 2026-09-18 → 2026-10-02 (+14d) | 2026-10-01 → 2026-10-15 (+14d) |  |  |  |  |  |
| 48 | Erect steel columns, beams and joist - 3rd floor and roof | 2026-10-02 → 2026-10-16 (+14d) | 2026-10-26 → 2026-11-09 (+14d) |  |  |  |  |  |
| 49 | Install miscellaneous iron and bracing - 1st and 2nd floors | 2026-11-24 → 2026-12-08 (+14d) | 2026-12-30 → 2027-01-13 (+14d) |  |  |  |  |  |
| 50 | Install miscellaneous iron and bracing - 3rd floor and roof | 2026-10-27 → 2026-11-10 (+14d) | 2026-11-09 → 2026-11-23 (+14d) |  |  |  |  |  |
| 51 | Install stairs and miscellaneous iron railing | 2026-11-10 → 2026-11-24 (+14d) | 2026-11-23 → 2026-12-07 (+14d) |  |  |  |  |  |
| 52 | Touch-up paint on steel | 2026-11-24 → 2026-12-08 (+14d) | 2026-11-30 → 2026-12-14 (+14d) |  |  |  |  |  |
| 53 | **Form and Pour Concrete - Floors and Roof** | 2026-10-02 → 2026-11-10 (+39d) | 2027-02-26 → 2027-03-12 (+14d) | 106d → 89d |  | 42d → 25d |  |  |
| 54 | Form 2nd floor including all floor openings | 2026-12-01 → 2026-12-15 (+14d) | 2026-12-23 → 2027-01-06 (+14d) |  |  |  |  |  |
| 55 | Install rebar and in-floor utilities (including mechanical, electrical, plumbing) | 2026-10-02 → 2026-11-10 (+39d) | 2026-10-08 → 2026-11-16 (+39d) |  |  | 54d → 37d | 47 → 47, 48 |  |
| 56 | Pour 2nd floor slab | 2026-12-24 → 2027-01-07 (+14d) | 2026-12-29 → 2027-01-12 (+14d) |  |  |  |  |  |
| 57 | Cure 2nd floor slab | 2026-12-30 → 2027-01-13 (+14d) | 2027-01-07 → 2027-01-21 (+14d) |  |  |  |  |  |
| 58 | Strip forms from 2nd floor slab | 2027-01-15 → 2027-01-29 (+14d) | 2027-01-18 → 2027-02-01 (+14d) |  |  |  |  |  |
| 59 | Form 3rd floor including all floor openings | 2027-01-08 → 2027-01-22 (+14d) | 2027-01-14 → 2027-01-28 (+14d) |  |  |  |  |  |
| 60 | Install rebar and in-floor utilities (including mechanical, electrical, plumbing) | 2027-01-08 → 2027-01-22 (+14d) | 2027-01-14 → 2027-01-28 (+14d) |  |  |  |  |  |
| 61 | Pour 3rd floor slab | 2027-01-15 → 2027-01-29 (+14d) | 2027-01-20 → 2027-02-03 (+14d) |  |  |  |  |  |
| 62 | Cure 3rd floor slab | 2027-01-21 → 2027-02-04 (+14d) | 2027-01-29 → 2027-02-12 (+14d) |  |  |  |  |  |
| 63 | Strip forms from 3rd floor slab | 2027-02-08 → 2027-02-22 (+14d) | 2027-02-09 → 2027-02-23 (+14d) |  |  |  |  |  |
| 64 | Form roof slab including all floor openings | 2027-02-01 → 2027-02-15 (+14d) | 2027-02-05 → 2027-02-19 (+14d) |  |  |  |  |  |
| 65 | Install rebar and in-floor utilities (including mechanical, electrical, plumbing) | 2027-02-01 → 2027-02-15 (+14d) | 2027-02-05 → 2027-02-19 (+14d) |  |  |  |  |  |
| 66 | Pour roof slab | 2027-02-08 → 2027-02-22 (+14d) | 2027-02-11 → 2027-02-25 (+14d) |  |  |  |  |  |
| 67 | Cure roof slab | 2027-02-12 → 2027-02-26 (+14d) | 2027-02-22 → 2027-03-08 (+14d) |  |  |  |  |  |
| 68 | Strip forms from roof slab | 2027-02-23 → 2027-03-09 (+14d) | 2027-02-24 → 2027-03-10 (+14d) |  |  |  |  |  |
| 69 | Form 1st floor | 2027-01-19 → 2027-02-02 (+14d) | 2027-01-22 → 2027-02-05 (+14d) |  |  |  |  |  |
| 70 | Install electrical underground | 2027-01-25 → 2027-02-08 (+14d) | 2027-01-29 → 2027-02-12 (+14d) |  |  |  |  |  |
| 71 | Install plumbing underground | 2027-01-25 → 2027-02-08 (+14d) | 2027-01-29 → 2027-02-12 (+14d) |  |  |  |  |  |
| 72 | Install rebar and in-floor utilities | 2027-01-19 → 2027-02-02 (+14d) | 2027-01-22 → 2027-02-05 (+14d) |  |  |  |  |  |
| 73 | Pour 1st floor slab | 2027-02-01 → 2027-02-15 (+14d) | 2027-02-04 → 2027-02-18 (+14d) |  |  |  |  |  |
| 74 | Cure 1st floor slab | 2027-02-10 → 2027-02-24 (+14d) | 2027-02-18 → 2027-03-04 (+14d) |  |  |  |  |  |
| 75 | Strip forms from 1st floor slab | 2027-02-25 → 2027-03-11 (+14d) | 2027-02-26 → 2027-03-12 (+14d) |  |  |  |  |  |
| 76 | **Carpentry Work** | 2027-02-25 → 2027-03-11 (+14d) | 2027-03-17 → 2027-03-31 (+14d) |  |  |  |  |  |
| 77 | Install exterior sheathing and metal studs | 2027-02-25 → 2027-03-11 (+14d) | 2027-03-17 → 2027-03-31 (+14d) |  |  |  |  |  |
| 78 | **Masonry Work** | 2026-12-31 → 2027-01-14 (+14d) | 2027-04-29 → 2027-05-13 (+14d) |  |  |  |  |  |
| 79 | Rough-in plumbing at toilets and masonry walls | 2027-03-01 → 2027-03-15 (+14d) | 2027-03-26 → 2027-04-09 (+14d) |  |  |  |  |  |
| 80 | Lay masonry at core, mechanical, and toilets | 2026-12-31 → 2027-01-14 (+14d) | 2027-01-27 → 2027-02-10 (+14d) |  |  |  |  |  |
| 81 | Install exterior masonry work | 2027-03-18 → 2027-04-01 (+14d) | 2027-04-21 → 2027-05-05 (+14d) |  |  |  |  |  |
| 82 | Install roof drains | 2027-04-28 → 2027-05-12 (+14d) | 2027-04-29 → 2027-05-13 (+14d) |  |  |  |  |  |
| 83 | Install tile in toilet rooms | 2027-03-29 → 2027-04-12 (+14d) | 2027-04-09 → 2027-04-23 (+14d) |  |  |  |  |  |
| 84 | Clean masonry | 2027-04-22 → 2027-05-06 (+14d) | 2027-04-28 → 2027-05-12 (+14d) |  |  |  |  |  |
| 85 | Clean toilet room tile | 2027-04-12 → 2027-04-26 (+14d) | 2027-04-16 → 2027-04-30 (+14d) |  |  |  |  |  |
| 86 | **Roofing** | 2027-04-22 → 2027-05-06 (+14d) | 2027-06-07 → 2027-06-21 (+14d) |  |  |  |  |  |
| 87 | Install flashing at parapet walls | 2027-04-22 → 2027-05-06 (+14d) | 2027-04-27 → 2027-05-11 (+14d) |  |  |  |  |  |
| 88 | Pour lightweight concrete roof fill | 2027-04-30 → 2027-05-14 (+14d) | 2027-05-03 → 2027-05-17 (+14d) |  |  |  |  |  |
| 89 | Install seamless roofing material | 2027-05-11 → 2027-05-25 (+14d) | 2027-05-17 → 2027-05-31 (+14d) |  |  |  |  |  |
| 90 | Spread stone ballast on seamless roof | 2027-05-18 → 2027-06-01 (+14d) | 2027-05-24 → 2027-06-07 (+14d) |  |  |  |  |  |
| 91 | Set rooftop equipment | 2027-05-25 → 2027-06-08 (+14d) | 2027-06-07 → 2027-06-21 (+14d) |  |  |  |  |  |
| 92 | **Window wall and store front closures** | 2027-04-22 → 2027-05-06 (+14d) | 2027-08-04 → 2027-08-18 (+14d) |  |  |  |  |  |
| 93 | Install window wall aluminum and glass | 2027-04-22 → 2027-05-06 (+14d) | 2027-05-26 → 2027-06-09 (+14d) |  |  |  |  |  |
| 94 | Install interior stud walls and drywall | 2027-05-27 → 2027-06-10 (+14d) | 2027-06-30 → 2027-07-14 (+14d) |  |  |  |  |  |
| 95 | Install interior doors and hardware | 2027-07-22 → 2027-08-05 (+14d) | 2027-08-04 → 2027-08-18 (+14d) |  |  |  |  |  |
| 96 | Install store front doors and hardware | 2027-05-27 → 2027-06-10 (+14d) | 2027-06-16 → 2027-06-30 (+14d) |  |  |  |  |  |
| 97 | **Building Finishes** | 2027-05-27 → 2027-06-10 (+14d) | 2027-09-29 → 2027-10-13 (+14d) |  |  |  |  |  |

| ID | Task | Start | Finish |
| --- | --- | --- | --- |
| 98 | Install millwork and wood trim | 2027-07-01 → 2027-07-15 (+14d) | 2027-07-21 → 2027-08-04 (+14d) |
| 99 | Paint walls and woodwork | 2027-08-05 → 2027-08-19 (+14d) | 2027-09-01 → 2027-09-15 (+14d) |
| 100 | Install conduit at ceiling plenum space | 2027-05-27 → 2027-06-10 (+14d) | 2027-06-16 → 2027-06-30 (+14d) |
| 101 | Install duct in ceiling plenum space | 2027-07-01 → 2027-07-15 (+14d) | 2027-07-21 → 2027-08-04 (+14d) |
| 102 | Install ceiling grid | 2027-07-22 → 2027-08-05 (+14d) | 2027-08-04 → 2027-08-18 (+14d) |
| 103 | Install ceiling tile | 2027-08-05 → 2027-08-19 (+14d) | 2027-08-18 → 2027-09-01 (+14d) |
| 104 | Hang wallpaper | 2027-09-02 → 2027-09-16 (+14d) | 2027-09-15 → 2027-09-29 (+14d) |
| 105 | Install building carpet | 2027-09-02 → 2027-09-16 (+14d) | 2027-09-29 → 2027-10-13 (+14d) |
| 106 | Install hardware and accessories | 2027-09-02 → 2027-09-16 (+14d) | 2027-09-22 → 2027-10-06 (+14d) |
| 107 | Complete interior and exterior sod and plantings | 2027-09-02 → 2027-09-16 (+14d) | 2027-09-15 → 2027-09-29 (+14d) |
| 108 | Pave, curb, and stripe parking lot | 2027-09-16 → 2027-09-30 (+14d) | 2027-09-29 → 2027-10-13 (+14d) |
| 109 | **Elevators** | 2027-01-28 → 2027-02-11 (+14d) | 2027-03-24 → 2027-04-07 (+14d) |
| 110 | Set elevator equipment in shafts | 2027-01-28 → 2027-02-11 (+14d) | 2027-02-24 → 2027-03-10 (+14d) |
| 111 | Set equipment in mechanical room | 2027-02-25 → 2027-03-11 (+14d) | 2027-03-10 → 2027-03-24 (+14d) |
| 112 | Test and align doors and equipment | 2027-03-11 → 2027-03-25 (+14d) | 2027-03-24 → 2027-04-07 (+14d) |
| 113 | **Plumbing** | 2027-04-29 → 2027-05-13 (+14d) | 2027-09-15 → 2027-09-29 (+14d) |
| 114 | Rough-in plumbing in drywall walls | 2027-05-27 → 2027-06-10 (+14d) | 2027-06-23 → 2027-07-07 (+14d) |
| 115 | Tie-in fire line riser and set valves | 2027-04-29 → 2027-05-13 (+14d) | 2027-05-12 → 2027-05-26 (+14d) |
| 116 | Set plumbing fixtures and trim | 2027-06-24 → 2027-07-08 (+14d) | 2027-07-14 → 2027-07-28 (+14d) |
| 117 | Flush, test, and clean piping and fixtures | 2027-09-02 → 2027-09-16 (+14d) | 2027-09-15 → 2027-09-29 (+14d) |
| 118 | **Electrical** | 2027-03-01 → 2027-03-15 (+14d) | 2027-09-10 → 2027-09-24 (+14d) |
| 119 | Rough-in electrical in masonry walls | 2027-03-01 → 2027-03-15 (+14d) | 2027-03-26 → 2027-04-09 (+14d) |
| 120 | Rough-in electrical in drywall walls | 2027-06-17 → 2027-07-01 (+14d) | 2027-07-14 → 2027-07-28 (+14d) |
| 121 | Pull wire in conduit and set area transformers | 2027-07-15 → 2027-07-29 (+14d) | 2027-08-04 → 2027-08-18 (+14d) |
| 122 | Install and terminate electrical devices | 2027-08-05 → 2027-08-19 (+14d) | 2027-08-25 → 2027-09-08 (+14d) |
| 123 | Make electrical terminations for HVAC equipment | 2027-09-09 → 2027-09-23 (+14d) | 2027-09-10 → 2027-09-24 (+14d) |
| 124 | Install light fixtures - test and clean | 2027-08-26 → 2027-09-09 (+14d) | 2027-09-08 → 2027-09-22 (+14d) |
| 125 | **Heating and Ventilating - AC** | 2027-01-28 → 2027-02-11 (+14d) | 2027-10-08 → 2027-10-22 (+14d) |
| 126 | Set equipment in mechanical room | 2027-01-28 → 2027-02-11 (+14d) | 2027-02-10 → 2027-02-24 (+14d) |
| 127 | Rough-in mechanical in masonry walls | 2027-03-01 → 2027-03-15 (+14d) | 2027-03-26 → 2027-04-09 (+14d) |
| 128 | Rough-in mechanical in drywall walls | 2027-07-22 → 2027-08-05 (+14d) | 2027-08-04 → 2027-08-18 (+14d) |
| 129 | Install duct in building chase | 2027-06-08 → 2027-06-22 (+14d) | 2027-06-28 → 2027-07-12 (+14d) |
| 130 | Set HVAC trim and test and balance system | 2027-09-13 → 2027-09-27 (+14d) | 2027-10-08 → 2027-10-22 (+14d) |
| 131 | **Final Clean-up and Occupancy** | 2027-07-01 → 2027-07-15 (+14d) | 2027-10-06 → 2027-10-20 (+14d) |
| 132 | Install hard tile flooring in common areas | 2027-07-01 → 2027-07-15 (+14d) | 2027-07-07 → 2027-07-21 (+14d) |
| 133 | Clean hard tile floors | 2027-07-08 → 2027-07-22 (+14d) | 2027-07-13 → 2027-07-27 (+14d) |
| 134 | Remove debris from building and do final clean-up | 2027-09-30 → 2027-10-14 (+14d) | 2027-10-05 → 2027-10-19 (+14d) |
| 135 | Substantial completion date | 2027-10-06 → 2027-10-20 (+14d) | 2027-10-06 → 2027-10-20 (+14d) |
| 136 | **Complete Final Inspections** | 2027-10-06 → 2027-10-20 (+14d) | 2027-10-13 → 2027-10-27 (+14d) |
| 137 | Complete elevator inspection and certification | 2027-10-06 → 2027-10-20 (+14d) | 2027-10-08 → 2027-10-22 (+14d) |
| 138 | Perform architect's inspection | 2027-10-11 → 2027-10-25 (+14d) | 2027-10-11 → 2027-10-25 (+14d) |
| 139 | Perform local building agency inspection | 2027-10-12 → 2027-10-26 (+14d) | 2027-10-12 → 2027-10-26 (+14d) |
| 140 | Perform Fire Marshal's inspection | 2027-10-13 → 2027-10-27 (+14d) | 2027-10-13 → 2027-10-27 (+14d) |
| 141 | Complete punch list items from all inspections | 2027-10-14 → 2027-10-28 (+14d) | 2027-10-27 → 2027-11-10 (+14d) |
| 142 | Obtain certificate of occupancy | 2027-10-28 → 2027-11-11 (+14d) | 2027-10-29 → 2027-11-12 (+14d) |
| 143 | Issue final completion documents including warranties | 2027-11-01 → 2027-11-15 (+14d) | 2027-11-01 → 2027-11-15 (+14d) |
| 144 | Issue final request for payment | 2027-11-02 → 2027-11-16 (+14d) | 2027-11-02 → 2027-11-16 (+14d) |

## Version 4 (data date 2026-08-06, saved 2026-08-06, file 24Hour Calendar.mpp)

Last finish 2027-11-16 → 2027-08-04 (-104d). Complete tasks 25 → 23.

Changed:

| ID | Task | Start | Finish | Duration | Complete | Total float | Predecessors | Other |
| --- | --- | --- | --- | --- | --- | --- | --- | --- |
| 1 | **General Conditions** | 2026-03-02 A → 2026-05-13 A (+72d) | 2026-05-04 A → 2026-06-22 A (+49d) | 46d → 29d |  |  |  | baseline start 2026-03-02 → 2026-05-13; baseline finish 2026-04-01 → 2026-06-12 |
| 2 | Receive notice to proceed and sign contract | 2026-03-02 A → 2026-05-13 A (+72d) | 2026-03-04 A → 2026-05-15 A (+72d) |  |  |  |  | baseline start 2026-03-02 → 2026-05-13; baseline finish 2026-03-04 → 2026-05-15 |
| 3 | Submit bond and insurance documents | 2026-03-25 A → 2026-05-18 A (+54d) | 2026-03-26 A → 2026-06-11 A (+77d) | 2d → 4d |  |  |  | baseline start 2026-03-25 → 2026-05-18; baseline finish 2026-03-26 → 2026-06-08 |
| 4 | Prepare and submit project schedule | 2026-03-27 A → 2026-06-12 A (+77d) | 2026-03-30 A → 2026-06-18 A (+80d) | 2d → 5d |  |  |  | baseline start 2026-03-27 → 2026-06-09; baseline finish 2026-03-30 → 2026-06-10 |
| 5 | Prepare and submit schedule of values | 2026-03-31 A → 2026-06-19 A (+80d) | 2026-04-01 A → 2026-06-22 A (+82d) |  |  |  |  | baseline start 2026-03-31 → 2026-06-11; baseline finish 2026-04-01 → 2026-06-12 |
| 6 | Obtain building permits | 2026-03-05 A → 2026-05-18 A (+74d) | 2026-03-10 A → 2026-05-21 A (+72d) |  |  |  |  | baseline start 2026-03-05 → 2026-05-18; baseline finish 2026-03-10 → 2026-05-21 |
| 7 | Submit preliminary shop drawings | 2026-04-02 A → 2026-05-22 A (+50d) | 2026-05-04 A → 2026-06-09 A (+36d) | 4.6w → 2.6w |  |  |  | baseline start 2026-03-11 → 2026-05-22; baseline finish 2026-03-24 → 2026-06-04 |
| 8 | Submit monthly requests for payment | 2026-03-05 A → 2026-05-18 A (+74d) | 2026-03-05 A → 2026-05-18 A (+74d) |  |  |  |  | baseline start 2026-03-05 → 2026-05-18; baseline finish 2026-03-05 → 2026-05-18 |
| 9 | **Long Lead Procurement** | 2026-03-06 A → 2026-05-19 A (+74d) | 2026-06-19 A → 2026-08-11 (+53d) | 76d → 60.5d | 100% → 98% | none → 35.5d |  | baseline start 2026-03-06 → 2026-05-19; baseline finish 2026-06-11 → 2026-08-24 |
| 10 | Submit shop drawings and order long lead items - steel | 2026-03-06 A → 2026-05-19 A (+74d) | 2026-03-27 A → 2026-05-27 A (+61d) | 3.2w → 1.3w |  |  |  | baseline start 2026-03-06 → 2026-05-19; baseline finish 2026-03-19 → 2026-06-01 |
| 11 | Submit shop drawings and order long lead items - roofing | 2026-05-05 A → 2026-06-10 A (+36d) | 2026-05-29 A → 2026-06-19 A (+21d) | 3.8w → 1.6w |  |  |  | baseline start 2026-03-25 → 2026-06-05; baseline finish 2026-04-07 → 2026-06-18 |
| 12 | Submit shop drawings and order long lead items - elevator | 2026-05-05 A → 2026-06-10 A (+36d) | 2026-05-18 A → 2026-06-26 A (+39d) | 2w → 2.6w |  |  |  | baseline start 2026-03-25 → 2026-06-05; baseline finish 2026-04-07 → 2026-06-18 |
| 13 | Submit shop drawings and order long lead items - plumbing | 2026-05-05 A → 2026-06-09 A (+35d) | 2026-05-15 A → 2026-06-12 A (+28d) | 1.8w → 1.4w |  |  |  | baseline start 2026-03-25 → 2026-06-05; baseline finish 2026-04-07 → 2026-06-18 |
| 14 | Submit shop drawings and order long lead items - electric | 2026-06-08 A → 2026-06-10 A (+2d) | 2026-06-19 A → 2026-06-26 A (+7d) | 2w → 2.6w |  |  |  | constraint start no earlier than 2026-06-08 → none; baseline start 2026-03-25 → 2026-06-05; baseline finish 2026-04-07 → 2026-06-18 |
| 15 | Submit shop drawings and order long lead items - HVAC | 2026-05-05 A → 2026-06-10 A (+36d) | 2026-05-18 A → 2026-06-30 A (+43d) | 2w → 2.9w |  |  |  | baseline start 2026-03-25 → 2026-06-05; baseline finish 2026-04-07 → 2026-06-18 |
| 16 | Detail, fabricate and deliver steel | 2026-03-30 A → 2026-05-27 A (+58d) | 2026-06-19 A → 2026-08-11 (+53d) | 12w → 20w | 100% → 98% | none → 147.62d |  | baseline start 2026-03-20 → 2026-06-02; baseline finish 2026-06-11 → 2026-08-24 |
| 17 | **Mobilize on Site** | 2026-03-05 A → 2026-05-18 A (+74d) | 2026-03-27 A → 2026-06-10 A (+75d) | 17d → 18d |  |  |  | baseline start 2026-03-05 → 2026-05-18; baseline finish 2026-03-18 → 2026-05-29 |
| 18 | Install temporary power | 2026-03-05 A → 2026-05-18 A (+74d) | 2026-03-06 A → 2026-05-25 A (+80d) | 2d → 6d |  |  |  | baseline start 2026-03-05 → 2026-05-18; baseline finish 2026-03-06 → 2026-05-19 |
| 19 | Install temporary water service | 2026-03-05 A → 2026-05-26 A (+82d) | 2026-03-06 A → 2026-05-27 A (+82d) |  |  |  | 2 → 18 | constraint none → start no earlier than 2026-05-19; baseline start 2026-03-05 → 2026-05-18; baseline finish 2026-03-06 → 2026-05-19 |
| 20 | Set up site office | 2026-03-09 A → 2026-05-27 A (+79d) | 2026-03-11 A → 2026-06-04 A (+85d) | 3d → 7.33ed |  |  |  | baseline start 2026-03-09 → 2026-05-20; baseline finish 2026-03-11 → 2026-05-22 |
| 21 | Set line and grade benchmarks | 2026-03-12 A → 2026-06-04 A (+84d) | 2026-03-25 A → 2026-06-08 A (+75d) | 2w → 3d |  |  |  | baseline start 2026-03-12 → 2026-05-25; baseline finish 2026-03-16 → 2026-05-27 |
| 22 | Prepare site - lay down yard and temporary fencing | 2026-03-26 A → 2026-06-09 A (+75d) | 2026-03-27 A → 2026-06-10 A (+75d) |  |  |  |  | baseline start 2026-03-17 → 2026-05-28; baseline finish 2026-03-18 → 2026-05-29 |
| 23 | **Site Grading and Utilities** | 2026-04-06 A → 2026-06-11 A (+66d) | 2026-07-31 → 2026-08-25 (+25d) | 85d → 53.5d | 98% → 80% | 5d → 0d |  | baseline start 2026-03-19 → 2026-06-01; baseline finish 2026-05-06 → 2026-07-17 |
| 24 | Clear and grub site | 2026-04-06 A → 2026-06-11 A (+66d) | 2026-04-08 A → 2026-06-16 A (+69d) | 3d → 4d |  |  |  | constraint start no earlier than 2026-04-06 → none; baseline start 2026-03-19 → 2026-06-01; baseline finish 2026-03-23 → 2026-06-03 |
| 25 | Stone site access and temporary parking area | 2026-04-13 A → 2026-06-17 A (+65d) | 2026-04-14 A → 2026-06-18 A (+65d) |  |  |  |  | constraint start no earlier than 2026-04-13 → none; baseline start 2026-03-24 → 2026-06-04; baseline finish 2026-03-25 → 2026-06-05 |
| 26 | Rough grade site (cut and fill) | 2026-04-15 A → 2026-06-19 A (+65d) | 2026-04-21 A → 2026-06-25 A (+65d) |  |  |  |  | baseline start 2026-03-26 → 2026-06-08; baseline finish 2026-04-01 → 2026-06-12 |
| 27 | Install storm drainage | 2026-04-22 A → 2026-06-26 A (+65d) | 2026-05-19 A → 2026-08-04 A (+77d) | 4w → 5.5w |  |  |  | baseline start 2026-04-02 → 2026-06-15; baseline finish 2026-04-15 → 2026-06-26 |
| 28 | Install exterior fire line and building fire riser | 2026-04-22 A → 2026-06-26 A (+65d) | 2026-06-19 A → 2026-07-09 A (+20d) | 8.6w → 2w |  |  |  | baseline start 2026-04-02 → 2026-06-15; baseline finish 2026-04-15 → 2026-06-26 |
| 29 | Perform final site grading | 2026-06-22 A → 2026-08-04 A (+43d) | 2026-07-03 A → 2026-08-18 (+46d) |  | 100% → 25% | none → 0d |  | baseline start 2026-04-16 → 2026-06-29; baseline finish 2026-04-29 → 2026-07-10 |
| 30 | Erect building batter boards and layout building | 2026-07-06 A → 2026-08-18 (+43d) | 2026-07-31 → 2026-08-25 (+25d) | 4w → 1w | 90% → 0% | 5d → 0d |  | baseline start 2026-04-30 → 2026-07-13; baseline finish 2026-05-06 → 2026-07-17 |
| 31 | **Foundations** | 2026-08-03 → 2026-08-25 (+22d) | 2026-11-02 → 2026-10-07 (-26d) | 66d → 31.12d |  | 5d → 0d |  | baseline start 2026-05-07 → 2026-07-20; baseline finish 2026-07-08 → 2026-09-10 |
| 32 | Excavate foundations | 2026-08-03 → 2026-08-25 (+22d) | 2026-08-07 → 2026-08-28 (+21d) | 1w → 2.67ed |  | 5d → 0d |  | baseline start 2026-05-07 → 2026-07-20; baseline finish 2026-05-20 → 2026-07-31 |
| 33 | Excavate elevator pit | 2026-08-10 → 2026-08-28 (+18d) | 2026-08-28 → 2026-08-31 (+3d) | 15d → 2d |  | 230d → 155d |  | constraint start no earlier than 2026-08-10 → none; baseline start 2026-05-21 → 2026-08-03; baseline finish 2026-05-22 → 2026-08-04 |
| 34 | Form column piers and spread foundations | 2026-08-17 → 2026-08-28 (+11d) | 2026-09-04 → 2026-09-02 (-2d) | 15d → 4d |  |  |  | constraint start no earlier than 2026-08-17 → none; baseline start 2026-05-21 → 2026-08-03; baseline finish 2026-05-26 → 2026-08-06 |
| 35 | Rough-in electric and plumbing in elevator | 2026-08-31 → 2026-09-01 (+1d) | 2026-09-03 → 2026-09-04 (+1d) |  |  | 230d → 155d |  | baseline start 2026-05-25 → 2026-08-05; baseline finish 2026-05-28 → 2026-08-10 |
| 36 | Form elevator pit walls | 2026-09-11 → 2026-09-09 (-2d) | 2026-09-16 → 2026-09-14 (-2d) |  |  | 230d → 155d |  | baseline start 2026-06-02 → 2026-08-13; baseline finish 2026-06-05 → 2026-08-18 |
| 37 | Set reinforcing and anchor bolts | 2026-09-07 → 2026-09-03 (-4d) | 2026-09-10 → 2026-09-08 (-2d) |  |  |  |  | baseline start 2026-05-27 → 2026-08-07; baseline finish 2026-06-01 → 2026-08-12 |
| 38 | Pour column piers and foundations | 2026-09-11 → 2026-09-09 (-2d) | 2026-09-17 → 2026-09-15 (-2d) |  |  |  |  | baseline start 2026-06-02 → 2026-08-13; baseline finish 2026-06-08 → 2026-08-19 |
| 39 | Pour concrete elevator walls | 2026-09-18 → 2026-09-16 (-2d) | 2026-09-18 → 2026-09-16 (-2d) |  |  | 230d → 155d |  | baseline start 2026-06-09 → 2026-08-20; baseline finish 2026-06-09 → 2026-08-20 |
| 40 | Cure elevator wall concrete | 2026-10-16 → 2026-09-17 (-29d) | 2026-10-26 → 2026-09-30 (-26d) |  |  | 211d → 155d | 39, 47 → 39 | baseline start 2026-06-23 → 2026-08-21; baseline finish 2026-07-01 → 2026-09-03 |
| 41 | Cure piers and foundations | 2026-09-18 → 2026-09-16 (-2d) | 2026-09-28 → 2026-09-24 (-4d) |  |  |  |  | baseline start 2026-06-09 → 2026-08-20; baseline finish 2026-06-17 → 2026-08-28 |
| 42 | Strip wall forms | 2026-10-27 → 2026-10-01 (-26d) | 2026-10-27 → 2026-10-01 (-26d) |  |  | 211d → 155d |  | baseline start 2026-07-02 → 2026-09-04; baseline finish 2026-07-02 → 2026-09-04 |
| 43 | Strip column piers and foundation forms | 2026-09-29 → 2026-09-25 (-4d) | 2026-10-01 → 2026-09-29 (-2d) |  |  |  |  | baseline start 2026-06-18 → 2026-08-31; baseline finish 2026-06-22 → 2026-09-02 |
| 44 | Install pneumatic tube in elevator pit | 2026-10-28 → 2026-10-02 (-26d) | 2026-10-30 → 2026-10-06 (-24d) |  |  | 211d → 155d |  | baseline start 2026-07-03 → 2026-09-07; baseline finish 2026-07-07 → 2026-09-09 |
| 45 | Prepare and pour concrete floor in elevator pit | 2026-11-02 → 2026-10-07 (-26d) | 2026-11-02 → 2026-10-07 (-26d) |  |  | 211d → 155d |  | baseline start 2026-07-08 → 2026-09-10; baseline finish 2026-07-08 → 2026-09-10 |
| 46 | **Steel Erection** | 2026-10-02 → 2026-09-29 (-3d) | 2027-01-13 → 2026-10-16 (-89d) | 74d → 12d |  |  |  | baseline start 2026-06-23 → 2026-09-03; baseline finish 2026-08-31 → 2026-11-11 |
| 47 | Erect steel columns, beams and joist - 1st and 2nd floors | 2026-10-02 → 2026-09-29 (-3d) | 2026-10-15 → 2026-10-03 (-12d) |  |  |  |  | baseline start 2026-06-23 → 2026-09-03; baseline finish 2026-07-06 → 2026-09-16 |
| 48 | Erect steel columns, beams and joist - 3rd floor and roof | 2026-10-16 → 2026-10-03 (-13d) | 2026-11-09 → 2026-10-06 (-34d) | 3.4w → 2w |  |  |  | baseline start 2026-07-07 → 2026-09-17; baseline finish 2026-07-20 → 2026-09-30 |
| 49 | Install miscellaneous iron and bracing - 1st and 2nd floors | 2026-12-08 → 2026-10-09 (-60d) | 2027-01-13 → 2026-10-16 (-89d) | 5.4w → 2w |  | 139d → 144d |  | baseline start 2026-08-18 → 2026-10-29; baseline finish 2026-08-31 → 2026-11-11 |
| 50 | Install miscellaneous iron and bracing - 3rd floor and roof | 2026-11-10 → 2026-10-06 (-35d) | 2026-11-23 → 2026-10-09 (-45d) |  |  |  |  | baseline start 2026-07-21 → 2026-10-01; baseline finish 2026-08-03 → 2026-10-14 |
| 51 | Install stairs and miscellaneous iron railing | 2026-11-24 → 2026-10-09 (-46d) | 2026-12-07 → 2026-10-13 (-55d) |  |  |  |  | baseline start 2026-08-04 → 2026-10-15; baseline finish 2026-08-17 → 2026-10-28 |
| 52 | Touch-up paint on steel | 2026-12-08 → 2026-10-13 (-56d) | 2026-12-14 → 2026-10-14 (-61d) |  |  |  |  | baseline start 2026-08-18 → 2026-10-29; baseline finish 2026-08-24 → 2026-11-04 |
| 53 | **Form and Pour Concrete - Floors and Roof** | 2026-11-10 → 2026-10-05 (-36d) | 2027-03-12 → 2026-12-25 (-77d) | 89d → 60d |  | 25d → 8d |  | baseline start 2026-07-07 → 2026-09-17; baseline finish 2026-11-04 → 2027-01-15 |
| 54 | Form 2nd floor including all floor openings | 2026-12-15 → 2026-10-15 (-61d) | 2027-01-06 → 2026-10-21 (-77d) | 17d → 5d |  |  |  | baseline start 2026-08-25 → 2026-11-05; baseline finish 2026-08-31 → 2026-11-11 |
| 55 | Install rebar and in-floor utilities (including mechanical, electrical, plumbing) | 2026-11-10 → 2026-10-05 (-36d) | 2026-11-16 → 2026-10-09 (-38d) |  |  | 37d → 8d | 47, 48 → 47 | baseline start 2026-07-07 → 2026-09-17; baseline finish 2026-07-13 → 2026-09-23 |
| 56 | Pour 2nd floor slab | 2027-01-07 → 2026-10-22 (-77d) | 2027-01-12 → 2026-10-27 (-77d) |  |  |  |  | baseline start 2026-09-01 → 2026-11-12; baseline finish 2026-09-04 → 2026-11-17 |
| 57 | Cure 2nd floor slab | 2027-01-13 → 2026-10-28 (-77d) | 2027-01-21 → 2026-11-05 (-77d) |  |  |  |  | baseline start 2026-09-07 → 2026-11-18; baseline finish 2026-09-15 → 2026-11-26 |
| 58 | Strip forms from 2nd floor slab | 2027-01-29 → 2026-11-13 (-77d) | 2027-02-01 → 2026-11-16 (-77d) |  |  | 73d → 54d |  | baseline start 2026-09-23 → 2026-12-04; baseline finish 2026-09-24 → 2026-12-07 |
| 59 | Form 3rd floor including all floor openings | 2027-01-22 → 2026-11-06 (-77d) | 2027-01-28 → 2026-11-12 (-77d) |  |  |  |  | baseline start 2026-09-16 → 2026-11-27; baseline finish 2026-09-22 → 2026-12-03 |
| 60 | Install rebar and in-floor utilities (including mechanical, electrical, plumbing) | 2027-01-22 → 2026-11-06 (-77d) | 2027-01-28 → 2026-11-12 (-77d) |  |  |  |  | baseline start 2026-09-16 → 2026-11-27; baseline finish 2026-09-22 → 2026-12-03 |
| 61 | Pour 3rd floor slab | 2027-01-29 → 2026-11-13 (-77d) | 2027-02-03 → 2026-11-18 (-77d) |  |  |  |  | baseline start 2026-09-23 → 2026-12-04; baseline finish 2026-09-28 → 2026-12-09 |
| 62 | Cure 3rd floor slab | 2027-02-04 → 2026-11-19 (-77d) | 2027-02-12 → 2026-11-27 (-77d) |  |  |  |  | baseline start 2026-09-29 → 2026-12-10; baseline finish 2026-10-07 → 2026-12-18 |
| 63 | Strip forms from 3rd floor slab | 2027-02-22 → 2026-12-07 (-77d) | 2027-02-23 → 2026-12-08 (-77d) |  |  |  |  | baseline start 2026-10-15 → 2026-12-28; baseline finish 2026-10-16 → 2026-12-29 |
| 64 | Form roof slab including all floor openings | 2027-02-15 → 2026-11-30 (-77d) | 2027-02-19 → 2026-12-04 (-77d) |  |  |  |  | baseline start 2026-10-08 → 2026-12-21; baseline finish 2026-10-14 → 2026-12-25 |
| 65 | Install rebar and in-floor utilities (including mechanical, electrical, plumbing) | 2027-02-15 → 2026-11-30 (-77d) | 2027-02-19 → 2026-12-04 (-77d) |  |  |  |  | baseline start 2026-10-08 → 2026-12-21; baseline finish 2026-10-14 → 2026-12-25 |
| 66 | Pour roof slab | 2027-02-22 → 2026-12-07 (-77d) | 2027-02-25 → 2026-12-10 (-77d) |  |  |  |  | baseline start 2026-10-15 → 2026-12-28; baseline finish 2026-10-20 → 2026-12-31 |
| 67 | Cure roof slab | 2027-02-26 → 2026-12-11 (-77d) | 2027-03-08 → 2026-12-21 (-77d) |  |  |  |  | baseline start 2026-10-21 → 2027-01-01; baseline finish 2026-10-29 → 2027-01-11 |
| 68 | Strip forms from roof slab | 2027-03-09 → 2026-12-22 (-77d) | 2027-03-10 → 2026-12-23 (-77d) |  |  |  |  | baseline start 2026-10-30 → 2027-01-12; baseline finish 2026-11-02 → 2027-01-13 |
| 69 | Form 1st floor | 2027-02-02 → 2026-11-17 (-77d) | 2027-02-05 → 2026-11-20 (-77d) |  |  | 78d → 59d |  | baseline start 2026-09-25 → 2026-12-08; baseline finish 2026-09-30 → 2026-12-11 |
| 70 | Install electrical underground | 2027-02-08 → 2026-11-17 (-83d) | 2027-02-12 → 2026-11-23 (-81d) |  |  | 73d → 58d |  | baseline start 2026-10-01 → 2026-12-08; baseline finish 2026-10-07 → 2026-12-14 |

| ID | Task | Start | Finish | Duration | Total float | Other |
| --- | --- | --- | --- | --- | --- | --- |
| 71 | Install plumbing underground | 2027-02-08 → 2026-11-17 (-83d) | 2027-02-12 → 2026-11-23 (-81d) |  | 73d → 58d | baseline start 2026-10-01 → 2026-12-08; baseline finish 2026-10-07 → 2026-12-14 |
| 72 | Install rebar and in-floor utilities | 2027-02-02 → 2026-11-17 (-77d) | 2027-02-05 → 2026-11-27 (-70d) | 4d → 8d | 78d → 54d | baseline start 2026-09-25 → 2026-12-08; baseline finish 2026-09-30 → 2026-12-18 |
| 73 | Pour 1st floor slab | 2027-02-15 → 2026-11-30 (-77d) | 2027-02-18 → 2026-12-03 (-77d) |  | 73d → 54d | baseline start 2026-10-08 → 2026-12-21; baseline finish 2026-10-13 → 2026-12-24 |
| 74 | Cure 1st floor slab | 2027-02-24 → 2026-12-04 (-82d) | 2027-03-04 → 2026-12-16 (-78d) |  | 73d → 54d | baseline start 2026-10-19 → 2026-12-25; baseline finish 2026-10-27 → 2027-01-06 |
| 75 | Strip forms from 1st floor slab | 2027-03-11 → 2026-12-24 (-77d) | 2027-03-12 → 2026-12-25 (-77d) |  | 73d → 54d | baseline start 2026-11-03 → 2027-01-14; baseline finish 2026-11-04 → 2027-01-15 |
| 76 | **Carpentry Work** | 2027-03-11 → 2026-12-24 (-77d) | 2027-03-31 → 2027-01-13 (-77d) |  |  | baseline start 2026-11-03 → 2027-01-14; baseline finish 2026-11-23 → 2027-02-03 |
| 77 | Install exterior sheathing and metal studs | 2027-03-11 → 2026-12-24 (-77d) | 2027-03-31 → 2027-01-13 (-77d) |  |  | baseline start 2026-11-03 → 2027-01-14; baseline finish 2026-11-23 → 2027-02-03 |
| 78 | **Masonry Work** | 2027-01-14 → 2026-10-16 (-90d) | 2027-05-13 → 2027-02-12 (-90d) |  | 55d → 64d | baseline start 2026-09-01 → 2026-11-12; baseline finish 2027-01-05 → 2027-03-18 |
| 79 | Rough-in plumbing at toilets and masonry walls | 2027-03-15 → 2026-12-28 (-77d) | 2027-04-09 → 2027-01-22 (-77d) |  | 93d → 74d | baseline start 2026-11-05 → 2027-01-18; baseline finish 2026-12-02 → 2027-02-12 |
| 80 | Lay masonry at core, mechanical, and toilets | 2027-01-14 → 2026-10-16 (-90d) | 2027-02-10 → 2026-10-22 (-111d) |  | 139d → 144d | baseline start 2026-09-01 → 2026-11-12; baseline finish 2026-09-28 → 2026-12-09 |
| 81 | Install exterior masonry work | 2027-04-01 → 2027-01-13 (-78d) | 2027-05-05 → 2027-01-22 (-103d) |  |  | baseline start 2026-11-24 → 2027-02-04; baseline finish 2026-12-28 → 2027-03-10 |
| 82 | Install roof drains | 2027-05-12 → 2027-01-28 (-104d) | 2027-05-13 → 2027-01-29 (-104d) |  |  | baseline start 2027-01-04 → 2027-03-17; baseline finish 2027-01-05 → 2027-03-18 |
| 83 | Install tile in toilet rooms | 2027-04-12 → 2027-01-25 (-77d) | 2027-04-23 → 2027-02-05 (-77d) |  | 93d → 74d | baseline start 2026-12-03 → 2027-02-15; baseline finish 2026-12-16 → 2027-02-26 |
| 84 | Clean masonry | 2027-05-06 → 2027-01-22 (-104d) | 2027-05-12 → 2027-01-23 (-109d) |  | 90d → 93.88d | baseline start 2026-12-29 → 2027-03-11; baseline finish 2027-01-04 → 2027-03-17 |
| 85 | Clean toilet room tile | 2027-04-26 → 2027-02-08 (-77d) | 2027-04-30 → 2027-02-12 (-77d) |  | 93d → 74d | baseline start 2026-12-17 → 2027-03-01; baseline finish 2026-12-23 → 2027-03-05 |
| 86 | **Roofing** | 2027-05-06 → 2027-01-22 (-104d) | 2027-06-21 → 2027-03-09 (-104d) |  |  | baseline start 2026-12-29 → 2027-03-11; baseline finish 2027-02-11 → 2027-04-26 |
| 87 | Install flashing at parapet walls | 2027-05-06 → 2027-01-22 (-104d) | 2027-05-11 → 2027-01-27 (-104d) |  |  | baseline start 2026-12-29 → 2027-03-11; baseline finish 2027-01-01 → 2027-03-16 |
| 88 | Pour lightweight concrete roof fill | 2027-05-14 → 2027-02-01 (-102d) | 2027-05-17 → 2027-02-02 (-104d) |  |  | baseline start 2027-01-06 → 2027-03-19; baseline finish 2027-01-07 → 2027-03-22 |
| 89 | Install seamless roofing material | 2027-05-25 → 2027-02-10 (-104d) | 2027-05-31 → 2027-02-16 (-104d) |  |  | baseline start 2027-01-15 → 2027-03-30; baseline finish 2027-01-21 → 2027-04-05 |
| 90 | Spread stone ballast on seamless roof | 2027-06-01 → 2027-02-17 (-104d) | 2027-06-07 → 2027-02-23 (-104d) |  |  | baseline start 2027-01-22 → 2027-04-06; baseline finish 2027-01-28 → 2027-04-12 |
| 91 | Set rooftop equipment | 2027-06-08 → 2027-02-24 (-104d) | 2027-06-21 → 2027-03-09 (-104d) |  |  | baseline start 2027-01-29 → 2027-04-13; baseline finish 2027-02-11 → 2027-04-26 |
| 92 | **Window wall and store front closures** | 2027-05-06 → 2027-01-22 (-104d) | 2027-08-18 → 2027-05-06 (-104d) |  |  | baseline start 2026-12-29 → 2027-03-11; baseline finish 2027-04-12 → 2027-06-23 |
| 93 | Install window wall aluminum and glass | 2027-05-06 → 2027-01-22 (-104d) | 2027-06-09 → 2027-02-25 (-104d) |  |  | baseline start 2026-12-29 → 2027-03-11; baseline finish 2027-02-01 → 2027-04-14 |
| 94 | Install interior stud walls and drywall | 2027-06-10 → 2027-02-26 (-104d) | 2027-07-14 → 2027-04-01 (-104d) |  |  | baseline start 2027-02-02 → 2027-04-15; baseline finish 2027-03-08 → 2027-05-19 |
| 95 | Install interior doors and hardware | 2027-08-05 → 2027-04-23 (-104d) | 2027-08-18 → 2027-05-06 (-104d) |  |  | baseline start 2027-03-30 → 2027-06-10; baseline finish 2027-04-12 → 2027-06-23 |
| 96 | Install store front doors and hardware | 2027-06-10 → 2027-02-26 (-104d) | 2027-06-30 → 2027-03-18 (-104d) |  |  | baseline start 2027-02-02 → 2027-04-15; baseline finish 2027-02-22 → 2027-05-05 |
| 97 | **Building Finishes** | 2027-06-10 → 2027-02-26 (-104d) | 2027-10-13 → 2027-07-01 (-104d) |  |  | baseline start 2027-02-02 → 2027-04-15; baseline finish 2027-06-07 → 2027-08-18 |
| 98 | Install millwork and wood trim | 2027-07-15 → 2027-04-02 (-104d) | 2027-08-04 → 2027-04-22 (-104d) |  |  | baseline start 2027-03-09 → 2027-05-20; baseline finish 2027-03-29 → 2027-06-09 |
| 99 | Paint walls and woodwork | 2027-08-19 → 2027-05-07 (-104d) | 2027-09-15 → 2027-06-03 (-104d) |  |  | baseline start 2027-04-13 → 2027-06-24; baseline finish 2027-05-10 → 2027-07-21 |
| 100 | Install conduit at ceiling plenum space | 2027-06-10 → 2027-02-26 (-104d) | 2027-06-30 → 2027-03-18 (-104d) |  |  | baseline start 2027-02-02 → 2027-04-15; baseline finish 2027-02-22 → 2027-05-05 |
| 101 | Install duct in ceiling plenum space | 2027-07-15 → 2027-04-02 (-104d) | 2027-08-04 → 2027-04-22 (-104d) |  |  | baseline start 2027-03-09 → 2027-05-20; baseline finish 2027-03-29 → 2027-06-09 |
| 102 | Install ceiling grid | 2027-08-05 → 2027-04-23 (-104d) | 2027-08-18 → 2027-05-06 (-104d) |  |  | baseline start 2027-03-30 → 2027-06-10; baseline finish 2027-04-12 → 2027-06-23 |
| 103 | Install ceiling tile | 2027-08-19 → 2027-05-07 (-104d) | 2027-09-01 → 2027-05-20 (-104d) |  |  | baseline start 2027-04-13 → 2027-06-24; baseline finish 2027-04-26 → 2027-07-07 |
| 104 | Hang wallpaper | 2027-09-16 → 2027-06-04 (-104d) | 2027-09-29 → 2027-06-17 (-104d) |  |  | baseline start 2027-05-11 → 2027-07-22; baseline finish 2027-05-24 → 2027-08-04 |
| 105 | Install building carpet | 2027-09-16 → 2027-06-04 (-104d) | 2027-10-13 → 2027-07-01 (-104d) |  |  | baseline start 2027-05-11 → 2027-07-22; baseline finish 2027-06-07 → 2027-08-18 |
| 106 | Install hardware and accessories | 2027-09-16 → 2027-06-04 (-104d) | 2027-10-06 → 2027-06-24 (-104d) |  |  | baseline start 2027-05-11 → 2027-07-22; baseline finish 2027-05-31 → 2027-08-11 |
| 107 | Complete interior and exterior sod and plantings | 2027-09-16 → 2027-06-04 (-104d) | 2027-09-29 → 2027-06-17 (-104d) |  |  | baseline start 2027-05-11 → 2027-07-22; baseline finish 2027-05-24 → 2027-08-04 |
| 108 | Pave, curb, and stripe parking lot | 2027-09-30 → 2027-06-18 (-104d) | 2027-10-13 → 2027-07-01 (-104d) |  |  | baseline start 2027-05-25 → 2027-08-05; baseline finish 2027-06-07 → 2027-08-18 |
| 109 | **Elevators** | 2027-02-11 → 2026-10-23 (-111d) | 2027-04-07 → 2026-12-17 (-111d) |  | 139d → 144d | baseline start 2026-09-29 → 2026-12-10; baseline finish 2026-11-23 → 2027-02-03 |
| 110 | Set elevator equipment in shafts | 2027-02-11 → 2026-10-23 (-111d) | 2027-03-10 → 2026-11-19 (-111d) |  | 139d → 144d | baseline start 2026-09-29 → 2026-12-10; baseline finish 2026-10-26 → 2027-01-06 |
| 111 | Set equipment in mechanical room | 2027-03-11 → 2026-11-20 (-111d) | 2027-03-24 → 2026-12-03 (-111d) |  | 139d → 144d | baseline start 2026-10-27 → 2027-01-07; baseline finish 2026-11-09 → 2027-01-20 |
| 112 | Test and align doors and equipment | 2027-03-25 → 2026-12-04 (-111d) | 2027-04-07 → 2026-12-17 (-111d) |  | 139d → 144d | baseline start 2026-11-10 → 2027-01-21; baseline finish 2026-11-23 → 2027-02-03 |
| 113 | **Plumbing** | 2027-05-13 → 2027-01-25 (-108d) | 2027-09-29 → 2027-06-17 (-104d) | 100d → 104d |  | baseline start 2027-01-05 → 2027-03-18; baseline finish 2027-05-24 → 2027-08-04 |
| 114 | Rough-in plumbing in drywall walls | 2027-06-10 → 2027-02-26 (-104d) | 2027-07-07 → 2027-03-25 (-104d) |  |  | baseline start 2027-02-02 → 2027-04-15; baseline finish 2027-03-01 → 2027-05-12 |
| 115 | Tie-in fire line riser and set valves | 2027-05-13 → 2027-01-25 (-108d) | 2027-05-26 → 2027-02-05 (-110d) |  | 90d → 94d | baseline start 2027-01-05 → 2027-03-18; baseline finish 2027-01-18 → 2027-03-31 |
| 116 | Set plumbing fixtures and trim | 2027-07-08 → 2027-03-26 (-104d) | 2027-07-28 → 2027-04-15 (-104d) |  |  | baseline start 2027-03-02 → 2027-05-13; baseline finish 2027-03-22 → 2027-06-02 |
| 117 | Flush, test, and clean piping and fixtures | 2027-09-16 → 2027-06-04 (-104d) | 2027-09-29 → 2027-06-17 (-104d) |  |  | baseline start 2027-05-11 → 2027-07-22; baseline finish 2027-05-24 → 2027-08-04 |
| 118 | **Electrical** | 2027-03-15 → 2026-12-28 (-77d) | 2027-09-24 → 2027-06-14 (-102d) | 140d → 121d |  | baseline start 2026-11-05 → 2027-01-18; baseline finish 2027-05-19 → 2027-07-30 |
| 119 | Rough-in electrical in masonry walls | 2027-03-15 → 2026-12-28 (-77d) | 2027-04-09 → 2027-01-22 (-77d) |  | 73d → 54d | baseline start 2026-11-05 → 2027-01-18; baseline finish 2026-12-02 → 2027-02-12 |
| 120 | Rough-in electrical in drywall walls | 2027-07-01 → 2027-03-19 (-104d) | 2027-07-28 → 2027-04-15 (-104d) |  |  | baseline start 2027-02-23 → 2027-05-06; baseline finish 2027-03-22 → 2027-06-02 |
| 121 | Pull wire in conduit and set area transformers | 2027-07-29 → 2027-04-16 (-104d) | 2027-08-18 → 2027-05-06 (-104d) |  |  | baseline start 2027-03-23 → 2027-06-03; baseline finish 2027-04-12 → 2027-06-23 |
| 122 | Install and terminate electrical devices | 2027-08-19 → 2027-05-07 (-104d) | 2027-09-08 → 2027-05-27 (-104d) |  |  | baseline start 2027-04-13 → 2027-06-24; baseline finish 2027-05-03 → 2027-07-14 |
| 123 | Make electrical terminations for HVAC equipment | 2027-09-23 → 2027-06-11 (-104d) | 2027-09-24 → 2027-06-14 (-102d) |  |  | baseline start 2027-05-18 → 2027-07-29; baseline finish 2027-05-19 → 2027-07-30 |
| 124 | Install light fixtures - test and clean | 2027-09-09 → 2027-05-28 (-104d) | 2027-09-22 → 2027-06-10 (-104d) |  |  | baseline start 2027-05-04 → 2027-07-15; baseline finish 2027-05-17 → 2027-07-28 |
| 125 | **Heating and Ventilating - AC** | 2027-02-11 → 2026-10-23 (-111d) | 2027-10-22 → 2027-07-12 (-102d) | 182d → 187d |  | baseline start 2026-09-29 → 2026-12-10; baseline finish 2027-06-16 → 2027-08-27 |
| 126 | Set equipment in mechanical room | 2027-02-11 → 2026-10-23 (-111d) | 2027-02-24 → 2026-11-05 (-111d) |  | 146d → 151d | baseline start 2026-09-29 → 2026-12-10; baseline finish 2026-10-12 → 2026-12-23 |
| 127 | Rough-in mechanical in masonry walls | 2027-03-15 → 2026-12-28 (-77d) | 2027-04-09 → 2027-01-22 (-77d) |  | 114d → 95d | baseline start 2026-11-05 → 2027-01-18; baseline finish 2026-12-02 → 2027-02-12 |
| 128 | Rough-in mechanical in drywall walls | 2027-08-05 → 2027-03-31 (-127d) | 2027-08-18 → 2027-05-04 (-106d) |  | 64d → 66d | baseline start 2027-03-30 → 2027-05-18; baseline finish 2027-04-12 → 2027-06-21 |
| 129 | Install duct in building chase | 2027-06-22 → 2027-03-10 (-104d) | 2027-07-12 → 2027-03-30 (-104d) |  |  | baseline start 2027-02-12 → 2027-04-27; baseline finish 2027-03-04 → 2027-05-17 |
| 130 | Set HVAC trim and test and balance system | 2027-09-27 → 2027-06-15 (-104d) | 2027-10-22 → 2027-07-12 (-102d) |  |  | baseline start 2027-05-20 → 2027-08-02; baseline finish 2027-06-16 → 2027-08-27 |
| 131 | **Final Clean-up and Occupancy** | 2027-07-15 → 2027-04-02 (-104d) | 2027-10-20 → 2027-07-08 (-104d) |  |  | baseline start 2027-03-09 → 2027-05-20; baseline finish 2027-06-14 → 2027-08-25 |
| 132 | Install hard tile flooring in common areas | 2027-07-15 → 2027-04-02 (-104d) | 2027-07-21 → 2027-04-08 (-104d) |  |  | baseline start 2027-03-09 → 2027-05-20; baseline finish 2027-03-15 → 2027-05-26 |
| 133 | Clean hard tile floors | 2027-07-22 → 2027-04-09 (-104d) | 2027-07-27 → 2027-04-14 (-104d) |  |  | baseline start 2027-03-16 → 2027-05-27; baseline finish 2027-03-19 → 2027-06-01 |
| 134 | Remove debris from building and do final clean-up | 2027-10-14 → 2027-07-02 (-104d) | 2027-10-19 → 2027-07-07 (-104d) |  |  | baseline start 2027-06-08 → 2027-08-19; baseline finish 2027-06-11 → 2027-08-24 |
| 135 | Substantial completion date | 2027-10-20 → 2027-07-08 (-104d) | 2027-10-20 → 2027-07-08 (-104d) |  |  | baseline start 2027-06-14 → 2027-08-25; baseline finish 2027-06-14 → 2027-08-25 |
| 136 | **Complete Final Inspections** | 2027-10-20 → 2027-07-08 (-104d) | 2027-10-27 → 2027-07-15 (-104d) |  |  | baseline start 2027-06-14 → 2027-08-25; baseline finish 2027-06-21 → 2027-09-01 |
| 137 | Complete elevator inspection and certification | 2027-10-20 → 2027-07-08 (-104d) | 2027-10-22 → 2027-07-12 (-102d) |  |  | baseline start 2027-06-14 → 2027-08-25; baseline finish 2027-06-16 → 2027-08-27 |
| 138 | Perform architect's inspection | 2027-10-25 → 2027-07-13 (-104d) | 2027-10-25 → 2027-07-13 (-104d) |  |  | baseline start 2027-06-17 → 2027-08-30; baseline finish 2027-06-17 → 2027-08-30 |
| 139 | Perform local building agency inspection | 2027-10-26 → 2027-07-14 (-104d) | 2027-10-26 → 2027-07-14 (-104d) |  |  | baseline start 2027-06-18 → 2027-08-31; baseline finish 2027-06-18 → 2027-08-31 |
| 140 | Perform Fire Marshal's inspection | 2027-10-27 → 2027-07-15 (-104d) | 2027-10-27 → 2027-07-15 (-104d) |  |  | baseline start 2027-06-21 → 2027-09-01; baseline finish 2027-06-21 → 2027-09-01 |

| ID | Task | Start | Finish | Other |
| --- | --- | --- | --- | --- |
| 141 | Complete punch list items from all inspections | 2027-10-28 → 2027-07-16 (-104d) | 2027-11-10 → 2027-07-29 (-104d) | baseline start 2027-06-22 → 2027-09-02; baseline finish 2027-07-05 → 2027-09-15 |
| 142 | Obtain certificate of occupancy | 2027-11-11 → 2027-07-30 (-104d) | 2027-11-12 → 2027-08-02 (-102d) | baseline start 2027-07-06 → 2027-09-16; baseline finish 2027-07-07 → 2027-09-17 |
| 143 | Issue final completion documents including warranties | 2027-11-15 → 2027-08-03 (-104d) | 2027-11-15 → 2027-08-03 (-104d) | baseline start 2027-07-08 → 2027-09-20; baseline finish 2027-07-08 → 2027-09-20 |
| 144 | Issue final request for payment | 2027-11-16 → 2027-08-04 (-104d) | 2027-11-16 → 2027-08-04 (-104d) | baseline start 2027-07-09 → 2027-09-21; baseline finish 2027-07-09 → 2027-09-21 |

## Version 5 (data date 2026-08-27, saved 2026-08-07, file Project5_FX06_TamperBaselineShift.mpp)

Last finish 2027-08-04 → 2028-01-25 (+174d). Complete tasks 23 → 27.

Changed:

| ID | Task | Start | Finish | Duration | Complete | Total float | Predecessors | Other |
| --- | --- | --- | --- | --- | --- | --- | --- | --- |
| 1 | **General Conditions** | 2026-05-13 A → 2026-03-02 A (-72d) | 2026-06-22 A → 2026-05-04 A (-49d) | 29d → 46d |  |  |  | baseline start 2026-05-13 → 2026-03-02; baseline finish 2026-06-12 → 2026-04-01 |
| 2 | Receive notice to proceed and sign contract | 2026-05-13 A → 2026-03-02 A (-72d) | 2026-05-15 A → 2026-03-04 A (-72d) |  |  |  |  | baseline start 2026-05-13 → 2026-03-02; baseline finish 2026-05-15 → 2026-03-04 |
| 3 | Submit bond and insurance documents | 2026-05-18 A → 2026-03-25 A (-54d) | 2026-06-11 A → 2026-03-26 A (-77d) | 4d → 2d |  |  |  | baseline start 2026-05-18 → 2026-03-25; baseline finish 2026-06-08 → 2026-03-26 |
| 4 | Prepare and submit project schedule | 2026-06-12 A → 2026-03-27 A (-77d) | 2026-06-18 A → 2026-03-30 A (-80d) | 5d → 2d |  |  |  | baseline start 2026-06-09 → 2026-03-27; baseline finish 2026-06-10 → 2026-03-30 |
| 5 | Prepare and submit schedule of values | 2026-06-19 A → 2026-03-31 A (-80d) | 2026-06-22 A → 2026-04-01 A (-82d) |  |  |  |  | baseline start 2026-06-11 → 2026-03-31; baseline finish 2026-06-12 → 2026-04-01 |
| 6 | Obtain building permits | 2026-05-18 A → 2026-03-05 A (-74d) | 2026-05-21 A → 2026-03-10 A (-72d) |  |  |  |  | baseline start 2026-05-18 → 2026-03-05; baseline finish 2026-05-21 → 2026-03-10 |
| 7 | Submit preliminary shop drawings | 2026-05-22 A → 2026-04-02 A (-50d) | 2026-06-09 A → 2026-05-04 A (-36d) | 2.6w → 4.6w |  |  |  | baseline start 2026-05-22 → 2026-03-11; baseline finish 2026-06-04 → 2026-03-24 |
| 8 | Submit monthly requests for payment | 2026-05-18 A → 2026-03-05 A (-74d) | 2026-05-18 A → 2026-03-05 A (-74d) |  |  |  |  | baseline start 2026-05-18 → 2026-03-05; baseline finish 2026-05-18 → 2026-03-05 |
| 9 | **Long Lead Procurement** | 2026-05-19 A → 2026-03-06 A (-74d) | 2026-08-11 → 2026-06-19 A (-53d) | 60.5d → 76d | 98% → 100% | 35.5d → none |  | baseline start 2026-05-19 → 2026-03-06; baseline finish 2026-08-24 → 2026-06-11 |
| 10 | Submit shop drawings and order long lead items - steel | 2026-05-19 A → 2026-03-06 A (-74d) | 2026-05-27 A → 2026-03-27 A (-61d) | 1.3w → 3.2w |  |  |  | baseline start 2026-05-19 → 2026-03-06; baseline finish 2026-06-01 → 2026-03-19 |
| 11 | Submit shop drawings and order long lead items - roofing | 2026-06-10 A → 2026-05-05 A (-36d) | 2026-06-19 A → 2026-05-29 A (-21d) | 1.6w → 3.8w |  |  |  | baseline start 2026-06-05 → 2026-03-25; baseline finish 2026-06-18 → 2026-04-07 |
| 12 | Submit shop drawings and order long lead items - elevator | 2026-06-10 A → 2026-05-05 A (-36d) | 2026-06-26 A → 2026-05-18 A (-39d) | 2.6w → 2w |  |  |  | baseline start 2026-06-05 → 2026-03-25; baseline finish 2026-06-18 → 2026-04-07 |
| 13 | Submit shop drawings and order long lead items - plumbing | 2026-06-09 A → 2026-05-05 A (-35d) | 2026-06-12 A → 2026-05-15 A (-28d) | 1.4w → 1.8w |  |  |  | baseline start 2026-06-05 → 2026-03-25; baseline finish 2026-06-18 → 2026-04-07 |
| 14 | Submit shop drawings and order long lead items - electric | 2026-06-10 A → 2026-06-08 A (-2d) | 2026-06-26 A → 2026-06-19 A (-7d) | 2.6w → 2w |  |  |  | constraint none → start no earlier than 2026-06-08; baseline start 2026-06-05 → 2026-03-25; baseline finish 2026-06-18 → 2026-04-07 |
| 15 | Submit shop drawings and order long lead items - HVAC | 2026-06-10 A → 2026-05-05 A (-36d) | 2026-06-30 A → 2026-05-18 A (-43d) | 2.9w → 2w |  |  |  | baseline start 2026-06-05 → 2026-03-25; baseline finish 2026-06-18 → 2026-04-07 |
| 16 | Detail, fabricate and deliver steel | 2026-05-27 A → 2026-03-30 A (-58d) | 2026-08-11 → 2026-06-19 A (-53d) | 20w → 12w | 98% → 100% | 147.62d → none |  | baseline start 2026-06-02 → 2026-03-20; baseline finish 2026-08-24 → 2026-06-11 |
| 17 | **Mobilize on Site** | 2026-05-18 A → 2026-03-05 A (-74d) | 2026-06-10 A → 2026-03-27 A (-75d) | 18d → 17d |  |  |  | baseline start 2026-05-18 → 2026-03-05; baseline finish 2026-05-29 → 2026-03-18 |
| 18 | Install temporary power | 2026-05-18 A → 2026-03-05 A (-74d) | 2026-05-25 A → 2026-03-06 A (-80d) | 6d → 2d |  |  |  | baseline start 2026-05-18 → 2026-03-05; baseline finish 2026-05-19 → 2026-03-06 |
| 19 | Install temporary water service | 2026-05-26 A → 2026-03-05 A (-82d) | 2026-05-27 A → 2026-03-06 A (-82d) |  |  |  | 18 → 2 | constraint start no earlier than 2026-05-19 → none; baseline start 2026-05-18 → 2026-03-05; baseline finish 2026-05-19 → 2026-03-06 |
| 20 | Set up site office | 2026-05-27 A → 2026-03-09 A (-79d) | 2026-06-04 A → 2026-03-11 A (-85d) | 7.33ed → 3d |  |  |  | baseline start 2026-05-20 → 2026-03-09; baseline finish 2026-05-22 → 2026-03-11 |
| 21 | Set line and grade benchmarks | 2026-06-04 A → 2026-03-12 A (-84d) | 2026-06-08 A → 2026-03-25 A (-75d) | 3d → 2w |  |  |  | baseline start 2026-05-25 → 2026-03-12; baseline finish 2026-05-27 → 2026-03-16 |
| 22 | Prepare site - lay down yard and temporary fencing | 2026-06-09 A → 2026-03-26 A (-75d) | 2026-06-10 A → 2026-03-27 A (-75d) |  |  |  |  | baseline start 2026-05-28 → 2026-03-17; baseline finish 2026-05-29 → 2026-03-18 |
| 23 | **Site Grading and Utilities** | 2026-06-11 A → 2026-04-06 A (-66d) | 2026-08-25 → 2026-07-31 A (-25d) | 53.5d → 85d | 80% → 100% | 0d → none |  | baseline start 2026-06-01 → 2026-03-19; baseline finish 2026-07-17 → 2026-05-06 |
| 24 | Clear and grub site | 2026-06-11 A → 2026-04-06 A (-66d) | 2026-06-16 A → 2026-04-08 A (-69d) | 4d → 3d |  |  |  | constraint none → start no earlier than 2026-04-06; baseline start 2026-06-01 → 2026-03-19; baseline finish 2026-06-03 → 2026-03-23 |
| 25 | Stone site access and temporary parking area | 2026-06-17 A → 2026-04-13 A (-65d) | 2026-06-18 A → 2026-04-14 A (-65d) |  |  |  |  | constraint none → start no earlier than 2026-04-13; baseline start 2026-06-04 → 2026-03-24; baseline finish 2026-06-05 → 2026-03-25 |
| 26 | Rough grade site (cut and fill) | 2026-06-19 A → 2026-04-15 A (-65d) | 2026-06-25 A → 2026-04-21 A (-65d) |  |  |  |  | baseline start 2026-06-08 → 2026-03-26; baseline finish 2026-06-12 → 2026-04-01 |
| 27 | Install storm drainage | 2026-06-26 A → 2026-04-22 A (-65d) | 2026-08-04 A → 2026-05-19 A (-77d) | 5.5w → 4w |  |  |  | baseline start 2026-06-15 → 2026-04-02; baseline finish 2026-06-26 → 2026-04-15 |
| 28 | Install exterior fire line and building fire riser | 2026-06-26 A → 2026-04-22 A (-65d) | 2026-07-09 A → 2026-06-19 A (-20d) | 2w → 8.6w |  |  |  | baseline start 2026-06-15 → 2026-04-02; baseline finish 2026-06-26 → 2026-04-15 |
| 29 | Perform final site grading | 2026-08-04 A → 2026-06-22 A (-43d) | 2026-08-18 → 2026-07-03 A (-46d) |  | 25% → 100% | 0d → none |  | baseline start 2026-06-29 → 2026-04-16; baseline finish 2026-07-10 → 2026-04-29 |
| 30 | Erect building batter boards and layout building | 2026-08-18 → 2026-07-06 A (-43d) | 2026-08-25 → 2026-07-31 A (-25d) | 1w → 4w | 0% → 100% | 0d → none |  | baseline start 2026-07-13 → 2026-04-30; baseline finish 2026-07-17 → 2026-05-06 |
| 31 | **Foundations** | 2026-08-25 → 2026-08-03 A (-22d) | 2026-10-07 → 2026-12-08 (+62d) | 31.12d → 92d | 0% → 28% | 0d → 255d |  | baseline start 2026-07-20 → 2026-05-07; baseline finish 2026-09-10 → 2026-07-08 |
| 32 | Excavate foundations | 2026-08-25 → 2026-08-03 A (-22d) | 2026-08-28 → 2026-08-07 A (-21d) | 2.67ed → 1w | 0% → 100% | 0d → none |  | baseline start 2026-07-20 → 2026-05-07; baseline finish 2026-07-31 → 2026-05-20 |
| 33 | Excavate elevator pit | 2026-08-28 → 2026-08-10 A (-18d) | 2026-08-31 → 2026-08-28 (-3d) | 2d → 15d | 0% → 93% | 155d → 306d |  | constraint none → start no earlier than 2026-08-10; baseline start 2026-08-03 → 2026-05-21; baseline finish 2026-08-04 → 2026-05-22 |
| 34 | Form column piers and spread foundations | 2026-08-28 → 2026-08-17 A (-11d) | 2026-09-02 → 2026-09-18 (+16d) | 4d → 25d | 0% → 36% | 0d → 29d |  | constraint none → start no earlier than 2026-08-17; baseline start 2026-08-03 → 2026-05-21; baseline finish 2026-08-06 → 2026-05-26 |
| 35 | Rough-in electric and plumbing in elevator | 2026-09-01 → 2026-08-31 (-1d) | 2026-09-04 → 2026-09-03 (-1d) |  |  | 155d → 306d |  | baseline start 2026-08-05 → 2026-05-25; baseline finish 2026-08-10 → 2026-05-28 |
| 36 | Form elevator pit walls | 2026-09-09 → 2026-09-04 (-5d) | 2026-09-14 → 2026-09-09 (-5d) |  |  | 155d → 306d |  | baseline start 2026-08-13 → 2026-06-02; baseline finish 2026-08-18 → 2026-06-05 |
| 37 | Set reinforcing and anchor bolts | 2026-09-03 → 2026-09-21 (+18d) | 2026-09-08 → 2026-09-24 (+16d) |  |  | 0d → 29d |  | baseline start 2026-08-07 → 2026-05-27; baseline finish 2026-08-12 → 2026-06-01 |
| 38 | Pour column piers and foundations | 2026-09-09 → 2026-09-25 (+16d) | 2026-09-15 → 2026-10-23 (+38d) | 5d → 21d |  | 0d → 29d |  | baseline start 2026-08-13 → 2026-06-02; baseline finish 2026-08-19 → 2026-06-08 |
| 39 | Pour concrete elevator walls | 2026-09-16 → 2026-09-10 (-6d) | 2026-09-16 → 2026-09-10 (-6d) |  |  | 155d → 306d |  | baseline start 2026-08-20 → 2026-06-09; baseline finish 2026-08-20 → 2026-06-09 |
| 40 | Cure elevator wall concrete | 2026-09-17 → 2026-11-23 (+67d) | 2026-09-30 → 2026-12-01 (+62d) |  |  | 155d → 255d | 39 → 39, 47 | baseline start 2026-08-21 → 2026-06-23; baseline finish 2026-09-03 → 2026-07-01 |
| 41 | Cure piers and foundations | 2026-09-16 → 2026-10-26 (+40d) | 2026-09-24 → 2026-11-03 (+40d) |  |  | 0d → 29d |  | baseline start 2026-08-20 → 2026-06-09; baseline finish 2026-08-28 → 2026-06-17 |
| 42 | Strip wall forms | 2026-10-01 → 2026-12-02 (+62d) | 2026-10-01 → 2026-12-02 (+62d) |  |  | 155d → 255d |  | baseline start 2026-09-04 → 2026-07-02; baseline finish 2026-09-04 → 2026-07-02 |
| 43 | Strip column piers and foundation forms | 2026-09-25 → 2026-11-04 (+40d) | 2026-09-29 → 2026-11-06 (+38d) |  |  | 0d → 29d |  | baseline start 2026-08-31 → 2026-06-18; baseline finish 2026-09-02 → 2026-06-22 |
| 44 | Install pneumatic tube in elevator pit | 2026-10-02 → 2026-12-03 (+62d) | 2026-10-06 → 2026-12-07 (+62d) |  |  | 155d → 255d |  | baseline start 2026-09-07 → 2026-07-03; baseline finish 2026-09-09 → 2026-07-07 |
| 45 | Prepare and pour concrete floor in elevator pit | 2026-10-07 → 2026-12-08 (+62d) | 2026-10-07 → 2026-12-08 (+62d) |  |  | 155d → 255d |  | baseline start 2026-09-10 → 2026-07-08; baseline finish 2026-09-10 → 2026-07-08 |
| 46 | **Steel Erection** | 2026-09-29 → 2026-11-09 (+41d) | 2026-10-16 → 2027-01-19 (+95d) | 12d → 52d |  | 0d → 29d |  | baseline start 2026-09-03 → 2026-06-23; baseline finish 2026-11-11 → 2026-08-31 |
| 47 | Erect steel columns, beams and joist - 1st and 2nd floors | 2026-09-29 → 2026-11-09 (+41d) | 2026-10-03 → 2026-11-20 (+48d) |  |  | 0d → 29d |  | baseline start 2026-09-03 → 2026-06-23; baseline finish 2026-09-16 → 2026-07-06 |
| 48 | Erect steel columns, beams and joist - 3rd floor and roof | 2026-10-03 → 2026-11-23 (+51d) | 2026-10-06 → 2026-12-15 (+70d) | 2w → 3.4w |  | 0d → 29d |  | baseline start 2026-09-17 → 2026-07-07; baseline finish 2026-09-30 → 2026-07-20 |
| 49 | Install miscellaneous iron and bracing - 1st and 2nd floors | 2026-10-09 → 2026-11-23 (+45d) | 2026-10-16 → 2026-12-29 (+74d) | 2w → 5.4w |  | 144d → 202d |  | baseline start 2026-10-29 → 2026-08-18; baseline finish 2026-11-11 → 2026-08-31 |
| 50 | Install miscellaneous iron and bracing - 3rd floor and roof | 2026-10-06 → 2026-12-16 (+71d) | 2026-10-09 → 2026-12-29 (+81d) |  |  | 0d → 29d |  | baseline start 2026-10-01 → 2026-07-21; baseline finish 2026-10-14 → 2026-08-03 |
| 51 | Install stairs and miscellaneous iron railing | 2026-10-09 → 2026-12-30 (+82d) | 2026-10-13 → 2027-01-12 (+91d) |  |  | 0d → 29d |  | baseline start 2026-10-15 → 2026-08-04; baseline finish 2026-10-28 → 2026-08-17 |
| 52 | Touch-up paint on steel | 2026-10-13 → 2027-01-13 (+92d) | 2026-10-14 → 2027-01-19 (+97d) |  |  | 0d → 29d |  | baseline start 2026-10-29 → 2026-08-18; baseline finish 2026-11-04 → 2026-08-24 |
| 53 | **Form and Pour Concrete - Floors and Roof** | 2026-10-05 → 2026-12-16 (+72d) | 2026-12-25 → 2027-04-15 (+111d) | 60d → 87d |  | 8d → 54d |  | baseline start 2026-09-17 → 2026-07-07; baseline finish 2027-01-15 → 2026-11-04 |
| 54 | Form 2nd floor including all floor openings | 2026-10-15 → 2027-01-20 (+97d) | 2026-10-21 → 2027-02-11 (+113d) | 5d → 17d |  | 0d → 29d |  | baseline start 2026-11-05 → 2026-08-25; baseline finish 2026-11-11 → 2026-08-31 |
| 55 | Install rebar and in-floor utilities (including mechanical, electrical, plumbing) | 2026-10-05 → 2026-12-16 (+72d) | 2026-10-09 → 2026-12-22 (+74d) |  |  | 8d → 66d | 47 → 47, 48 | baseline start 2026-09-17 → 2026-07-07; baseline finish 2026-09-23 → 2026-07-13 |
| 56 | Pour 2nd floor slab | 2026-10-22 → 2027-02-12 (+113d) | 2026-10-27 → 2027-02-17 (+113d) |  |  | 0d → 29d |  | baseline start 2026-11-12 → 2026-09-01; baseline finish 2026-11-17 → 2026-09-04 |
| 57 | Cure 2nd floor slab | 2026-10-28 → 2027-02-18 (+113d) | 2026-11-05 → 2027-02-26 (+113d) |  |  | 0d → 29d |  | baseline start 2026-11-18 → 2026-09-07; baseline finish 2026-11-26 → 2026-09-15 |
| 58 | Strip forms from 2nd floor slab | 2026-11-13 → 2027-03-01 (+108d) | 2026-11-16 → 2027-03-02 (+106d) |  |  | 54d → 134d |  | baseline start 2026-12-04 → 2026-09-23; baseline finish 2026-12-07 → 2026-09-24 |
| 59 | Form 3rd floor including all floor openings | 2026-11-06 → 2027-03-01 (+115d) | 2026-11-12 → 2027-03-05 (+113d) |  |  | 0d → 29d |  | baseline start 2026-11-27 → 2026-09-16; baseline finish 2026-12-03 → 2026-09-22 |
| 60 | Install rebar and in-floor utilities (including mechanical, electrical, plumbing) | 2026-11-06 → 2027-03-01 (+115d) | 2026-11-12 → 2027-03-05 (+113d) |  |  | 0d → 29d |  | baseline start 2026-11-27 → 2026-09-16; baseline finish 2026-12-03 → 2026-09-22 |
| 61 | Pour 3rd floor slab | 2026-11-13 → 2027-03-08 (+115d) | 2026-11-18 → 2027-03-11 (+113d) |  |  | 0d → 29d |  | baseline start 2026-12-04 → 2026-09-23; baseline finish 2026-12-09 → 2026-09-28 |
| 62 | Cure 3rd floor slab | 2026-11-19 → 2027-03-12 (+113d) | 2026-11-27 → 2027-03-22 (+115d) |  |  | 0d → 29d |  | baseline start 2026-12-10 → 2026-09-29; baseline finish 2026-12-18 → 2026-10-07 |
| 63 | Strip forms from 3rd floor slab | 2026-12-07 → 2027-03-23 (+106d) | 2026-12-08 → 2027-03-24 (+106d) |  |  | 11d → 45d |  | baseline start 2026-12-28 → 2026-10-15; baseline finish 2026-12-29 → 2026-10-16 |
| 64 | Form roof slab including all floor openings | 2026-11-30 → 2027-03-23 (+113d) | 2026-12-04 → 2027-03-29 (+115d) |  |  | 0d → 29d |  | baseline start 2026-12-21 → 2026-10-08; baseline finish 2026-12-25 → 2026-10-14 |
| 65 | Install rebar and in-floor utilities (including mechanical, electrical, plumbing) | 2026-11-30 → 2027-03-23 (+113d) | 2026-12-04 → 2027-03-29 (+115d) |  |  | 0d → 29d |  | baseline start 2026-12-21 → 2026-10-08; baseline finish 2026-12-25 → 2026-10-14 |
| 66 | Pour roof slab | 2026-12-07 → 2027-03-30 (+113d) | 2026-12-10 → 2027-04-02 (+113d) |  |  | 0d → 29d |  | baseline start 2026-12-28 → 2026-10-15; baseline finish 2026-12-31 → 2026-10-20 |
| 67 | Cure roof slab | 2026-12-11 → 2027-04-05 (+115d) | 2026-12-21 → 2027-04-13 (+113d) |  |  | 0d → 29d |  | baseline start 2027-01-01 → 2026-10-21; baseline finish 2027-01-11 → 2026-10-29 |
| 68 | Strip forms from roof slab | 2026-12-22 → 2027-04-14 (+113d) | 2026-12-23 → 2027-04-15 (+113d) |  |  | 0d → 29d |  | baseline start 2027-01-12 → 2026-10-30; baseline finish 2027-01-13 → 2026-11-02 |
| 69 | Form 1st floor | 2026-11-17 → 2027-03-03 (+106d) | 2026-11-20 → 2027-03-08 (+108d) |  |  | 59d → 135d |  | baseline start 2026-12-08 → 2026-09-25; baseline finish 2026-12-11 → 2026-09-30 |
| 70 | Install electrical underground | 2026-11-17 → 2027-03-03 (+106d) | 2026-11-23 → 2027-03-09 (+106d) |  |  | 58d → 134d |  | baseline start 2026-12-08 → 2026-10-01; baseline finish 2026-12-14 → 2026-10-07 |

| ID | Task | Start | Finish | Duration | Total float | Predecessors | Other |
| --- | --- | --- | --- | --- | --- | --- | --- |
| 71 | Install plumbing underground | 2026-11-17 → 2027-03-03 (+106d) | 2026-11-23 → 2027-03-09 (+106d) |  | 58d → 134d |  | baseline start 2026-12-08 → 2026-10-01; baseline finish 2026-12-14 → 2026-10-07 |
| 72 | Install rebar and in-floor utilities | 2026-11-17 → 2027-03-03 (+106d) | 2026-11-27 → 2027-03-08 (+101d) | 8d → 4d | 54d → 135d |  | baseline start 2026-12-08 → 2026-09-25; baseline finish 2026-12-18 → 2026-09-30 |
| 73 | Pour 1st floor slab | 2026-11-30 → 2027-03-10 (+100d) | 2026-12-03 → 2027-03-15 (+102d) |  | 54d → 134d |  | baseline start 2026-12-21 → 2026-10-08; baseline finish 2026-12-24 → 2026-10-13 |
| 74 | Cure 1st floor slab | 2026-12-04 → 2027-03-16 (+102d) | 2026-12-16 → 2027-03-24 (+98d) |  | 54d → 134d |  | baseline start 2026-12-25 → 2026-10-19; baseline finish 2027-01-06 → 2026-10-27 |
| 75 | Strip forms from 1st floor slab | 2026-12-24 → 2027-03-25 (+91d) | 2026-12-25 → 2027-03-26 (+91d) |  | 54d → 134d |  | baseline start 2027-01-14 → 2026-11-03; baseline finish 2027-01-15 → 2026-11-04 |
| 76 | **Carpentry Work** | 2026-12-24 → 2027-04-16 (+113d) | 2027-01-13 → 2027-05-06 (+113d) |  | 0d → 29d |  | baseline start 2027-01-14 → 2026-11-03; baseline finish 2027-02-03 → 2026-11-23 |
| 77 | Install exterior sheathing and metal studs | 2026-12-24 → 2027-04-16 (+113d) | 2027-01-13 → 2027-05-06 (+113d) |  | 0d → 29d |  | baseline start 2027-01-14 → 2026-11-03; baseline finish 2027-02-03 → 2026-11-23 |
| 78 | **Masonry Work** | 2026-10-16 → 2026-12-30 (+75d) | 2027-02-12 → 2027-06-17 (+125d) | 86d → 122d | 64d → 115d |  | baseline start 2026-11-12 → 2026-09-01; baseline finish 2027-03-18 → 2027-01-05 |
| 79 | Rough-in plumbing at toilets and masonry walls | 2026-12-28 → 2027-03-29 (+91d) | 2027-01-22 → 2027-04-23 (+91d) |  | 74d → 134d |  | baseline start 2027-01-18 → 2026-11-05; baseline finish 2027-02-12 → 2026-12-02 |
| 80 | Lay masonry at core, mechanical, and toilets | 2026-10-16 → 2026-12-30 (+75d) | 2026-10-22 → 2027-01-26 (+96d) |  | 144d → 202d |  | baseline start 2026-11-12 → 2026-09-01; baseline finish 2026-12-09 → 2026-09-28 |
| 81 | Install exterior masonry work | 2027-01-13 → 2027-05-07 (+114d) | 2027-01-22 → 2027-06-10 (+139d) |  | 0d → 29d |  | baseline start 2027-02-04 → 2026-11-24; baseline finish 2027-03-10 → 2026-12-28 |
| 82 | Install roof drains | 2027-01-28 → 2027-06-11 (+134d) | 2027-01-29 → 2027-06-14 (+136d) |  | 59d → 99d |  | baseline start 2027-03-17 → 2027-01-04; baseline finish 2027-03-18 → 2027-01-05 |
| 83 | Install tile in toilet rooms | 2027-01-25 → 2027-04-26 (+91d) | 2027-02-05 → 2027-05-07 (+91d) |  | 74d → 134d |  | baseline start 2027-02-15 → 2026-12-03; baseline finish 2027-02-26 → 2026-12-16 |
| 84 | Clean masonry | 2027-01-22 → 2027-06-11 (+140d) | 2027-01-23 → 2027-06-17 (+145d) |  | 93.88d → 115d |  | baseline start 2027-03-11 → 2026-12-29; baseline finish 2027-03-17 → 2027-01-04 |
| 85 | Clean toilet room tile | 2027-02-08 → 2027-05-10 (+91d) | 2027-02-12 → 2027-05-14 (+91d) |  | 74d → 134d |  | baseline start 2027-03-01 → 2026-12-17; baseline finish 2027-03-05 → 2026-12-23 |
| 86 | **Roofing** | 2027-01-22 → 2027-06-11 (+140d) | 2027-03-09 → 2027-07-23 (+136d) | 33d → 31d | 59d → 97d |  | baseline start 2027-03-11 → 2026-12-29; baseline finish 2027-04-26 → 2027-02-11 |
| 87 | Install flashing at parapet walls | 2027-01-22 → 2027-06-11 (+140d) | 2027-01-27 → 2027-06-16 (+140d) |  | 61d → 97d |  | baseline start 2027-03-11 → 2026-12-29; baseline finish 2027-03-16 → 2027-01-01 |
| 88 | Pour lightweight concrete roof fill | 2027-02-01 → 2027-06-17 (+136d) | 2027-02-02 → 2027-06-18 (+136d) |  | 59d → 97d |  | baseline start 2027-03-19 → 2027-01-06; baseline finish 2027-03-22 → 2027-01-07 |
| 89 | Install seamless roofing material | 2027-02-10 → 2027-06-28 (+138d) | 2027-02-16 → 2027-07-02 (+136d) |  | 59d → 97d |  | baseline start 2027-03-30 → 2027-01-15; baseline finish 2027-04-05 → 2027-01-21 |
| 90 | Spread stone ballast on seamless roof | 2027-02-17 → 2027-07-05 (+138d) | 2027-02-23 → 2027-07-09 (+136d) |  | 59d → 97d |  | baseline start 2027-04-06 → 2027-01-22; baseline finish 2027-04-12 → 2027-01-28 |
| 91 | Set rooftop equipment | 2027-02-24 → 2027-07-12 (+138d) | 2027-03-09 → 2027-07-23 (+136d) |  | 59d → 97d |  | baseline start 2027-04-13 → 2027-01-29; baseline finish 2027-04-26 → 2027-02-11 |
| 92 | **Window wall and store front closures** | 2027-01-22 → 2027-06-11 (+140d) | 2027-05-06 → 2027-09-02 (+119d) | 75d → 60d | 0d → 29d |  | baseline start 2027-03-11 → 2026-12-29; baseline finish 2027-06-23 → 2027-04-12 |
| 93 | Install window wall aluminum and glass | 2027-01-22 → 2027-06-11 (+140d) | 2027-02-25 → 2027-07-15 (+140d) |  | 0d → 29d |  | baseline start 2027-03-11 → 2026-12-29; baseline finish 2027-04-14 → 2027-02-01 |
| 94 | Install interior stud walls and drywall | 2027-02-26 → 2027-07-16 (+140d) | 2027-04-01 → 2027-08-19 (+140d) |  | 0d → 29d |  | baseline start 2027-04-15 → 2027-02-02; baseline finish 2027-05-19 → 2027-03-08 |
| 95 | Install interior doors and hardware | 2027-04-23 → 2027-08-20 (+119d) | 2027-05-06 → 2027-09-02 (+119d) |  | 0d → 34d |  | baseline start 2027-06-10 → 2027-03-30; baseline finish 2027-06-23 → 2027-04-12 |
| 96 | Install store front doors and hardware | 2027-02-26 → 2027-06-11 (+105d) | 2027-03-18 → 2027-07-01 (+105d) |  | 20d → 64d |  | baseline start 2027-04-15 → 2027-02-02; baseline finish 2027-05-05 → 2027-02-22 |
| 97 | **Building Finishes** | 2027-02-26 → 2027-07-16 (+140d) | 2027-07-01 → 2027-12-03 (+155d) | 90d → 101d | 7d → 37d |  | baseline start 2027-04-15 → 2027-02-02; baseline finish 2027-08-18 → 2027-06-07 |
| 98 | Install millwork and wood trim | 2027-04-02 → 2027-08-20 (+140d) | 2027-04-22 → 2027-09-09 (+140d) |  | 10d → 29d |  | baseline start 2027-05-20 → 2027-03-09; baseline finish 2027-06-09 → 2027-03-29 |
| 99 | Paint walls and woodwork | 2027-05-07 → 2027-09-10 (+126d) | 2027-06-03 → 2027-10-07 (+126d) |  | 0d → 29d |  | baseline start 2027-06-24 → 2027-04-13; baseline finish 2027-07-21 → 2027-05-10 |
| 100 | Install conduit at ceiling plenum space | 2027-02-26 → 2027-07-16 (+140d) | 2027-03-18 → 2027-08-05 (+140d) |  | 15d → 60d |  | baseline start 2027-04-15 → 2027-02-02; baseline finish 2027-05-05 → 2027-02-22 |
| 101 | Install duct in ceiling plenum space | 2027-04-02 → 2027-08-20 (+140d) | 2027-04-22 → 2027-09-09 (+140d) |  | 10d → 55d |  | baseline start 2027-05-20 → 2027-03-09; baseline finish 2027-06-09 → 2027-03-29 |
| 102 | Install ceiling grid | 2027-04-23 → 2027-09-10 (+140d) | 2027-05-06 → 2027-09-23 (+140d) |  | 10d → 55d |  | baseline start 2027-06-10 → 2027-03-30; baseline finish 2027-06-23 → 2027-04-12 |
| 103 | Install ceiling tile | 2027-05-07 → 2027-09-24 (+140d) | 2027-05-20 → 2027-10-07 (+140d) |  | 30d → 55d |  | baseline start 2027-06-24 → 2027-04-13; baseline finish 2027-07-07 → 2027-04-26 |
| 104 | Hang wallpaper | 2027-06-04 → 2027-09-24 (+112d) | 2027-06-17 → 2027-10-07 (+112d) |  | 10d → 55d |  | baseline start 2027-07-22 → 2027-05-11; baseline finish 2027-08-04 → 2027-05-24 |
| 105 | Install building carpet | 2027-06-04 → 2027-10-08 (+126d) | 2027-07-01 → 2027-12-03 (+155d) | 4w → 8.2w | 0d → 37d |  | baseline start 2027-07-22 → 2027-05-11; baseline finish 2027-08-18 → 2027-06-07 |
| 106 | Install hardware and accessories | 2027-06-04 → 2027-10-08 (+126d) | 2027-06-24 → 2027-11-12 (+141d) | 3w → 5.2w | 5d → 29d |  | baseline start 2027-07-22 → 2027-05-11; baseline finish 2027-08-11 → 2027-05-31 |
| 107 | Complete interior and exterior sod and plantings | 2027-06-04 → 2027-10-08 (+126d) | 2027-06-17 → 2027-10-21 (+126d) |  | 7d → 42d |  | baseline start 2027-07-22 → 2027-05-11; baseline finish 2027-08-04 → 2027-05-24 |
| 108 | Pave, curb, and stripe parking lot | 2027-06-18 → 2027-10-22 (+126d) | 2027-07-01 → 2027-11-04 (+126d) |  | 7d → 42d |  | baseline start 2027-08-05 → 2027-05-25; baseline finish 2027-08-18 → 2027-06-07 |
| 109 | **Elevators** | 2026-10-23 → 2027-01-27 (+96d) | 2026-12-17 → 2027-03-23 (+96d) |  | 144d → 220d |  | baseline start 2026-12-10 → 2026-09-29; baseline finish 2027-02-03 → 2026-11-23 |
| 110 | Set elevator equipment in shafts | 2026-10-23 → 2027-01-27 (+96d) | 2026-11-19 → 2027-02-23 (+96d) |  | 144d → 220d |  | baseline start 2026-12-10 → 2026-09-29; baseline finish 2027-01-06 → 2026-10-26 |
| 111 | Set equipment in mechanical room | 2026-11-20 → 2027-02-24 (+96d) | 2026-12-03 → 2027-03-09 (+96d) |  | 144d → 220d |  | baseline start 2027-01-07 → 2026-10-27; baseline finish 2027-01-20 → 2026-11-09 |
| 112 | Test and align doors and equipment | 2026-12-04 → 2027-03-10 (+96d) | 2026-12-17 → 2027-03-23 (+96d) |  | 144d → 220d |  | baseline start 2027-01-21 → 2026-11-10; baseline finish 2027-02-03 → 2026-11-23 |
| 113 | **Plumbing** | 2027-01-25 → 2027-06-18 (+144d) | 2027-06-17 → 2027-10-21 (+126d) | 104d → 90d | 10d → 45d |  | baseline start 2027-03-18 → 2027-01-05; baseline finish 2027-08-04 → 2027-05-24 |
| 114 | Rough-in plumbing in drywall walls | 2027-02-26 → 2027-07-16 (+140d) | 2027-03-25 → 2027-08-12 (+140d) |  | 45d → 70d |  | baseline start 2027-04-15 → 2027-02-02; baseline finish 2027-05-12 → 2027-03-01 |
| 115 | Tie-in fire line riser and set valves | 2027-01-25 → 2027-06-18 (+144d) | 2027-02-05 → 2027-07-01 (+146d) |  | 94d → 115d |  | baseline start 2027-03-18 → 2027-01-05; baseline finish 2027-03-31 → 2027-01-18 |
| 116 | Set plumbing fixtures and trim | 2027-03-26 → 2027-08-13 (+140d) | 2027-04-15 → 2027-09-02 (+140d) |  | 45d → 70d |  | baseline start 2027-05-13 → 2027-03-02; baseline finish 2027-06-02 → 2027-03-22 |
| 117 | Flush, test, and clean piping and fixtures | 2027-06-04 → 2027-10-08 (+126d) | 2027-06-17 → 2027-10-21 (+126d) |  | 10d → 45d |  | baseline start 2027-07-22 → 2027-05-11; baseline finish 2027-08-04 → 2027-05-24 |
| 118 | **Electrical** | 2026-12-28 → 2027-03-29 (+91d) | 2027-06-14 → 2027-10-07 (+115d) | 121d → 139d | 17d → 55d |  | baseline start 2027-01-18 → 2026-11-05; baseline finish 2027-07-30 → 2027-05-19 |
| 119 | Rough-in electrical in masonry walls | 2026-12-28 → 2027-03-29 (+91d) | 2027-01-22 → 2027-04-23 (+91d) |  | 54d → 134d |  | baseline start 2027-01-18 → 2026-11-05; baseline finish 2027-02-12 → 2026-12-02 |
| 120 | Rough-in electrical in drywall walls | 2027-03-19 → 2027-07-16 (+119d) | 2027-04-15 → 2027-08-12 (+119d) |  | 30d → 70d |  | baseline start 2027-05-06 → 2027-02-23; baseline finish 2027-06-02 → 2027-03-22 |
| 121 | Pull wire in conduit and set area transformers | 2027-04-16 → 2027-08-06 (+112d) | 2027-05-06 → 2027-08-26 (+112d) |  | 15d → 60d |  | baseline start 2027-06-03 → 2027-03-23; baseline finish 2027-06-23 → 2027-04-12 |
| 122 | Install and terminate electrical devices | 2027-05-07 → 2027-08-27 (+112d) | 2027-05-27 → 2027-09-16 (+112d) |  | 15d → 60d |  | baseline start 2027-06-24 → 2027-04-13; baseline finish 2027-07-14 → 2027-05-03 |
| 123 | Make electrical terminations for HVAC equipment | 2027-06-11 → 2027-08-27 (+77d) | 2027-06-14 → 2027-08-30 (+77d) |  | 17d → 73d |  | baseline start 2027-07-29 → 2027-05-18; baseline finish 2027-07-30 → 2027-05-19 |
| 124 | Install light fixtures - test and clean | 2027-05-28 → 2027-09-24 (+119d) | 2027-06-10 → 2027-10-07 (+119d) |  | 15d → 55d |  | baseline start 2027-07-15 → 2027-05-04; baseline finish 2027-07-28 → 2027-05-17 |
| 125 | **Heating and Ventilating - AC** | 2026-10-23 → 2027-01-27 (+96d) | 2027-07-12 → 2028-01-06 (+178d) | 187d → 247d | 17d → 13d |  | baseline start 2026-12-10 → 2026-09-29; baseline finish 2027-08-27 → 2027-06-16 |
| 126 | Set equipment in mechanical room | 2026-10-23 → 2027-01-27 (+96d) | 2026-11-05 → 2027-02-09 (+96d) |  | 151d → 202d |  | baseline start 2026-12-10 → 2026-09-29; baseline finish 2026-12-23 → 2026-10-12 |
| 127 | Rough-in mechanical in masonry walls | 2026-12-28 → 2027-03-29 (+91d) | 2027-01-22 → 2027-04-23 (+91d) |  | 95d → 149d |  | baseline start 2027-01-18 → 2026-11-05; baseline finish 2027-02-12 → 2026-12-02 |
| 128 | Rough-in mechanical in drywall walls | 2027-03-31 → 2027-07-16 (+107d) | 2027-05-04 → 2027-07-29 (+86d) |  | 66d → 128d |  | baseline start 2027-05-18 → 2027-03-30; baseline finish 2027-06-21 → 2027-04-12 |
| 129 | Install duct in building chase | 2027-03-10 → 2027-07-16 (+128d) | 2027-03-30 → 2027-08-05 (+128d) |  | 71d → 90d |  | baseline start 2027-04-27 → 2027-02-12; baseline finish 2027-05-17 → 2027-03-04 |
| 130 | Set HVAC trim and test and balance system | 2027-06-15 → 2027-12-10 (+178d) | 2027-07-12 → 2028-01-06 (+178d) |  | 17d → 0d |  | constraint none → must start on 2027-12-10; baseline start 2027-08-02 → 2027-05-20; baseline finish 2027-08-27 → 2027-08-15 |
| 131 | **Final Clean-up and Occupancy** | 2027-04-02 → 2027-08-20 (+140d) | 2027-07-08 → 2027-11-19 (+134d) | 70d → 66d | 19d → 47d |  | baseline start 2027-05-20 → 2027-03-09; baseline finish 2027-08-25 → 2027-06-14 |
| 132 | Install hard tile flooring in common areas | 2027-04-02 → 2027-08-20 (+140d) | 2027-04-08 → 2027-08-26 (+140d) |  | 56d → 81d |  | baseline start 2027-05-20 → 2027-03-09; baseline finish 2027-05-26 → 2027-03-15 |
| 133 | Clean hard tile floors | 2027-04-09 → 2027-08-27 (+140d) | 2027-04-14 → 2027-09-01 (+140d) |  | 56d → 81d |  | baseline start 2027-05-27 → 2027-03-16; baseline finish 2027-06-01 → 2027-03-19 |
| 134 | Remove debris from building and do final clean-up | 2027-07-02 → 2027-11-15 (+136d) | 2027-07-07 → 2027-11-18 (+134d) |  | 0d → 29d | 105, 104, 106, 107, 117, 124, 103, 133 → 104, 106, 107, 117, 124, 103, 133 | baseline start 2027-08-19 → 2027-06-08; baseline finish 2027-08-24 → 2027-06-11 |
| 135 | Substantial completion date | 2027-07-08 → 2027-11-19 (+134d) | 2027-07-08 → 2027-11-19 (+134d) |  | 19d → 47d |  | baseline start 2027-08-25 → 2027-06-14; baseline finish 2027-08-25 → 2027-06-14 |
| 136 | **Complete Final Inspections** | 2027-07-08 → 2027-11-19 (+134d) | 2027-07-15 → 2027-11-26 (+134d) |  | 0d → 29d |  | baseline start 2027-08-25 → 2027-06-14; baseline finish 2027-09-01 → 2027-06-21 |
| 137 | Complete elevator inspection and certification | 2027-07-08 → 2027-11-19 (+134d) | 2027-07-12 → 2027-11-23 (+134d) |  | 0d → 29d | 134, 112 → 134 | baseline start 2027-08-25 → 2027-06-14; baseline finish 2027-08-27 → 2027-06-16 |
| 138 | Perform architect's inspection | 2027-07-13 → 2027-11-24 (+134d) | 2027-07-13 → 2027-11-24 (+134d) |  | 0d → 29d |  | baseline start 2027-08-30 → 2027-06-17; baseline finish 2027-08-30 → 2027-06-17 |
| 139 | Perform local building agency inspection | 2027-07-14 → 2027-11-25 (+134d) | 2027-07-14 → 2027-11-25 (+134d) |  | 0d → 29d |  | baseline start 2027-08-31 → 2027-06-18; baseline finish 2027-08-31 → 2027-06-18 |
| 140 | Perform Fire Marshal's inspection | 2027-07-15 → 2027-11-26 (+134d) | 2027-07-15 → 2027-11-26 (+134d) |  | 0d → 29d |  | baseline start 2027-09-01 → 2027-06-21; baseline finish 2027-09-01 → 2027-06-21 |

| ID | Task | Start | Finish | Total float | Predecessors | Other |
| --- | --- | --- | --- | --- | --- | --- |
| 141 | Complete punch list items from all inspections | 2027-07-16 → 2028-01-07 (+175d) | 2027-07-29 → 2028-01-20 (+175d) |  | 140 → 140, 130 | baseline start 2027-09-02 → 2027-06-22; baseline finish 2027-09-15 → 2027-07-05 |
| 142 | Obtain certificate of occupancy | 2027-07-30 → 2028-01-21 (+175d) | 2027-08-02 → 2028-01-24 (+175d) | 1d → 0d |  | baseline start 2027-09-16 → 2027-07-06; baseline finish 2027-09-17 → 2027-07-07 |
| 143 | Issue final completion documents including warranties | 2027-08-03 → 2028-01-21 (+171d) | 2027-08-03 → 2028-01-21 (+171d) | 0d → 1d |  | baseline start 2027-09-20 → 2027-07-08; baseline finish 2027-09-20 → 2027-07-08 |
| 144 | Issue final request for payment | 2027-08-04 → 2028-01-25 (+174d) | 2027-08-04 → 2028-01-25 (+174d) |  |  | baseline start 2027-09-21 → 2027-07-09; baseline finish 2027-09-21 → 2027-07-09 |
