# TP4 - Data Center Fit-Out

How a schedule from MS Project XML changed from version to version. A marks actual dates.

## Version 1 (data date 2026-02-27, saved 2026-07-16, file TP4_DataCenter_v2.xml)

Note of the change: Add files via upload (#372)

| ID | Task | Duration | Start | Finish | Predecessors | Complete |
| --- | --- | --- | --- | --- | --- | --- |
| 1 | Notice to proceed | 0d | 2026-01-05 A | 2026-01-05 A |  | 100% |
| 2 | Design & permits | 15d | 2026-01-05 A | 2026-01-23 A | 1 | 100% |
| 3 | Demolition & shell prep | 10d | 2026-01-26 A | 2026-02-06 A | 2 | 100% |
| 4 | Electrical rough-in | 20d | 2026-02-09 A | 2026-03-06 | 3 | 10% |
| 5 | Mechanical / HVAC rough-in | 25d | 2026-02-09 A | 2026-03-13 | 3 | 10% |
| 6 | Fire suppression | 15d | 2026-02-09 A | 2026-02-27 A | 3 | 100% |
| 7 | Generator & switchgear procurement | 20d | 2026-02-02 A | 2026-02-27 | 2 | 25% |
| 8 | Raised floor & containment | 15d | 2026-03-16 | 2026-04-03 | 4, 5 |  |
| 9 | Power distribution units | 10d | 2026-03-09 | 2026-03-20 | 4 |  |
| 10 | UPS & battery installation | 15d | 2026-03-23 | 2026-04-10 | 9, 7 |  |
| 11 | Network cabling | 20d | 2026-04-06 | 2026-05-01 | 8 |  |
| 12 | CRAC units set & pipe | 20d | 2026-04-06 | 2026-05-01 | 5, 8 |  |
| 13 | Commissioning L1-L3 | 15d | 2026-05-04 | 2026-05-22 | 6, 10, 11, 12 |  |
| 14 | Integrated systems test | 10d | 2026-05-25 | 2026-06-05 | 13 |  |
| 15 | Substantial completion | 0d | 2026-06-05 | 2026-06-05 | 14 |  |

## Version 2 (data date 2026-04-30, saved 2026-07-16, file TP4_DataCenter_v4.xml)

Last finish 2026-06-05 → 2026-06-26 (+21d). Complete tasks 4 → 8.

Changed:

| ID | Task | Start | Finish | Duration | Complete | Other |
| --- | --- | --- | --- | --- | --- | --- |
| 4 | Electrical rough-in |  | 2026-03-06 → 2026-03-10 A (+4d) | 20d → 22d | 10% → 100% |  |
| 5 | Mechanical / HVAC rough-in |  | 2026-03-13 → 2026-04-03 A (+21d) | 25d → 40d | 10% → 100% |  |
| 7 | Generator & switchgear procurement | 2026-02-02 A → 2026-01-26 (-7d) | 2026-02-27 → 2026-02-20 (-7d) |  | 25% → 0% | baseline finish 2026-02-20 → 2026-04-24 |
| 8 | Raised floor & containment | 2026-03-16 → 2026-04-06 A (+21d) | 2026-04-03 → 2026-04-24 A (+21d) |  | 0% → 100% |  |
| 9 | Power distribution units | 2026-03-09 → 2026-03-11 A (+2d) | 2026-03-20 → 2026-03-24 A (+4d) |  | 0% → 100% |  |
| 10 | UPS & battery installation | 2026-03-23 → 2026-03-25 (+2d) | 2026-04-10 → 2026-04-14 (+4d) |  |  |  |
| 11 | Network cabling | 2026-04-06 → 2026-04-27 A (+21d) | 2026-05-01 → 2026-05-22 (+21d) |  | 0% → 10% |  |
| 12 | CRAC units set & pipe | 2026-04-06 → 2026-04-27 A (+21d) | 2026-05-01 → 2026-05-22 (+21d) |  | 0% → 10% |  |
| 13 | Commissioning L1-L3 | 2026-05-04 → 2026-05-25 (+21d) | 2026-05-22 → 2026-06-12 (+21d) |  |  |  |
| 14 | Integrated systems test | 2026-05-25 → 2026-06-15 (+21d) | 2026-06-05 → 2026-06-26 (+21d) |  |  |  |
| 15 | Substantial completion | 2026-06-05 → 2026-06-26 (+21d) | 2026-06-05 → 2026-06-26 (+21d) |  |  |  |

## Version 3 (data date 2026-05-29, saved 2026-07-16, file TP4_DataCenter_v5.xml)

Note of the change: Add files via upload (#372)

Last finish 2026-06-26 → 2026-07-17 (+21d).

Changed:

| ID | Task | Start | Finish | Complete |
| --- | --- | --- | --- | --- |
| 7 | Generator & switchgear procurement | 2026-01-26 → 2026-04-27 A (+91d) | 2026-02-20 → 2026-05-22 (+91d) | 0% → 40% |
| 10 | UPS & battery installation | 2026-03-25 → 2026-05-25 (+61d) | 2026-04-14 → 2026-06-12 (+59d) |  |
| 11 | Network cabling |  |  | 10% → 50% |
| 12 | CRAC units set & pipe |  |  | 10% → 30% |
| 13 | Commissioning L1-L3 | 2026-05-25 → 2026-06-15 (+21d) | 2026-06-12 → 2026-07-03 (+21d) |  |
| 14 | Integrated systems test | 2026-06-15 → 2026-07-06 (+21d) | 2026-06-26 → 2026-07-17 (+21d) |  |
| 15 | Substantial completion | 2026-06-26 → 2026-07-17 (+21d) | 2026-06-26 → 2026-07-17 (+21d) |  |
