# Commercial Construction

How a schedule from MS Project XML changed from version to version. A marks actual dates.

## Version 1 (data date 2026-05-24, saved 2026-05-24, file Project2.mspdi.xml)

Note of the change: Schedule Manipulation Analysis Tool — full build (M1–M17; M15 .pbix pending deposit) (#55)

| ID | WBS | Task | Duration | Start | Finish | Predecessors | Complete | Total float | Constraint |
| --- | --- | --- | --- | --- | --- | --- | --- | --- | --- |
| 1 | 1 | **General Conditions** | 46d | 2026-03-02 A | 2026-05-04 A |  | 100% |  |  |
| 2 |  | Receive notice to proceed and sign contract | 3d | 2026-03-02 A | 2026-03-04 A |  | 100% |  |  |
| 3 |  | Submit bond and insurance documents | 2d | 2026-03-25 A | 2026-03-26 A | 2 | 100% |  |  |
| 4 |  | Prepare and submit project schedule | 2d | 2026-03-27 A | 2026-03-30 A | 3 | 100% |  |  |
| 5 |  | Prepare and submit schedule of values | 2d | 2026-03-31 A | 2026-04-01 A | 4 | 100% |  |  |
| 6 |  | Obtain building permits | 4d | 2026-03-05 A | 2026-03-10 A | 2 | 100% |  |  |
| 7 |  | Submit preliminary shop drawings | 4.6w | 2026-04-02 A | 2026-05-04 A | 6 | 100% |  |  |
| 8 |  | Submit monthly requests for payment | 1d | 2026-03-05 A | 2026-03-05 A | 2 | 100% |  |  |
| 9 | 2 | **Long Lead Procurement** | 76d | 2026-03-06 A | 2026-06-19 |  | 74% | 248d |  |
| 10 |  | Submit shop drawings and order long lead items - steel | 3.2w | 2026-03-06 A | 2026-03-27 A | 8 | 100% |  |  |
| 11 |  | Submit shop drawings and order long lead items - roofing | 3.8w | 2026-05-05 A | 2026-05-29 | 7 | 74% | 263d |  |
| 12 |  | Submit shop drawings and order long lead items - elevator | 2w | 2026-05-05 A | 2026-05-18 A | 7 | 100% |  |  |
| 13 |  | Submit shop drawings and order long lead items - plumbing | 1.8w | 2026-05-05 A | 2026-05-15 A | 7 | 100% |  |  |
| 14 |  | Submit shop drawings and order long lead items - electric | 2w | 2026-06-08 | 2026-06-19 | 7 |  | 93d | start no earlier than 2026-06-08 |
| 15 |  | Submit shop drawings and order long lead items - HVAC | 2w | 2026-05-05 A | 2026-05-18 A | 7 | 100% |  |  |
| 16 |  | Detail, fabricate and deliver steel | 12w | 2026-03-30 A | 2026-06-19 | 10 | 67% | 48d |  |
| 17 | 3 | **Mobilize on Site** | 17d | 2026-03-05 A | 2026-03-27 A |  | 100% |  |  |
| 18 |  | Install temporary power | 2d | 2026-03-05 A | 2026-03-06 A | 2 | 100% |  |  |
| 19 |  | Install temporary water service | 2d | 2026-03-05 A | 2026-03-06 A | 2 | 100% |  |  |
| 20 |  | Set up site office | 3d | 2026-03-09 A | 2026-03-11 A | 18, 19 | 100% |  |  |
| 21 |  | Set line and grade benchmarks | 2w | 2026-03-12 A | 2026-03-25 A | 20 | 100% |  |  |
| 22 |  | Prepare site - lay down yard and temporary fencing | 2d | 2026-03-26 A | 2026-03-27 A | 21 | 100% |  |  |
| 23 | 4 | **Site Grading and Utilities** | 70d | 2026-04-06 A | 2026-07-10 |  | 60% |  |  |
| 24 |  | Clear and grub site | 3d | 2026-04-06 A | 2026-04-08 A | 20, 22 | 100% |  | start no earlier than 2026-04-06 |
| 25 |  | Stone site access and temporary parking area | 2d | 2026-04-13 A | 2026-04-14 A | 24, 22 | 100% |  | start no earlier than 2026-04-13 |
| 26 |  | Rough grade site (cut and fill) | 1w | 2026-04-15 A | 2026-04-21 A | 25 | 100% |  |  |
| 27 |  | Install storm drainage | 4w | 2026-04-22 A | 2026-05-19 A | 26 | 100% |  |  |
| 28 |  | Install exterior fire line and building fire riser | 8.6w | 2026-04-22 A | 2026-06-19 | 26 | 53% |  |  |
| 29 |  | Perform final site grading | 2w | 2026-06-22 | 2026-07-03 | 27FF+1d, 28 |  |  |  |
| 30 |  | Erect building batter boards and layout building | 1w | 2026-07-06 | 2026-07-10 | 29 |  |  |  |
| 31 | 5 | **Foundations** | 45d | 2026-07-13 | 2026-09-11 |  |  |  |  |
| 32 |  | Excavate foundations | 2w | 2026-07-13 | 2026-07-24 | 30 |  |  |  |
| 33 |  | Excavate elevator pit | 2d | 2026-07-27 | 2026-07-28 | 30 |  | 204d |  |
| 34 |  | Form column piers and spread foundations | 4d | 2026-07-27 | 2026-07-30 | 32 |  |  |  |
| 35 |  | Rough-in electric and plumbing in elevator | 4d | 2026-07-29 | 2026-08-03 | 33 |  | 204d |  |
| 36 |  | Form elevator pit walls | 4d | 2026-08-06 | 2026-08-11 | 35 |  | 203d |  |
| 37 |  | Set reinforcing and anchor bolts | 4d | 2026-07-31 | 2026-08-05 | 34 |  |  |  |
| 38 |  | Pour column piers and foundations | 5d | 2026-08-06 | 2026-08-12 | 37 |  |  |  |
| 39 |  | Pour concrete elevator walls | 1d | 2026-08-13 | 2026-08-13 | 36 |  | 202d |  |
| 40 |  | Cure elevator wall concrete | 7d | 2026-08-27 | 2026-09-04 | 39 |  | 202d |  |
| 41 |  | Cure piers and foundations | 7d | 2026-08-13 | 2026-08-21 | 38 |  |  |  |
| 42 |  | Strip wall forms | 1d | 2026-09-07 | 2026-09-07 | 40 |  | 202d |  |
| 43 |  | Strip column piers and foundation forms | 3d | 2026-08-24 | 2026-08-26 | 41 |  |  |  |
| 44 |  | Install pneumatic tube in elevator pit | 3d | 2026-09-08 | 2026-09-10 | 42 |  | 202d |  |
| 45 |  | Prepare and pour concrete floor in elevator pit | 1d | 2026-09-11 | 2026-09-11 | 44 |  | 202d |  |
| 46 | 6 | **Steel Erection** | 50d | 2026-08-27 | 2026-11-04 |  |  |  |  |
| 47 |  | Erect steel columns, beams and joist - 1st and 2nd floors | 2w | 2026-08-27 | 2026-09-09 | 43, 16 |  |  |  |
| 48 |  | Erect steel columns, beams and joist - 3rd floor and roof | 2w | 2026-09-10 | 2026-09-23 | 47 |  |  |  |
| 49 |  | Install miscellaneous iron and bracing - 1st and 2nd floors | 2w | 2026-10-22 | 2026-11-04 | 47 |  | 144d |  |
| 50 |  | Install miscellaneous iron and bracing - 3rd floor and roof | 2w | 2026-09-24 | 2026-10-07 | 48 |  |  |  |
| 51 |  | Install stairs and miscellaneous iron railing | 2w | 2026-10-08 | 2026-10-21 | 50 |  |  |  |
| 52 |  | Touch-up paint on steel | 1w | 2026-10-22 | 2026-10-28 | 51 |  |  |  |
| 53 | 7 | **Form and Pour Concrete - Floors and Roof** | 87d | 2026-09-10 | 2027-01-08 |  |  | 35d |  |
| 54 |  | Form 2nd floor including all floor openings | 5d | 2026-10-29 | 2026-11-04 | 52, 13, 14, 15, 47 |  |  |  |
| 55 |  | Install rebar and in-floor utilities (including mechanical, electrical, plumbing) | 5d | 2026-09-10 | 2026-09-16 | 47 |  | 35d |  |
| 56 |  | Pour 2nd floor slab | 4d | 2026-11-05 | 2026-11-10 | 55, 54 |  |  |  |
| 57 |  | Cure 2nd floor slab | 7d | 2026-11-11 | 2026-11-19 | 56 |  |  |  |
| 58 |  | Strip forms from 2nd floor slab | 2d | 2026-11-27 | 2026-11-30 | 57 |  | 73d |  |
| 59 |  | Form 3rd floor including all floor openings | 5d | 2026-11-20 | 2026-11-26 | 57 |  |  |  |
| 60 |  | Install rebar and in-floor utilities (including mechanical, electrical, plumbing) | 5d | 2026-11-20 | 2026-11-26 | 57 |  |  |  |
| 61 |  | Pour 3rd floor slab | 4d | 2026-11-27 | 2026-12-02 | 60, 59 |  |  |  |
| 62 |  | Cure 3rd floor slab | 7d | 2026-12-03 | 2026-12-11 | 61 |  |  |  |
| 63 |  | Strip forms from 3rd floor slab | 2d | 2026-12-21 | 2026-12-22 | 62 |  | 11d |  |
| 64 |  | Form roof slab including all floor openings | 5d | 2026-12-14 | 2026-12-18 | 62 |  |  |  |
| 65 |  | Install rebar and in-floor utilities (including mechanical, electrical, plumbing) | 5d | 2026-12-14 | 2026-12-18 | 62 |  |  |  |
| 66 |  | Pour roof slab | 4d | 2026-12-21 | 2026-12-24 | 65, 64 |  |  |  |
| 67 |  | Cure roof slab | 7d | 2026-12-25 | 2027-01-04 | 66 |  |  |  |
| 68 |  | Strip forms from roof slab | 2d | 2027-01-05 | 2027-01-06 | 67 |  |  |  |
| 69 |  | Form 1st floor | 4d | 2026-12-01 | 2026-12-04 | 58 |  | 78d |  |
| 70 |  | Install electrical underground | 1w | 2026-12-07 | 2026-12-11 | 58 |  | 73d |  |

| ID | WBS | Task | Duration | Start | Finish | Predecessors | Total float |
| --- | --- | --- | --- | --- | --- | --- | --- |
| 71 |  | Install plumbing underground | 1w | 2026-12-07 | 2026-12-11 | 58 | 73d |
| 72 |  | Install rebar and in-floor utilities | 4d | 2026-12-01 | 2026-12-04 | 58 | 78d |
| 73 |  | Pour 1st floor slab | 4d | 2026-12-14 | 2026-12-17 | 69, 72, 70, 71 | 73d |
| 74 |  | Cure 1st floor slab | 7d | 2026-12-23 | 2026-12-31 | 73 | 73d |
| 75 |  | Strip forms from 1st floor slab | 2d | 2027-01-07 | 2027-01-08 | 74 | 73d |
| 76 | 8 | **Carpentry Work** | 15d | 2027-01-07 | 2027-01-27 |  |  |
| 77 |  | Install exterior sheathing and metal studs | 3w | 2027-01-07 | 2027-01-27 | 63, 68 |  |
| 78 | 9 | **Masonry Work** | 91d | 2026-11-05 | 2027-03-11 |  | 60d |
| 79 |  | Rough-in plumbing at toilets and masonry walls | 4w | 2027-01-11 | 2027-02-05 | 75, 13 | 93d |
| 80 |  | Lay masonry at core, mechanical, and toilets | 4w | 2026-11-05 | 2026-12-02 | 49, 50 | 144d |
| 81 |  | Install exterior masonry work | 5w | 2027-01-28 | 2027-03-03 | 77 |  |
| 82 |  | Install roof drains | 2d | 2027-03-10 | 2027-03-11 | 81 | 59d |
| 83 |  | Install tile in toilet rooms | 2w | 2027-02-08 | 2027-02-19 | 79 | 93d |
| 84 |  | Clean masonry | 1w | 2027-03-04 | 2027-03-10 | 81 | 90d |
| 85 |  | Clean toilet room tile | 1w | 2027-02-22 | 2027-02-26 | 83 | 93d |
| 86 | 10 | **Roofing** | 33d | 2027-03-04 | 2027-04-19 |  | 59d |
| 87 |  | Install flashing at parapet walls | 4d | 2027-03-04 | 2027-03-09 | 81 | 61d |
| 88 |  | Pour lightweight concrete roof fill | 2d | 2027-03-12 | 2027-03-15 | 11, 82, 87 | 59d |
| 89 |  | Install seamless roofing material | 5d | 2027-03-23 | 2027-03-29 | 88FS+5d | 59d |
| 90 |  | Spread stone ballast on seamless roof | 5d | 2027-03-30 | 2027-04-05 | 89 | 59d |
| 91 |  | Set rooftop equipment | 2w | 2027-04-06 | 2027-04-19 | 90 | 59d |
| 92 | 11 | **Window wall and store front closures** | 75d | 2027-03-04 | 2027-06-16 |  |  |
| 93 |  | Install window wall aluminum and glass | 5w | 2027-03-04 | 2027-04-07 | 81 |  |
| 94 |  | Install interior stud walls and drywall | 5w | 2027-04-08 | 2027-05-12 | 93 |  |
| 95 |  | Install interior doors and hardware | 2w | 2027-06-03 | 2027-06-16 | 94 |  |
| 96 |  | Install store front doors and hardware | 3w | 2027-04-08 | 2027-04-28 | 81 | 20d |
| 97 | 12 | **Building Finishes** | 90d | 2027-04-08 | 2027-08-11 |  | 7d |
| 98 |  | Install millwork and wood trim | 3w | 2027-05-13 | 2027-06-02 | 96, 94 | 10d |
| 99 |  | Paint walls and woodwork | 4w | 2027-06-17 | 2027-07-14 | 98, 95 |  |
| 100 |  | Install conduit at ceiling plenum space | 3w | 2027-04-08 | 2027-04-28 | 93 | 15d |
| 101 |  | Install duct in ceiling plenum space | 3w | 2027-05-13 | 2027-06-02 | 94, 100 | 10d |
| 102 |  | Install ceiling grid | 2w | 2027-06-03 | 2027-06-16 | 94, 101 | 10d |
| 103 |  | Install ceiling tile | 2w | 2027-06-17 | 2027-06-30 | 102 | 30d |
| 104 |  | Hang wallpaper | 2w | 2027-07-15 | 2027-07-28 | 102 | 10d |
| 105 |  | Install building carpet | 4w | 2027-07-15 | 2027-08-11 | 99 |  |
| 106 |  | Install hardware and accessories | 3w | 2027-07-15 | 2027-08-04 | 99 | 5d |
| 107 |  | Complete interior and exterior sod and plantings | 2w | 2027-07-15 | 2027-07-28 | 99 | 7d |
| 108 |  | Pave, curb, and stripe parking lot | 2w | 2027-07-29 | 2027-08-11 | 107 | 7d |
| 109 | 13 | **Elevators** | 40d | 2026-12-03 | 2027-01-27 |  | 144d |
| 110 |  | Set elevator equipment in shafts | 4w | 2026-12-03 | 2026-12-30 | 80, 45, 12 | 144d |
| 111 |  | Set equipment in mechanical room | 2w | 2026-12-31 | 2027-01-13 | 110 | 144d |
| 112 |  | Test and align doors and equipment | 2w | 2027-01-14 | 2027-01-27 | 111 | 144d |
| 113 | 14 | **Plumbing** | 100d | 2027-03-11 | 2027-07-28 |  | 10d |
| 114 |  | Rough-in plumbing in drywall walls | 4w | 2027-04-08 | 2027-05-05 | 93 | 45d |
| 115 |  | Tie-in fire line riser and set valves | 2w | 2027-03-11 | 2027-03-24 | 84 | 90d |
| 116 |  | Set plumbing fixtures and trim | 3w | 2027-05-06 | 2027-05-26 | 85, 114, 79 | 45d |
| 117 |  | Flush, test, and clean piping and fixtures | 2w | 2027-07-15 | 2027-07-28 | 99, 115, 116 | 10d |
| 118 | 15 | **Electrical** | 140d | 2027-01-11 | 2027-07-23 |  | 17d |
| 119 |  | Rough-in electrical in masonry walls | 4w | 2027-01-11 | 2027-02-05 | 75, 14 | 73d |
| 120 |  | Rough-in electrical in drywall walls | 4w | 2027-04-29 | 2027-05-26 | 93 | 30d |
| 121 |  | Pull wire in conduit and set area transformers | 3w | 2027-05-27 | 2027-06-16 | 119, 100 | 15d |
| 122 |  | Install and terminate electrical devices | 3w | 2027-06-17 | 2027-07-07 | 121, 120 | 15d |
| 123 |  | Make electrical terminations for HVAC equipment | 2d | 2027-07-22 | 2027-07-23 | 121, 91 | 17d |
| 124 |  | Install light fixtures - test and clean | 2w | 2027-07-08 | 2027-07-21 | 102, 122 | 15d |
| 125 | 16 | **Heating and Ventilating - AC** | 187d | 2026-12-03 | 2027-08-20 |  | 17d |
| 126 |  | Set equipment in mechanical room | 2w | 2026-12-03 | 2026-12-16 | 80, 15 | 151d |
| 127 |  | Rough-in mechanical in masonry walls | 4w | 2027-01-11 | 2027-02-05 | 75 | 114d |
| 128 |  | Rough-in mechanical in drywall walls | 2w | 2027-06-03 | 2027-06-16 | 93 | 64d |
| 129 |  | Install duct in building chase | 3w | 2027-04-20 | 2027-05-10 | 126, 127, 93 | 71d |
| 130 |  | Set HVAC trim and test and balance system | 4w | 2027-07-26 | 2027-08-20 | 102, 129, 123 | 17d |
| 131 | 17 | **Final Clean-up and Occupancy** | 70d | 2027-05-13 | 2027-08-18 |  | 19d |
| 132 |  | Install hard tile flooring in common areas | 1w | 2027-05-13 | 2027-05-19 | 94 | 56d |
| 133 |  | Clean hard tile floors | 4d | 2027-05-20 | 2027-05-25 | 132 | 56d |
| 134 |  | Remove debris from building and do final clean-up | 4d | 2027-08-12 | 2027-08-17 | 105, 104, 106, 107, 117, 124, 103, 133 |  |
| 135 |  | Substantial completion date | 1d | 2027-08-18 | 2027-08-18 | 134 | 19d |
| 136 | 18 | **Complete Final Inspections** | 6d | 2027-08-18 | 2027-08-25 |  |  |
| 137 |  | Complete elevator inspection and certification | 3d | 2027-08-18 | 2027-08-20 | 134, 112 |  |
| 138 |  | Perform architect's inspection | 1d | 2027-08-23 | 2027-08-23 | 134, 108, 137 |  |
| 139 |  | Perform local building agency inspection | 1d | 2027-08-24 | 2027-08-24 | 138 |  |
| 140 |  | Perform Fire Marshal's inspection | 1d | 2027-08-25 | 2027-08-25 | 139 |  |

| ID | Task | Duration | Start | Finish | Predecessors | Total float |
| --- | --- | --- | --- | --- | --- | --- |
| 141 | Complete punch list items from all inspections | 2w | 2027-08-26 | 2027-09-08 | 140 |  |
| 142 | Obtain certificate of occupancy | 2d | 2027-09-09 | 2027-09-10 | 141 | 1d |
| 143 | Issue final completion documents including warranties | 1d | 2027-09-13 | 2027-09-13 | 141 |  |
| 144 | Issue final request for payment | 1d | 2027-09-14 | 2027-09-14 | 142, 143 |  |

## Version 2 (data date 2026-08-27, saved 2026-06-05, file Project5.mspdi.xml)

Note of the change: feat(m4): native .mpp via MPXJ + multi-file loader + golden parity inputs

Last finish 2027-09-14 → 2027-12-07 (+84d). Complete tasks 20 → 27.

Changed:

| ID | Task | Start | Finish | Duration | Complete | Total float | Predecessors | Other |
| --- | --- | --- | --- | --- | --- | --- | --- | --- |
| 9 | **Long Lead Procurement** |  | 2026-06-19 A |  | 74% → 100% | 248d → none |  |  |
| 11 | Submit shop drawings and order long lead items - roofing |  | 2026-05-29 A |  | 74% → 100% | 263d → none |  |  |
| 14 | Submit shop drawings and order long lead items - electric | 2026-06-08 A | 2026-06-19 A |  | 0% → 100% | 93d → none |  |  |
| 16 | Detail, fabricate and deliver steel |  | 2026-06-19 A |  | 67% → 100% | 48d → none |  |  |
| 23 | **Site Grading and Utilities** |  | 2026-07-10 → 2026-07-31 A (+21d) | 70d → 85d | 60% → 100% |  |  |  |
| 28 | Install exterior fire line and building fire riser |  | 2026-06-19 A |  | 53% → 100% |  |  |  |
| 29 | Perform final site grading | 2026-06-22 A | 2026-07-03 A |  | 0% → 100% |  |  |  |
| 30 | Erect building batter boards and layout building | 2026-07-06 A | 2026-07-10 → 2026-07-31 A (+21d) | 1w → 4w | 0% → 100% |  |  |  |
| 31 | **Foundations** | 2026-07-13 → 2026-08-03 A (+21d) | 2026-09-11 → 2026-12-08 (+88d) | 45d → 92d | 0% → 28% | none → 201d |  |  |
| 32 | Excavate foundations | 2026-07-13 → 2026-08-03 A (+21d) | 2026-07-24 → 2026-08-07 A (+14d) | 2w → 1w | 0% → 100% |  |  |  |
| 33 | Excavate elevator pit | 2026-07-27 → 2026-08-10 A (+14d) | 2026-07-28 → 2026-08-28 (+31d) | 2d → 15d | 0% → 93% | 204d → 252d |  | constraint none → start no earlier than 2026-08-10 |
| 34 | Form column piers and spread foundations | 2026-07-27 → 2026-08-17 A (+21d) | 2026-07-30 → 2026-09-18 (+50d) | 4d → 25d | 0% → 36% |  |  | constraint none → start no earlier than 2026-08-17 |
| 35 | Rough-in electric and plumbing in elevator | 2026-07-29 → 2026-08-31 (+33d) | 2026-08-03 → 2026-09-03 (+31d) |  |  | 204d → 252d |  |  |
| 36 | Form elevator pit walls | 2026-08-06 → 2026-09-04 (+29d) | 2026-08-11 → 2026-09-09 (+29d) |  |  | 203d → 252d |  |  |
| 37 | Set reinforcing and anchor bolts | 2026-07-31 → 2026-09-21 (+52d) | 2026-08-05 → 2026-09-24 (+50d) |  |  |  |  |  |
| 38 | Pour column piers and foundations | 2026-08-06 → 2026-09-25 (+50d) | 2026-08-12 → 2026-10-23 (+72d) | 5d → 21d |  |  |  |  |
| 39 | Pour concrete elevator walls | 2026-08-13 → 2026-09-10 (+28d) | 2026-08-13 → 2026-09-10 (+28d) |  |  | 202d → 252d |  |  |
| 40 | Cure elevator wall concrete | 2026-08-27 → 2026-11-23 (+88d) | 2026-09-04 → 2026-12-01 (+88d) |  |  | 202d → 201d | 39 → 39, 47 |  |
| 41 | Cure piers and foundations | 2026-08-13 → 2026-10-26 (+74d) | 2026-08-21 → 2026-11-03 (+74d) |  |  |  |  |  |
| 42 | Strip wall forms | 2026-09-07 → 2026-12-02 (+86d) | 2026-09-07 → 2026-12-02 (+86d) |  |  | 202d → 201d |  |  |
| 43 | Strip column piers and foundation forms | 2026-08-24 → 2026-11-04 (+72d) | 2026-08-26 → 2026-11-06 (+72d) |  |  |  |  |  |
| 44 | Install pneumatic tube in elevator pit | 2026-09-08 → 2026-12-03 (+86d) | 2026-09-10 → 2026-12-07 (+88d) |  |  | 202d → 201d |  |  |
| 45 | Prepare and pour concrete floor in elevator pit | 2026-09-11 → 2026-12-08 (+88d) | 2026-09-11 → 2026-12-08 (+88d) |  |  | 202d → 201d |  |  |
| 46 | **Steel Erection** | 2026-08-27 → 2026-11-09 (+74d) | 2026-11-04 → 2027-01-19 (+76d) | 50d → 52d |  |  |  |  |
| 47 | Erect steel columns, beams and joist - 1st and 2nd floors | 2026-08-27 → 2026-11-09 (+74d) | 2026-09-09 → 2026-11-20 (+72d) |  |  |  |  |  |
| 48 | Erect steel columns, beams and joist - 3rd floor and roof | 2026-09-10 → 2026-11-23 (+74d) | 2026-09-23 → 2026-12-15 (+83d) | 2w → 3.4w |  |  |  |  |
| 49 | Install miscellaneous iron and bracing - 1st and 2nd floors | 2026-10-22 → 2026-11-23 (+32d) | 2026-11-04 → 2026-12-29 (+55d) | 2w → 5.4w |  | 144d → 166d |  |  |
| 50 | Install miscellaneous iron and bracing - 3rd floor and roof | 2026-09-24 → 2026-12-16 (+83d) | 2026-10-07 → 2026-12-29 (+83d) |  |  |  |  |  |
| 51 | Install stairs and miscellaneous iron railing | 2026-10-08 → 2026-12-30 (+83d) | 2026-10-21 → 2027-01-12 (+83d) |  |  |  |  |  |
| 52 | Touch-up paint on steel | 2026-10-22 → 2027-01-13 (+83d) | 2026-10-28 → 2027-01-19 (+83d) |  |  |  |  |  |
| 53 | **Form and Pour Concrete - Floors and Roof** | 2026-09-10 → 2026-12-16 (+97d) | 2027-01-08 → 2027-04-15 (+97d) |  |  | 35d → 25d |  |  |
| 54 | Form 2nd floor including all floor openings | 2026-10-29 → 2027-01-20 (+83d) | 2026-11-04 → 2027-02-11 (+99d) | 5d → 17d |  |  |  |  |
| 55 | Install rebar and in-floor utilities (including mechanical, electrical, plumbing) | 2026-09-10 → 2026-12-16 (+97d) | 2026-09-16 → 2026-12-22 (+97d) |  |  | 35d → 37d | 47 → 47, 48 |  |
| 56 | Pour 2nd floor slab | 2026-11-05 → 2027-02-12 (+99d) | 2026-11-10 → 2027-02-17 (+99d) |  |  |  |  |  |
| 57 | Cure 2nd floor slab | 2026-11-11 → 2027-02-18 (+99d) | 2026-11-19 → 2027-02-26 (+99d) |  |  |  |  |  |
| 58 | Strip forms from 2nd floor slab | 2026-11-27 → 2027-03-01 (+94d) | 2026-11-30 → 2027-03-02 (+92d) |  |  | 73d → 99d |  |  |
| 59 | Form 3rd floor including all floor openings | 2026-11-20 → 2027-03-01 (+101d) | 2026-11-26 → 2027-03-05 (+99d) |  |  |  |  |  |
| 60 | Install rebar and in-floor utilities (including mechanical, electrical, plumbing) | 2026-11-20 → 2027-03-01 (+101d) | 2026-11-26 → 2027-03-05 (+99d) |  |  |  |  |  |
| 61 | Pour 3rd floor slab | 2026-11-27 → 2027-03-08 (+101d) | 2026-12-02 → 2027-03-11 (+99d) |  |  |  |  |  |
| 62 | Cure 3rd floor slab | 2026-12-03 → 2027-03-12 (+99d) | 2026-12-11 → 2027-03-22 (+101d) |  |  |  |  |  |
| 63 | Strip forms from 3rd floor slab | 2026-12-21 → 2027-03-23 (+92d) | 2026-12-22 → 2027-03-24 (+92d) |  |  | 11d → 16d |  |  |
| 64 | Form roof slab including all floor openings | 2026-12-14 → 2027-03-23 (+99d) | 2026-12-18 → 2027-03-29 (+101d) |  |  |  |  |  |
| 65 | Install rebar and in-floor utilities (including mechanical, electrical, plumbing) | 2026-12-14 → 2027-03-23 (+99d) | 2026-12-18 → 2027-03-29 (+101d) |  |  |  |  |  |
| 66 | Pour roof slab | 2026-12-21 → 2027-03-30 (+99d) | 2026-12-24 → 2027-04-02 (+99d) |  |  |  |  |  |
| 67 | Cure roof slab | 2026-12-25 → 2027-04-05 (+101d) | 2027-01-04 → 2027-04-13 (+99d) |  |  |  |  |  |
| 68 | Strip forms from roof slab | 2027-01-05 → 2027-04-14 (+99d) | 2027-01-06 → 2027-04-15 (+99d) |  |  |  |  |  |
| 69 | Form 1st floor | 2026-12-01 → 2027-03-03 (+92d) | 2026-12-04 → 2027-03-08 (+94d) |  |  | 78d → 100d |  |  |
| 70 | Install electrical underground | 2026-12-07 → 2027-03-03 (+86d) | 2026-12-11 → 2027-03-09 (+88d) |  |  | 73d → 99d |  |  |
| 71 | Install plumbing underground | 2026-12-07 → 2027-03-03 (+86d) | 2026-12-11 → 2027-03-09 (+88d) |  |  | 73d → 99d |  |  |
| 72 | Install rebar and in-floor utilities | 2026-12-01 → 2027-03-03 (+92d) | 2026-12-04 → 2027-03-08 (+94d) |  |  | 78d → 100d |  |  |
| 73 | Pour 1st floor slab | 2026-12-14 → 2027-03-10 (+86d) | 2026-12-17 → 2027-03-15 (+88d) |  |  | 73d → 99d |  |  |
| 74 | Cure 1st floor slab | 2026-12-23 → 2027-03-16 (+83d) | 2026-12-31 → 2027-03-24 (+83d) |  |  | 73d → 99d |  |  |
| 75 | Strip forms from 1st floor slab | 2027-01-07 → 2027-03-25 (+77d) | 2027-01-08 → 2027-03-26 (+77d) |  |  | 73d → 99d |  |  |
| 76 | **Carpentry Work** | 2027-01-07 → 2027-04-16 (+99d) | 2027-01-27 → 2027-05-06 (+99d) |  |  |  |  |  |
| 77 | Install exterior sheathing and metal studs | 2027-01-07 → 2027-04-16 (+99d) | 2027-01-27 → 2027-05-06 (+99d) |  |  |  |  |  |
| 78 | **Masonry Work** | 2026-11-05 → 2026-12-30 (+55d) | 2027-03-11 → 2027-06-17 (+98d) | 91d → 122d |  | 60d → 80d |  |  |
| 79 | Rough-in plumbing at toilets and masonry walls | 2027-01-11 → 2027-03-29 (+77d) | 2027-02-05 → 2027-04-23 (+77d) |  |  | 93d → 99d |  |  |
| 80 | Lay masonry at core, mechanical, and toilets | 2026-11-05 → 2026-12-30 (+55d) | 2026-12-02 → 2027-01-26 (+55d) |  |  | 144d → 166d |  |  |
| 81 | Install exterior masonry work | 2027-01-28 → 2027-05-07 (+99d) | 2027-03-03 → 2027-06-10 (+99d) |  |  |  |  |  |
| 82 | Install roof drains | 2027-03-10 → 2027-06-11 (+93d) | 2027-03-11 → 2027-06-14 (+95d) |  |  | 59d → 77d |  |  |
| 83 | Install tile in toilet rooms | 2027-02-08 → 2027-04-26 (+77d) | 2027-02-19 → 2027-05-07 (+77d) |  |  | 93d → 99d |  |  |
| 84 | Clean masonry | 2027-03-04 → 2027-06-11 (+99d) | 2027-03-10 → 2027-06-17 (+99d) |  |  | 90d → 80d |  |  |
| 85 | Clean toilet room tile | 2027-02-22 → 2027-05-10 (+77d) | 2027-02-26 → 2027-05-14 (+77d) |  |  | 93d → 99d |  |  |
| 86 | **Roofing** | 2027-03-04 → 2027-06-11 (+99d) | 2027-04-19 → 2027-07-23 (+95d) | 33d → 31d |  | 59d → 75d |  |  |
| 87 | Install flashing at parapet walls | 2027-03-04 → 2027-06-11 (+99d) | 2027-03-09 → 2027-06-16 (+99d) |  |  | 61d → 75d |  |  |
| 88 | Pour lightweight concrete roof fill | 2027-03-12 → 2027-06-17 (+97d) | 2027-03-15 → 2027-06-18 (+95d) |  |  | 59d → 75d |  |  |
| 89 | Install seamless roofing material | 2027-03-23 → 2027-06-28 (+97d) | 2027-03-29 → 2027-07-02 (+95d) |  |  | 59d → 75d |  |  |
| 90 | Spread stone ballast on seamless roof | 2027-03-30 → 2027-07-05 (+97d) | 2027-04-05 → 2027-07-09 (+95d) |  |  | 59d → 75d |  |  |
| 91 | Set rooftop equipment | 2027-04-06 → 2027-07-12 (+97d) | 2027-04-19 → 2027-07-23 (+95d) |  |  | 59d → 75d |  |  |
| 92 | **Window wall and store front closures** | 2027-03-04 → 2027-06-11 (+99d) | 2027-06-16 → 2027-09-02 (+78d) | 75d → 60d |  |  |  |  |

| ID | Task | Start | Finish | Duration | Total float |
| --- | --- | --- | --- | --- | --- |
| 93 | Install window wall aluminum and glass | 2027-03-04 → 2027-06-11 (+99d) | 2027-04-07 → 2027-07-15 (+99d) |  |  |
| 94 | Install interior stud walls and drywall | 2027-04-08 → 2027-07-16 (+99d) | 2027-05-12 → 2027-08-19 (+99d) |  |  |
| 95 | Install interior doors and hardware | 2027-06-03 → 2027-08-20 (+78d) | 2027-06-16 → 2027-09-02 (+78d) |  | none → 5d |
| 96 | Install store front doors and hardware | 2027-04-08 → 2027-06-11 (+64d) | 2027-04-28 → 2027-07-01 (+64d) |  | 20d → 35d |
| 97 | **Building Finishes** | 2027-04-08 → 2027-07-16 (+99d) | 2027-08-11 → 2027-11-04 (+85d) | 90d → 80d |  |
| 98 | Install millwork and wood trim | 2027-05-13 → 2027-08-20 (+99d) | 2027-06-02 → 2027-09-09 (+99d) |  | 10d → none |
| 99 | Paint walls and woodwork | 2027-06-17 → 2027-09-10 (+85d) | 2027-07-14 → 2027-10-07 (+85d) |  |  |
| 100 | Install conduit at ceiling plenum space | 2027-04-08 → 2027-07-16 (+99d) | 2027-04-28 → 2027-08-05 (+99d) |  | 15d → 25d |
| 101 | Install duct in ceiling plenum space | 2027-05-13 → 2027-08-20 (+99d) | 2027-06-02 → 2027-09-09 (+99d) |  | 10d → 20d |
| 102 | Install ceiling grid | 2027-06-03 → 2027-09-10 (+99d) | 2027-06-16 → 2027-09-23 (+99d) |  | 10d → 20d |
| 103 | Install ceiling tile | 2027-06-17 → 2027-09-24 (+99d) | 2027-06-30 → 2027-10-07 (+99d) |  | 30d → 20d |
| 104 | Hang wallpaper | 2027-07-15 → 2027-09-24 (+71d) | 2027-07-28 → 2027-10-07 (+71d) |  | 10d → 20d |
| 105 | Install building carpet | 2027-07-15 → 2027-10-08 (+85d) | 2027-08-11 → 2027-11-04 (+85d) |  |  |
| 106 | Install hardware and accessories | 2027-07-15 → 2027-10-08 (+85d) | 2027-08-04 → 2027-10-28 (+85d) |  |  |
| 107 | Complete interior and exterior sod and plantings | 2027-07-15 → 2027-10-08 (+85d) | 2027-07-28 → 2027-10-21 (+85d) |  |  |
| 108 | Pave, curb, and stripe parking lot | 2027-07-29 → 2027-10-22 (+85d) | 2027-08-11 → 2027-11-04 (+85d) |  |  |
| 109 | **Elevators** | 2026-12-03 → 2027-01-27 (+55d) | 2027-01-27 → 2027-03-23 (+55d) |  | 144d → 166d |
| 110 | Set elevator equipment in shafts | 2026-12-03 → 2027-01-27 (+55d) | 2026-12-30 → 2027-02-23 (+55d) |  | 144d → 166d |
| 111 | Set equipment in mechanical room | 2026-12-31 → 2027-02-24 (+55d) | 2027-01-13 → 2027-03-09 (+55d) |  | 144d → 166d |
| 112 | Test and align doors and equipment | 2027-01-14 → 2027-03-10 (+55d) | 2027-01-27 → 2027-03-23 (+55d) |  | 144d → 166d |
| 113 | **Plumbing** | 2027-03-11 → 2027-06-18 (+99d) | 2027-07-28 → 2027-10-21 (+85d) | 100d → 90d |  |
| 114 | Rough-in plumbing in drywall walls | 2027-04-08 → 2027-07-16 (+99d) | 2027-05-05 → 2027-08-12 (+99d) |  | 45d → 35d |
| 115 | Tie-in fire line riser and set valves | 2027-03-11 → 2027-06-18 (+99d) | 2027-03-24 → 2027-07-01 (+99d) |  | 90d → 80d |
| 116 | Set plumbing fixtures and trim | 2027-05-06 → 2027-08-13 (+99d) | 2027-05-26 → 2027-09-02 (+99d) |  | 45d → 35d |
| 117 | Flush, test, and clean piping and fixtures | 2027-07-15 → 2027-10-08 (+85d) | 2027-07-28 → 2027-10-21 (+85d) |  |  |
| 118 | **Electrical** | 2027-01-11 → 2027-03-29 (+77d) | 2027-07-23 → 2027-10-07 (+76d) | 140d → 139d | 17d → 23d |
| 119 | Rough-in electrical in masonry walls | 2027-01-11 → 2027-03-29 (+77d) | 2027-02-05 → 2027-04-23 (+77d) |  | 73d → 99d |
| 120 | Rough-in electrical in drywall walls | 2027-04-29 → 2027-07-16 (+78d) | 2027-05-26 → 2027-08-12 (+78d) |  | 30d → 35d |
| 121 | Pull wire in conduit and set area transformers | 2027-05-27 → 2027-08-06 (+71d) | 2027-06-16 → 2027-08-26 (+71d) |  | 15d → 25d |
| 122 | Install and terminate electrical devices | 2027-06-17 → 2027-08-27 (+71d) | 2027-07-07 → 2027-09-16 (+71d) |  | 15d → 25d |
| 123 | Make electrical terminations for HVAC equipment | 2027-07-22 → 2027-08-27 (+36d) | 2027-07-23 → 2027-08-30 (+38d) |  | 17d → 51d |
| 124 | Install light fixtures - test and clean | 2027-07-08 → 2027-09-24 (+78d) | 2027-07-21 → 2027-10-07 (+78d) |  | 15d → 20d |
| 125 | **Heating and Ventilating - AC** | 2026-12-03 → 2027-01-27 (+55d) | 2027-08-20 → 2027-10-21 (+62d) | 187d → 192d | 17d → 33d |
| 126 | Set equipment in mechanical room | 2026-12-03 → 2027-01-27 (+55d) | 2026-12-16 → 2027-02-09 (+55d) |  | 151d → 180d |
| 127 | Rough-in mechanical in masonry walls | 2027-01-11 → 2027-03-29 (+77d) | 2027-02-05 → 2027-04-23 (+77d) |  | 114d → 127d |
| 128 | Rough-in mechanical in drywall walls | 2027-06-03 → 2027-07-16 (+43d) | 2027-06-16 → 2027-07-29 (+43d) |  | 64d → 93d |
| 129 | Install duct in building chase | 2027-04-20 → 2027-07-16 (+87d) | 2027-05-10 → 2027-08-05 (+87d) |  | 71d → 68d |
| 130 | Set HVAC trim and test and balance system | 2027-07-26 → 2027-09-24 (+60d) | 2027-08-20 → 2027-10-21 (+62d) |  | 17d → 33d |
| 131 | **Final Clean-up and Occupancy** | 2027-05-13 → 2027-08-20 (+99d) | 2027-08-18 → 2027-11-11 (+85d) | 70d → 60d | 19d → 18d |
| 132 | Install hard tile flooring in common areas | 2027-05-13 → 2027-08-20 (+99d) | 2027-05-19 → 2027-08-26 (+99d) |  | 56d → 46d |
| 133 | Clean hard tile floors | 2027-05-20 → 2027-08-27 (+99d) | 2027-05-25 → 2027-09-01 (+99d) |  | 56d → 46d |
| 134 | Remove debris from building and do final clean-up | 2027-08-12 → 2027-11-05 (+85d) | 2027-08-17 → 2027-11-10 (+85d) |  |  |
| 135 | Substantial completion date | 2027-08-18 → 2027-11-11 (+85d) | 2027-08-18 → 2027-11-11 (+85d) |  | 19d → 18d |
| 136 | **Complete Final Inspections** | 2027-08-18 → 2027-11-11 (+85d) | 2027-08-25 → 2027-11-18 (+85d) |  |  |
| 137 | Complete elevator inspection and certification | 2027-08-18 → 2027-11-11 (+85d) | 2027-08-20 → 2027-11-15 (+87d) |  |  |
| 138 | Perform architect's inspection | 2027-08-23 → 2027-11-16 (+85d) | 2027-08-23 → 2027-11-16 (+85d) |  |  |
| 139 | Perform local building agency inspection | 2027-08-24 → 2027-11-17 (+85d) | 2027-08-24 → 2027-11-17 (+85d) |  |  |
| 140 | Perform Fire Marshal's inspection | 2027-08-25 → 2027-11-18 (+85d) | 2027-08-25 → 2027-11-18 (+85d) |  |  |
| 141 | Complete punch list items from all inspections | 2027-08-26 → 2027-11-19 (+85d) | 2027-09-08 → 2027-12-02 (+85d) |  |  |
| 142 | Obtain certificate of occupancy | 2027-09-09 → 2027-12-03 (+85d) | 2027-09-10 → 2027-12-06 (+87d) |  | 1d → none |
| 143 | Issue final completion documents including warranties | 2027-09-13 → 2027-12-03 (+81d) | 2027-09-13 → 2027-12-03 (+81d) |  | none → 1d |
| 144 | Issue final request for payment | 2027-09-14 → 2027-12-07 (+84d) | 2027-09-14 → 2027-12-07 (+84d) |  |  |

## Version 3 (data date 2026-08-27, saved 2026-06-09, file Project5.mspdi.xml)

Note of the change: Refresh stale Project5 golden to the authoritative file (ADR-0112)

Last finish 2027-12-07 → 2028-01-26 (+50d).

Changed:

| ID | Task | Start | Finish | Duration | Total float | Predecessors | Other |
| --- | --- | --- | --- | --- | --- | --- | --- |
| 36 | Form elevator pit walls | 2026-09-04 → 2026-09-25 (+21d) | 2026-09-09 → 2026-09-30 (+21d) |  | 252d → 275d |  |  |
| 39 | Pour concrete elevator walls | 2026-09-10 → 2026-10-26 (+46d) | 2026-09-10 → 2026-10-26 (+46d) |  | 252d → 275d |  |  |
| 46 | **Steel Erection** |  | 2027-01-19 → 2027-02-18 (+30d) | 52d → 74d | none → 19d |  |  |
| 49 | Install miscellaneous iron and bracing - 1st and 2nd floors | 2026-11-23 → 2027-01-13 (+51d) | 2026-12-29 → 2027-02-18 (+51d) |  | 166d → 156d |  |  |
| 53 | **Form and Pour Concrete - Floors and Roof** |  | 2027-04-15 → 2027-04-19 (+4d) | 87d → 89d | 25d → 44d |  |  |
| 58 | Strip forms from 2nd floor slab | 2027-03-01 → 2027-03-08 (+7d) | 2027-03-02 → 2027-03-09 (+7d) |  | 99d → 95d |  |  |
| 63 | Strip forms from 3rd floor slab | 2027-03-23 → 2027-03-30 (+7d) | 2027-03-24 → 2027-03-31 (+7d) |  | 16d → 30d |  |  |
| 69 | Form 1st floor | 2027-03-03 → 2027-03-10 (+7d) | 2027-03-08 → 2027-03-15 (+7d) |  |  |  |  |
| 70 | Install electrical underground | 2027-03-03 → 2027-03-16 (+13d) | 2027-03-09 → 2027-03-22 (+13d) |  | 99d → 95d |  |  |
| 71 | Install plumbing underground | 2027-03-03 → 2027-03-16 (+13d) | 2027-03-09 → 2027-03-22 (+13d) |  | 99d → 95d |  |  |
| 72 | Install rebar and in-floor utilities | 2027-03-03 → 2027-03-10 (+7d) | 2027-03-08 → 2027-03-15 (+7d) |  |  |  |  |
| 73 | Pour 1st floor slab | 2027-03-10 → 2027-03-23 (+13d) | 2027-03-15 → 2027-03-26 (+11d) |  | 99d → 95d |  |  |
| 74 | Cure 1st floor slab | 2027-03-16 → 2027-04-01 (+16d) | 2027-03-24 → 2027-04-09 (+16d) |  | 99d → 95d |  |  |
| 75 | Strip forms from 1st floor slab | 2027-03-25 → 2027-04-16 (+22d) | 2027-03-26 → 2027-04-19 (+24d) |  | 99d → 94d |  |  |
| 78 | **Masonry Work** | 2026-12-30 → 2027-02-19 (+51d) | 2027-06-17 → 2027-06-18 (+1d) | 122d → 86d | 80d → 74d |  |  |
| 79 | Rough-in plumbing at toilets and masonry walls | 2027-03-29 → 2027-04-20 (+22d) | 2027-04-23 → 2027-05-17 (+24d) |  | 99d → 118d |  |  |
| 80 | Lay masonry at core, mechanical, and toilets | 2026-12-30 → 2027-02-19 (+51d) | 2027-01-26 → 2027-03-18 (+51d) |  | 166d → 156d |  |  |
| 82 | Install roof drains | 2027-06-11 → 2027-06-17 (+6d) | 2027-06-14 → 2027-06-18 (+4d) |  | 77d → 80d |  |  |
| 83 | Install tile in toilet rooms | 2027-04-26 → 2027-05-18 (+22d) | 2027-05-07 → 2027-05-31 (+24d) |  | 99d → 118d |  |  |
| 85 | Clean toilet room tile | 2027-05-10 → 2027-06-01 (+22d) | 2027-05-14 → 2027-06-07 (+24d) |  | 99d → 118d |  |  |
| 86 | **Roofing** |  | 2027-07-23 → 2027-07-27 (+4d) | 31d → 33d | 75d → 80d |  |  |
| 88 | Pour lightweight concrete roof fill | 2027-06-17 → 2027-06-21 (+4d) | 2027-06-18 → 2027-06-22 (+4d) |  | 75d → 80d |  |  |
| 89 | Install seamless roofing material | 2027-06-28 → 2027-06-30 (+2d) | 2027-07-02 → 2027-07-06 (+4d) |  | 75d → 80d |  |  |
| 90 | Spread stone ballast on seamless roof | 2027-07-05 → 2027-07-07 (+2d) | 2027-07-09 → 2027-07-13 (+4d) |  | 75d → 80d |  |  |
| 91 | Set rooftop equipment | 2027-07-12 → 2027-07-14 (+2d) | 2027-07-23 → 2027-07-27 (+4d) |  | 75d → 80d |  |  |
| 92 | **Window wall and store front closures** |  | 2027-09-02 → 2027-09-23 (+21d) | 60d → 75d | none → 19d |  |  |
| 95 | Install interior doors and hardware | 2027-08-20 → 2027-09-10 (+21d) | 2027-09-02 → 2027-09-23 (+21d) |  | 5d → 19d |  |  |
| 96 | Install store front doors and hardware | 2027-06-11 → 2027-07-16 (+35d) | 2027-07-01 → 2027-08-05 (+35d) |  | 35d → 39d |  |  |
| 97 | **Building Finishes** |  | 2027-11-04 → 2027-12-17 (+43d) | 80d → 111d | 7d → 28d |  |  |
| 99 | Paint walls and woodwork | 2027-09-10 → 2027-09-24 (+14d) | 2027-10-07 → 2027-10-21 (+14d) |  | none → 19d |  |  |
| 104 | Hang wallpaper | 2027-09-24 → 2027-10-22 (+28d) | 2027-10-07 → 2027-11-04 (+28d) |  | 20d → 35d |  |  |
| 105 | Install building carpet | 2027-10-08 → 2027-10-22 (+14d) | 2027-11-04 → 2027-12-17 (+43d) | 4w → 8.2w | none → 28d |  |  |
| 106 | Install hardware and accessories | 2027-10-08 → 2027-10-22 (+14d) | 2027-10-28 → 2027-11-26 (+29d) | 3w → 5.2w | 5d → 19d |  |  |
| 107 | Complete interior and exterior sod and plantings | 2027-10-08 → 2027-10-22 (+14d) | 2027-10-21 → 2027-11-04 (+14d) |  | 7d → 32d |  |  |
| 108 | Pave, curb, and stripe parking lot | 2027-10-22 → 2027-11-05 (+14d) | 2027-11-04 → 2027-11-18 (+14d) |  | 7d → 32d |  |  |
| 109 | **Elevators** | 2027-01-27 → 2027-03-19 (+51d) | 2027-03-23 → 2027-05-13 (+51d) |  | 166d → 184d |  |  |
| 110 | Set elevator equipment in shafts | 2027-01-27 → 2027-03-19 (+51d) | 2027-02-23 → 2027-04-15 (+51d) |  | 166d → 184d |  |  |
| 111 | Set equipment in mechanical room | 2027-02-24 → 2027-04-16 (+51d) | 2027-03-09 → 2027-04-29 (+51d) |  | 166d → 184d |  |  |
| 112 | Test and align doors and equipment | 2027-03-10 → 2027-04-30 (+51d) | 2027-03-23 → 2027-05-13 (+51d) |  | 166d → 184d |  |  |
| 113 | **Plumbing** |  | 2027-10-21 → 2027-11-04 (+14d) | 90d → 100d | 10d → 35d |  |  |
| 117 | Flush, test, and clean piping and fixtures | 2027-10-08 → 2027-10-22 (+14d) | 2027-10-21 → 2027-11-04 (+14d) |  | 10d → 35d |  |  |
| 118 | **Electrical** | 2027-03-29 → 2027-04-20 (+22d) | 2027-10-07 → 2027-11-01 (+25d) | 139d → 140d | 23d → 38d |  |  |
| 119 | Rough-in electrical in masonry walls | 2027-03-29 → 2027-04-20 (+22d) | 2027-04-23 → 2027-05-17 (+24d) |  | 99d → 94d |  |  |
| 120 | Rough-in electrical in drywall walls | 2027-07-16 → 2027-08-06 (+21d) | 2027-08-12 → 2027-09-02 (+21d) |  | 35d → 51d |  |  |
| 121 | Pull wire in conduit and set area transformers | 2027-08-06 → 2027-09-03 (+28d) | 2027-08-26 → 2027-09-23 (+28d) |  | 25d → 36d |  |  |
| 122 | Install and terminate electrical devices | 2027-08-27 → 2027-09-24 (+28d) | 2027-09-16 → 2027-10-14 (+28d) |  | 25d → 36d |  |  |
| 123 | Make electrical terminations for HVAC equipment | 2027-08-27 → 2027-10-15 (+49d) | 2027-08-30 → 2027-10-18 (+49d) |  | 51d → 38d |  |  |
| 124 | Install light fixtures - test and clean | 2027-09-24 → 2027-10-19 (+25d) | 2027-10-07 → 2027-11-01 (+25d) |  | 20d → 38d |  |  |
| 125 | **Heating and Ventilating - AC** | 2027-01-27 → 2027-03-19 (+51d) | 2027-10-21 → 2028-01-06 (+77d) | 192d → 210d | 33d → 14d |  |  |
| 126 | Set equipment in mechanical room | 2027-01-27 → 2027-03-19 (+51d) | 2027-02-09 → 2027-04-01 (+51d) |  | 180d → 156d |  |  |
| 127 | Rough-in mechanical in masonry walls | 2027-03-29 → 2027-04-20 (+22d) | 2027-04-23 → 2027-05-17 (+24d) |  | 127d → 124d |  |  |
| 128 | Rough-in mechanical in drywall walls | 2027-07-16 → 2027-09-10 (+56d) | 2027-07-29 → 2027-09-23 (+56d) |  | 93d → 89d |  |  |
| 129 | Install duct in building chase | 2027-07-16 → 2027-07-28 (+12d) | 2027-08-05 → 2027-08-17 (+12d) |  | 68d → 82d |  |  |
| 130 | Set HVAC trim and test and balance system | 2027-09-24 → 2027-12-10 (+77d) | 2027-10-21 → 2028-01-06 (+77d) |  | 33d → none |  | constraint none → must start on 2027-12-10 |
| 131 | **Final Clean-up and Occupancy** |  | 2027-11-11 → 2027-12-03 (+22d) | 60d → 76d | 18d → 38d |  |  |
| 134 | Remove debris from building and do final clean-up | 2027-11-05 → 2027-11-29 (+24d) | 2027-11-10 → 2027-12-02 (+22d) |  | none → 19d | 105, 104, 106, 107, 117, 124, 103, 133 → 104, 106, 107, 117, 124, 103, 133 |  |
| 135 | Substantial completion date | 2027-11-11 → 2027-12-03 (+22d) | 2027-11-11 → 2027-12-03 (+22d) |  | 18d → 38d |  |  |
| 136 | **Complete Final Inspections** | 2027-11-11 → 2027-12-03 (+22d) | 2027-11-18 → 2027-12-10 (+22d) |  | none → 19d |  |  |
| 137 | Complete elevator inspection and certification | 2027-11-11 → 2027-12-03 (+22d) | 2027-11-15 → 2027-12-07 (+22d) |  | none → 19d | 134, 112 → 134 |  |
| 138 | Perform architect's inspection | 2027-11-16 → 2027-12-08 (+22d) | 2027-11-16 → 2027-12-08 (+22d) |  | none → 19d |  |  |
| 139 | Perform local building agency inspection | 2027-11-17 → 2027-12-09 (+22d) | 2027-11-17 → 2027-12-09 (+22d) |  | none → 19d |  |  |
| 140 | Perform Fire Marshal's inspection | 2027-11-18 → 2027-12-10 (+22d) | 2027-11-18 → 2027-12-10 (+22d) |  | none → 19d |  |  |
| 141 | Complete punch list items from all inspections | 2027-11-19 → 2028-01-07 (+49d) | 2027-12-02 → 2028-01-20 (+49d) |  |  | 140 → 140, 130 |  |
| 142 | Obtain certificate of occupancy | 2027-12-03 → 2028-01-21 (+49d) | 2027-12-06 → 2028-01-24 (+49d) |  | none → 1d |  |  |
| 143 | Issue final completion documents including warranties | 2027-12-03 → 2028-01-25 (+53d) | 2027-12-03 → 2028-01-25 (+53d) |  | 1d → none |  |  |
| 144 | Issue final request for payment | 2027-12-07 → 2028-01-26 (+50d) | 2027-12-07 → 2028-01-26 (+50d) |  |  |  |  |
