# TP1 - Riverside Community Library

How a schedule from MS Project XML changed from version to version. A marks actual dates.

## Version 1 (data date 2026-03-31, saved 2026-06-12)

Note of the change: feat(verification): the synthetic SSI/Fuse verification battery (TP1-TP4) + MSP VBA workflow

| ID | WBS | Task | Duration | Start | Finish | Predecessors | Complete |
| --- | --- | --- | --- | --- | --- | --- | --- |
| 1 | 1 | **Design** | 63.12d | 2026-01-05 A | 2026-04-02 |  |  |
| 2 |  | Notice to proceed | 0d | 2026-01-05 A | 2026-01-05 A |  | 100% |
| 3 |  | Schematic design | 8.94d | 2026-01-05 A | 2026-01-15 A | 2 | 100% |
| 4 |  | Geotechnical survey | 5d | 2026-01-05 A | 2026-01-09 A | 2 | 100% |
| 5 |  | Design development | 18.56d | 2026-01-16 A | 2026-02-11 A | 3 | 100% |
| 6 |  | Interior design package | 6.38d | 2026-01-16 A | 2026-01-26 A | 3 | 100% |
| 7 |  | Permitting & approvals | 35d | 2026-02-12 A | 2026-04-02 | 5 | 60% |
| 8 | 2 | **Procurement** | 45d | 2026-02-12 A | 2026-04-15 |  |  |
| 9 |  | Long-lead equipment procurement | 45d | 2026-02-12 A | 2026-04-15 | 5 | 40% |
| 10 |  | Steel package fabrication | 30d | 2026-02-19 A | 2026-04-02 | 5FS+5d | 30% |
| 11 | 3 | **Construction** | 100d | 2026-04-02 | 2026-08-20 |  |  |
| 12 |  | Mobilization | 5d | 2026-04-02 | 2026-04-09 | 7 |  |
| 13 |  | Foundations | 20d | 2026-04-09 | 2026-05-07 | 12 |  |
| 14 |  | Steel erection | 15d | 2026-05-07 | 2026-05-28 | 13, 10 |  |
| 15 |  | Building envelope | 25d | 2026-05-28 | 2026-07-02 | 14 |  |
| 16 |  | MEP rough-in | 30d | 2026-05-14 | 2026-06-25 | 14SS+5d |  |
| 17 |  | Interior finishes | 25d | 2026-07-02 | 2026-08-06 | 15, 16FF+10d |  |
| 18 |  | Elevator install & inspection | 18d | 2026-07-02 | 2026-07-28 | 15 |  |
| 19 |  | FF&E installation | 10d | 2026-07-02 | 2026-07-16 | 9, 15 |  |
| 20 |  | Commissioning | 10d | 2026-08-06 | 2026-08-20 | 16, 17, 19, 18 |  |
| 21 | 4 | **Closeout** | 20d | 2026-08-20 | 2026-09-17 |  |  |
| 22 |  | Punch list | 10d | 2026-08-20 | 2026-09-03 | 20 |  |
| 23 |  | Final inspections | 5d | 2026-09-03 | 2026-09-10 | 22 |  |
| 24 |  | Substantial completion | 0d | 2026-09-10 | 2026-09-10 | 23 |  |
| 25 |  | Owner training | 5d | 2026-08-20 | 2026-08-27 | 20 |  |
| 26 |  | Closeout documentation | 5d | 2026-09-10 | 2026-09-17 | 25, 23 |  |
| 27 |  | Occupancy | 0d | 2026-09-17 | 2026-09-17 | 24, 26 |  |

## Version 2 (data date 2026-03-31, saved 2026-06-12)

Note of the change: fix(verification): drop TP1's resource assignments - MSP's import mangled exactly the assigned tasks

Last finish stays 2026-09-17.

Changed:

| ID | Task | Other |
| --- | --- | --- |
| 13 | Foundations | resources GC Crew A → none |
| 15 | Building envelope | resources GC Crew A → none |
| 16 | MEP rough-in | resources Electrical Sub → none |
| 20 | Commissioning | resources Commissioning Agent → none |
